# Factories Low-process Unit Hafr Al Batin

Schedule from Primavera P6, 2025-11-27 to 2026-09-26, data date 2025-11-27.
Must finish by 2026-09-26

## Calendars

- HFR1-05-003-Factories Low-process Unit HAFR AL BATIN: Mon-Thu 07:00-16:59; Fri off; Sat-Sun 07:00-16:59. Exceptions (off unless hours are given): 2026-02-22, 2026-03-18 to 2026-03-19, 2026-03-21, 2026-05-26 to 2026-05-28, 2026-09-23.

## Resources

| Resource | Group | Rate |
| --- | --- | --- |
| Skilled Labor | labor |  |
| Electrician | labor |  |
| Labor | labor |  |
| Steel Fixer | labor |  |
| Carpenter | labor |  |
| Mason | labor |  |
| Plumber | labor |  |
| Pipe-Laying Worker | labor |  |
| Excavator | nonlabor |  |
| Water Tanker | nonlabor |  |
| Truck | nonlabor |  |
| Bobcat | nonlabor |  |
| Eq. Operator | labor |  |
| Loader | nonlabor |  |
| Grider | nonlabor |  |
| Bulldozer | nonlabor |  |
| Road Roller | nonlabor |  |
| Asphalt Paver | nonlabor |  |
| Draftsman | labor |  |
| Consultant Staff | labor |  |
| QA/QC Engineer | labor |  |
| Purchaser | labor |  |
| LABOR | labor |  |
| 200 mm Ø | material | 276 |
| Labours | labor |  |
| Carpenter | labor |  |
| Provide and cast 150 mm thk concrete floor slab on grade | material | 920 |
| Steel Fixer | labor |  |
| Lean concrete under foundation and grade beams. | material | 46 |
| CONCRETE MIixer | nonlabor |  |
| Metal Works tech | labor |  |
| install steel ladder with safety cage | material | 6480 |
| Size 400mm wide*4000mm long | material | 864 |
| Window W1 (size 1000*1300) | material | 1014 |
| at external walls (200mm thick insulated) | material | 106 |
| at electrical room (200mm thick, 2 hr fire rated) | material | 79 |
| Painter | labor |  |
| Supply and install GRC panels with the mechanical fixations and whatever needed to do a perfect work, as shown in the drawings and specification | material | 420 |
| Supply and install 300*300mm ceramic tiles with approved quality on 30 mm mortar including sand fill material as approved by the Client for toilets | material | 102 |
| Doors installer | labor |  |
| Supply and apply epoxy paint to concrete surface in the factory area as shown in the drawings and specifications | material | 60 |
| install (D6) 3000*3500mm galvanized steel heavy duty industrial isolated type roll up shutter door | material | 15660 |
| Supply and install aluminium cladding where material is approved by the Client, including sub-frames, all accessories and fittings, and whatever needed to do perfect work all as per drawing and specification. | material | 382 |
| Identification sign for toilets & prayer room | material | 780 |
| Supply and install 2 coats of acrylic paint at external walls and parapet including one coat of primer and two coats of putty to give smooth Surface as a base for paint including fiberglass tape to joints and all other accessories as per Modon specificati | material | 36 |
| ALHSA FACTORY | labor |  |
| FINSHING Techtion | labor |  |
| plumber | labor |  |
| Supply, installation , testing & commissioning of condensate drain piping, complete as per drawings, specifications and method of measurement. | material | 180 |
| 160 mm Pipe in trench not exceeding 2.00 m depth to invert | material | 480 |
| Supply, install, test and commission Flexible ducts (Low Pressure), for connection to square exhaust diffuser and as per drawings and specification. | material | 48 |
| electrical tection | labor |  |
| Wall mounted Addressable Fire Alarm Control Panel Complete | material | 53760 |
| Fire Pump system, Local code & UL/FM approved, meeting all NFPA requirements | material | 360000 |
| install fire rated 45 min. (D5) 1000*2200mm single leaf steel door with door construction type C | material | 2520 |
| AC tecntion | labor |  |
| Supply, install, test and commission indoor ductwork as per SMACNA Standards, complete, VD, duct tape, adhesive, duct sealant, hangers, supports and all other accessories, (Flanged TDC Type) and as per drawings and specification. | material | 36 |
| Provide and install grab bars, surface mounted, satin finish stainless steel as per approved sample including accessories to complete as shown in the drawings and specification | material | 120 |
| Tlles Fitter | labor |  |
| Supply and install layer of marble chips on external walls and grooves to conform with specification requirements to complete the works as per drawing. Color and material is subject for Client approval. | material | 48 |
| Supply, install, testing and commission Fire Alarm Check Valve (ACV) assembly with OS&Y gate valve 6" Ø, complete with accessories.as per drawing and specifications | material | 7200 |
| Supply, install, test and commission Gully Traps with heavy duty cover and all other accessories as per drawings and specification. | material | 660 |
| Exhaust fan 2351 CFM ex. Static 32 Pa for Factory area | material | 2400 |
| Flexiable duct | material | 142635 |
| Complete road crossing duct bank for street lighting cables including pipes | material | 264 |
| 63 mm Ø (2 1/2" Ø )Cold water | material | 120 |
| install steel bollards 1135mm height | material | 1020 |
| Wall mounted Duplex Socket | material | 368 |
| Grounding System for each block | material | 37892 |
| LP: Lighting Power Panel | material | 4320 |
| Solar Power Plant | material | 58800 |
| Perforated Cable Tray | material | 144 |
| Outdoor wall mounted LED lighting | material | 518 |
| Indoor Disconnect Switch for Exhaust Fans | material | 582 |
| subgrade | material | 69 |
| To walkway interlocking block pavers, 200*100*60mm | material | 65 |
| Loder | nonlabor |  |
| Truk | nonlabor |  |
| Backfilling | material | 33 |
| Roof Slab | material | 1155 |
| Grade beams | material | 1035 |
| Mason | labor |  |
| at internal walls (100mm thick) | material | 72 |
| Insulation Tection | labor |  |
| Polyisocynurate sandwich panel (100 mm) for external walls and roof and rock wool for internal wall fire rated for 1 Hour | material | 967140 |
| Supplying and fixing 3mm thk extruded aluminum flashing 40mm with sealent and 50*50mm cant strip. | material | 30 |
| install (D1) 1890*2800mm double leaf glass and aluminum door with CNC decorative stainless steel shapes | material | 6384 |
| mason plaster | labor |  |
| Supply and install internal plastering to walls and columns min. 15mm thick with cement mortar of specified grade including galvanized mesh, corner beads, angle beads, CE bonds to rough and smooth plaster complete the work as per drawing & specification. | material | 34 |
| Supply and install 300*300mm glazed ceramic wall tiles on cement mortar and including rough and smooth plaster, galvanized mesh, corner beads, angle beads, CE bonds (For Toilets) | material | 130 |
| Window W1 (size 1800*2800) | material | 4052 |
| Sewage tank with dimensions (8x4x3m) | material | 90000 |
| Complete concrete wall for KWHM for street lighting feeder pillar with foundations as per SEC latest standards & specifications | material | 3000 |
| POCLAIN | nonlabor |  |
| Bob Cat | nonlabor |  |
| Dump Truck 16 m3 | nonlabor |  |
| Dump Truck 26 m3 | nonlabor |  |
| Poclain Excavator | nonlabor |  |
| Bulldozr (D8) | nonlabor |  |
| Payloader | nonlabor |  |
| Excavation | material | 24 |
| Termite Controle tech | labor |  |
| Vibratory Roller | nonlabor |  |
| Gomaco Concrete | nonlabor |  |
| Bitumen Tanker | nonlabor |  |
| Isolated Footings | material | 906 |
| Labour | labor |  |
| Provide and apply 2 coats of bitumen waterproofing paint on concrete surface in contact with soil. | material | 22 |
| Supply and lay 250 micron thk polyethylene sheet under grade slab and footings | material | 5 |
| Supply and apply anti termite under all concrete in touch with earth for all buildings as per manufacture instructions, engineer approval | material | 6 |
| Tank Footing | material | 1080 |
| Tank Walls | material | 1320 |
| Tank Slab | material | 1284 |
| Grader | nonlabor |  |
| execute bituminous base course asphalt layer class (A) in two layers | material | 696 |
| base course layer | material | 75 |
| bituminous wearing course asphalt layer class (A) including tack coat (RC2) | material | 720 |
| Kerb type K1A | material | 58 |
| Retroreflective Thermoplastic White Traffic lines | material | 24000 |
| Traffic signs aluminum sheet, (breakaway) Single post I.P.E. | material |  |
| pipes for all electrical network at site | material | 101 |
| 20 mm Ø ( 3/4" Ø) Cold water | material | 48 |
| 50 mm Ø (2" Ø )Cold water | material | 108 |
| Supply, install, test and commission Floor drain (FD-1) with stainless steel 316 cover as per drawings and specification. | material | 180 |
| equpment | nonlabor |  |
| Complete Street Lighting Manhole with pipes | material | 1966 |
| Complete street lighting poles with LED lighting fixtures | material | 4380 |
| Supply and install carpet rolls to prayer room including all the accessories to complete the work with approved quality by the Client as shown in the drawings and specifications | material | 138 |
| Eng+Pro+Tc | material |  |
| install galvanized steel fence | material | 1620 |
| Demolition of the existing curbstone | material | 36 |
| Supply and install external plastering to external walls min. 15mm thick with cement mortar of specified grade including galvanized mesh, corner beads, angle beads, CE bonds to rough and smooth plaster complete the work as per drawing & specification. | material | 36 |
| Supply and install 2 coats of acrylic paint at internal walls and roof including one coat of primer and two coats of putty to give smooth Surface as a base for paint including fiberglass tape to joints and all other accessories as per Modon specification | material | 30 |
| Supply and install 12.5mm thk, gypsum board suspended ceiling including suspension system, paints as required specification and material as approved by the Client including frames supports, access openings and all other accessories to complete as shown i | material | 114 |
| Supply and install 12.5mm thk, moisture resistant gypsum board suspended ceiling including suspension system, paints as required specification and material as approved by the Client including frames supports, access openings and all other accessories to | material | 120 |
| liquid applied waterproofing membrane | material |  |
| Supply and install polyurethane waterpoof coating to internal surfaces of concrete trench | material | 72 |
| Supply and install 4mm thick APP modified bituminous membrane - single layer | material | 34 |
| Supply and install geotextile sheet | material | 10 |
| Supply and install 50mm thk rigid insulation (extruded polystyrene) | material | 48 |
| Supply and cast in place foam concrete screed 50mm thk minimum laid to fall and cross fall | material |  |
| Supply and install 50mm thk loose gravel toppings | material | 18 |
| Supply and install granite tiles including mortar and sand fill and all the required accessories to complete the works as per drawings and specifications with approved quality by the Client | material | 252 |
| Window W2 (size 1600*1200) | material | 1498 |
| Supply and install phenolic partitions with doors for toilets including accessories, fixations, fittings, and all the required works as shown in the drawings and specification with approved quality by the Client | material | 720 |
| Concrete Pad | material | 936 |
| Swing gate for fence with similar design with opening of 3m. | material | 5892 |
| 100 mm Ø | material | 180 |
| supply and installation of Cold formed steel secondary members | material | 62400 |
| Supply and install 300 micron polyethylene sheet | material | 4 |
| Complete Main Electrical Manhole with pipes | material | 11895 |
| Exhaust fan 425 CFM ex. Static 100 Pascal for toilets | material | 1200 |
| Swing gate for fence with similar deswign with opening of 1.5m. | material | 3246 |
| Complete Branch Electrical Manhole with pipes | material | 3552 |
| Pump room power panel complete with conduits, cables, circuit breakers,pipes, wires and busbars | material | 12000 |
| Motor Circuit Protector for pumps complete with conduits & cables | material | 1920 |
| Indoor Disconnect Switch for Package Units & AC Split Units | material | 582 |
| Skylight fixtures | material | 3600 |
| Grounding for all KWHM's | material | 1800 |
| Compactor | nonlabor |  |
| Eng+Pro+Tc | material | 7855 |
| PRO-SHORT-ROAD | material | 20149 |
| PRO-SHORT-POTABEL WA | material | 19550 |
| PRO-SHORT-CIVIL | material | 21400 |
| PRO-SHORT-elct & mec | material | 22085 |
| PRO-LONG-ELEC | material | 102807 |
| PRO-LONG-MECH | material | 102220 |
| PRO-LONG-CIVIL | material | 105330 |
| Testing and comissiong | material | 412421 |

## Schedule

| ID | WBS | Activity | Type | Duration | Start | Finish | Predecessors | Resources | Old Activity ID-Alhasa | LOCATION |
| --- | --- | --- | --- | --- | --- | --- | --- | --- | --- | --- |
|  | 1 | **Project Milestones** |  |  | 2025-11-27 | 2026-09-26 |  |  |  |  |
|  | 2 | **Project milestones** |  |  | 2025-11-27 | 2026-09-26 |  |  |  |  |
| HFR1-05-2980 |  | Project Start | milestone | 0d | 2025-11-27 | 2025-11-27 |  |  | HAS3-1020 |  |
| HFR1-05-2985 |  | Project Finish | milestone | 0d | 2026-09-26 | 2026-09-26 | HFR1-05-4720 FF |  |  |  |
|  | 1 | **Contratual milestones** |  |  | 2025-12-28 | 2026-09-26 |  |  |  |  |
| HFR1-05-7890 |  | Baseline Schedule Approval | milestone | 0d | 2025-12-28 | 2025-12-28 | HFR1-05-7900 FF |  | HAS3-5930 | MLST |
| HFR1-05-8890 |  | Completion Mobilization | milestone | 0d | 2025-12-28 | 2025-12-28 | HFR1-05-6060, HFR1-05-6050, HFR1-05-6040, HFR1-05-6030, HFR1-05-7910, HFR1-05-6860, HFR1-05-7890, HFR1-05-3110, HFR1-05-5690, HFR1-05-3010, HFR1-05-6850, HFR1-05-3170, HFR1-05-3210, HFR1-05-2930, HFR1-05-2940, HFR1-05-6070, HFR1-05-7900 |  | HAS3-7320 | MLST |
| HFR1-05-2990 |  | Completion of Engneering and Material | milestone | 0d | 2026-01-27 | 2026-01-27 | HFR1-05-8850 FF, HFR1-05-8830 FF, HFR1-05-7530 FF, HFR1-05-8790 FF, HFR1-05-8810 FF, HFR1-05-8820 FF |  | HAS3-10230 | MLST |
| HFR1-05-3390 |  | Main Buildings Structure Completed | milestone | 0d | 2026-05-31 | 2026-05-31 | HFR1-05-1370 FF, HFR1-05-1380 FF, HFR1-05-1390 FF, HFR1-05-1400 FF, HFR1-05-1410 FF, HFR1-05-1420 FF, HFR1-05-2540, HFR1-05-2480, HFR1-05-2460, HFR1-05-2500, HFR1-05-2490, HFR1-05-2450 |  | HAS3-13090 |  |
| HFR1-05-4380 |  | Procurement Complete | milestone | 0d | 2026-07-22 | 2026-07-22 | HFR1-05-5760 FF |  | HAS3-15000 |  |
| HFR1-05-4620 |  | Main Buildings Architectural Completed | milestone | 0d | 2026-07-22 | 2026-07-22 | HFR1-05-2790, HFR1-05-3390, HFR1-05-4380, HFR1-05-2790 FF |  | HAS3-15540 |  |
| HFR1-05-4400 |  | Mosque Works Completed | milestone | 0d | 2026-07-27 | 2026-07-27 | HFR1-05-4360 FF, HFR1-05-9750, HFR1-05-9720, HFR1-05-4020, HFR1-05-3950, HFR1-05-4120, HFR1-05-4130, HFR1-05-3490, HFR1-05-3860, HFR1-05-4230, HFR1-05-4240, HFR1-05-4220, HFR1-05-3870, HFR1-05-3520, HFR1-05-4180, HFR1-05-3970, HFR1-05-4090, HFR1-05-4070, HFR1-05-4000, HFR1-05-4160, HFR1-05-4080, HFR1-05-3640, HFR1-05-3760, HFR1-05-3710, HFR1-05-4010, HFR1-05-3880, HFR1-05-3890, HFR1-05-3720, HFR1-05-3770, HFR1-05-4280, HFR1-05-4350, HFR1-05-4170, HFR1-05-4270, HFR1-05-4300, HFR1-05-4250, HFR1-05-4360, HFR1-05-4290, HFR1-05-4340, HFR1-05-3830, HFR1-05-3930, HFR1-05-2280, HFR1-05-2290, HFR1-05-2320, HFR1-05-2300, HFR1-05-2310, HFR1-05-9610, HFR1-05-9600, HFR1-05-9590, HFR1-05-3390, HFR1-05-4380, HFR1-05-9670 FF, HFR1-05-3370 FF |  | HAS3-15040 |  |
| HFR1-05-4590 |  | Site Works & External Networks Completed | milestone | 0d | 2026-09-12 | 2026-09-12 | HFR1-05-4550 FF, HFR1-05-4550 SF, HFR1-05-4480 FF, HFR1-05-3780, HFR1-05-3390, HFR1-05-4480, HFR1-05-4570, HFR1-05-1910, HFR1-05-1900, HFR1-05-4380, HFR1-05-3060, HFR1-05-3070, HFR1-05-3450, HFR1-05-3140, HFR1-05-3150, HFR1-05-3320, HFR1-05-3410, HFR1-05-3330, HFR1-05-3510, HFR1-05-3530, HFR1-05-3590, HFR1-05-3600, HFR1-05-3620, HFR1-05-3800, HFR1-05-4150, HFR1-05-3680, HFR1-05-3740, HFR1-05-3420, HFR1-05-3470, HFR1-05-4200, HFR1-05-3820, HFR1-05-3940, HFR1-05-4110, HFR1-05-4190 |  | HAS3-15410 |  |
| HFR1-05-4650 |  | Main Buildings MEP Completed | milestone | 0d | 2026-09-26 | 2026-09-26 | HFR1-05-1800 FF, HFR1-05-2910 FF, HFR1-05-2100 FF, HFR1-05-3830, HFR1-05-3930, HFR1-05-3650, HFR1-05-4040, HFR1-05-4050, HFR1-05-4310, HFR1-05-3660, HFR1-05-3730, HFR1-05-3790, HFR1-05-3560, HFR1-05-3780, HFR1-05-3910, HFR1-05-3840, HFR1-05-4030, HFR1-05-3060, HFR1-05-3070, HFR1-05-3450, HFR1-05-3140, HFR1-05-3150, HFR1-05-3320, HFR1-05-3410, HFR1-05-3330, HFR1-05-3510, HFR1-05-3530, HFR1-05-3590, HFR1-05-3600, HFR1-05-3620, HFR1-05-3800, HFR1-05-4150, HFR1-05-3680, HFR1-05-3740, HFR1-05-3420, HFR1-05-3470, HFR1-05-4200, HFR1-05-3390, HFR1-05-4380 |  | HAS3-15640 |  |
| HFR1-05-4660 |  | All Testing & Commissioning Completed | milestone | 0d | 2026-09-26 | 2026-09-26 | HFR1-05-4420 FF, HFR1-05-4430 FF, HFR1-05-4600 FF, HFR1-05-4630 FF, HFR1-05-9600, HFR1-05-4030, HFR1-05-4040, HFR1-05-4310, HFR1-05-4200, HFR1-05-4540, HFR1-05-3740, HFR1-05-4420, HFR1-05-4630, HFR1-05-3390, HFR1-05-4620, HFR1-05-4400 |  | HAS3-15650 |  |
| HFR1-05-4670 |  | Substantial Completion (Ready for Handing Over) | milestone | 0d | 2026-09-26 | 2026-09-26 | HFR1-05-4700 FF, HFR1-05-4690 FF, HFR1-05-4680 FF, HFR1-05-3830, HFR1-05-3930, HFR1-05-4540, HFR1-05-3140, HFR1-05-3150, HFR1-05-3410, HFR1-05-3450, HFR1-05-4150, HFR1-05-3740, HFR1-05-4420, HFR1-05-4630, HFR1-05-2990 |  | HAS3-15660 |  |
| HFR1-05-4720 |  | Completion Milestone | milestone | 0d | 2026-09-26 | 2026-09-26 | HFR1-05-4700 FF, HFR1-05-4690 FF, HFR1-05-4680 FF, HFR1-05-2500, HFR1-05-4540, HFR1-05-3740, HFR1-05-4420, HFR1-05-4630, HFR1-05-4670, HFR1-05-3390, HFR1-05-4590, HFR1-05-4650, HFR1-05-4620, HFR1-05-4660, HFR1-05-4400, HFR1-05-3050, HFR1-05-3270, HFR1-05-4570, HFR1-05-1250, HFR1-05-2990, HFR1-05-8890, HFR1-05-1950, HFR1-05-4700 |  | HAS3-15710 |  |
|  | 6 | **Mobilization** |  |  | 2025-11-27 | 2025-12-28 |  |  |  |  |
|  | 1 | **Site Facilities & Offices** |  |  | 2025-11-27 | 2025-12-28 |  |  |  |  |
| HFR1-05-3110 |  | Mobilzation Equpment and Manpower |  | 8d | 2025-11-27 | 2025-12-06 | HFR1-05-2980 SS | Labours [200 h] | HAS3-1070 |  |
| HFR1-05-5690 |  | Installation of Site Offices |  | 8d | 2025-12-07 | 2025-12-15 | HFR1-05-3110 | Labours [200 h] | HAS3-2930 |  |
| HFR1-05-7910 |  | Setup of Stores / Warehouses |  | 12d | 2025-12-15 | 2025-12-28 | HFR1-05-6070 | Labours [150 h] | HAS3-5960 |  |
| HFR1-05-6860 |  | Temporary Power Supply -Water Supply & Piping |  | 8d | 2025-12-16 | 2025-12-24 | HFR1-05-5690 | Labours [200 h] | HAS3-4560 |  |
|  | 2 | **Premilinary Submittals** |  |  | 2025-11-27 | 2025-12-21 |  |  |  |  |
| HFR1-05-2930 |  | Preparation & Submittal of Quality Control Plan |  | 9d | 2025-11-27 | 2025-12-07 | HFR1-05-2980 SS | Labours [150 h] | HAS3-1000 |  |
| HFR1-05-2940 |  | Preparation & Submittal of Master Layout / Site Layout |  | 9d | 2025-11-27 | 2025-12-07 | HFR1-05-2980 SS | Labours [318.15 h] | HAS3-1010 |  |
| HFR1-05-3010 |  | Preparation & Submittal of Staff Plan |  | 9d | 2025-11-27 | 2025-12-07 | HFR1-05-2980 SS | Labours [318.15 h] | HAS3-1040 |  |
| HFR1-05-3170 |  | Preparation & Submittal of Risk Plan |  | 9d | 2025-11-27 | 2025-12-07 | HFR1-05-2980 SS | Labours [318.15 h] | HAS3-1180 |  |
| HFR1-05-3210 |  | Preparation & Submittal of Project Execution Plan |  | 9d | 2025-11-27 | 2025-12-07 | HFR1-05-2980 SS | Labours [318.15 h] | HAS3-1190 |  |
| HFR1-05-6850 |  | Preparation & Submittal of Baseline Schedule |  | 12d | 2025-12-08 | 2025-12-21 | HFR1-05-2930, HFR1-05-2980 SS | Labours [318.15 h] | HAS3-4540 |  |

| ID | WBS | Activity | Duration | Start | Finish | Predecessors | Resources | Old Activity ID-Alhasa | Old Activity ID | USERTEXT | Total Weight % | Weight 1 | Mapping Sheet Activity ID |
| --- | --- | --- | --- | --- | --- | --- | --- | --- | --- | --- | --- | --- | --- |
|  | 3 | **Premilinary Approvals** |  | 2025-12-08 | 2025-12-28 |  |  |  |  |  |  |  |  |
| HFR1-05-6030 |  | Approval of Risk Plan | 6d | 2025-12-08 | 2025-12-14 | HFR1-05-3170 | Labours [318.15 h] | HAS3-3400 |  |  |  |  |  |
| HFR1-05-6040 |  | Approval of Project Execution Plan | 6d | 2025-12-08 | 2025-12-14 | HFR1-05-3210 | Labours [318.15 h] | HAS3-3410 |  |  |  |  |  |
| HFR1-05-6050 |  | Approval of Quality Control Plan | 6d | 2025-12-08 | 2025-12-14 | HFR1-05-2930 | Labours [318.15 h] | HAS3-3420 |  |  |  |  |  |
| HFR1-05-6060 |  | Approval of Master Layout / Site Layout | 6d | 2025-12-08 | 2025-12-14 | HFR1-05-2940 | Labours [318.15 h] | HAS3-3430 |  |  |  |  |  |
| HFR1-05-6070 |  | Approval of Staff Plan | 6d | 2025-12-08 | 2025-12-14 | HFR1-05-3010 | Labours [318.15 h] | HAS3-3440 |  |  |  |  |  |
| HFR1-05-7900 |  | Approval of Baseline schedule | 6d | 2025-12-22 | 2025-12-28 | HFR1-05-6850 | Labours [318.15 h] | HAS3-5940 |  |  |  |  |  |
|  | 4 | **Engineering** |  | 2025-12-07 | 2026-01-28 |  |  |  |  |  |  |  |  |
|  | 2 | **Shop Drawings** |  | 2025-12-07 | 2025-12-29 |  |  |  |  |  |  |  |  |
|  | 1 | **Shop Drawings Submittal** |  | 2025-12-07 | 2025-12-17 |  |  |  |  |  |  |  |  |
|  | 1 | **Shop Drawings Submittal for Road Works** |  | 2025-12-07 | 2025-12-17 |  |  |  |  |  |  |  |  |
| HFR1-05-3220 |  | Shop DWG Submittal for Topographic Survey | 10d | 2025-12-07 | 2025-12-17 | HFR1-05-3110, HFR1-05-2980 SS | Draftsman [20 h] | HAS3-1200 | CON-LEG101-EN-1300 | MKH2-02-002-EN-1000 | 0 | 0 | D1000 |
| HFR1-05-6080 |  | Shop DWG Submittal for Road Layout Plan | 10d | 2025-12-07 | 2025-12-17 | HFR1-05-2980 SS, HFR1-05-3110 | Draftsman [20 h] | HAS3-3470 | CON-LEG101-EN-1310 | MKH2-02-002-EN-1010 | 0 | 0 | D1010 |
| HFR1-05-6090 |  | Shop DWG Submittal for Typical Cross Section | 10d | 2025-12-07 | 2025-12-17 | HFR1-05-2980 SS, HFR1-05-3110 | Draftsman [20 h] | HAS3-3480 | CON-LEG101-EN-1320 | MKH2-02-002-EN-1020 | 0 | 0 | D1020 |
| HFR1-05-6100 |  | Shop DWG Submittal for Road Setting Out | 10d | 2025-12-07 | 2025-12-17 | HFR1-05-2980 SS, HFR1-05-3110 | Draftsman [20 h] | HAS3-3490 | CON-LEG101-EN-1330 | MKH2-02-002-EN-1030 | 0 | 0 | D1030 |
| HFR1-05-6110 |  | Shop DWG Submittal for Road Profiles | 10d | 2025-12-07 | 2025-12-17 | HFR1-05-2980 SS, HFR1-05-3110 | Draftsman [20 h] | HAS3-3500 | CON-LEG101-EN-1340 | MKH2-02-002-EN-1040 | 0 | 0 | D1040 |
| HFR1-05-6120 |  | Shop DWG Submittal for Grading Layout Plan | 10d | 2025-12-07 | 2025-12-17 | HFR1-05-2980 SS, HFR1-05-3110 | Draftsman [20 h] | HAS3-3510 | CON-LEG101-EN-1350 | MKH2-02-002-EN-1050 | 0 | 0 | D1050 |
| HFR1-05-6130 |  | Shop DWG Submittal for Curb Setting Out Points | 10d | 2025-12-07 | 2025-12-17 | HFR1-05-2980 SS, HFR1-05-3110 | Draftsman [20 h] | HAS3-3520 | CON-LEG101-EN-1360 | MKH2-02-002-EN-1060 | 0 | 0 | D1060 |
| HFR1-05-6140 |  | Shop DWG Submittal for Signing & Marking Layout Plan | 10d | 2025-12-07 | 2025-12-17 | HFR1-05-2980 SS, HFR1-05-3110 | Draftsman [20 h] | HAS3-3530 | CON-LEG101-EN-1370 | MKH2-02-002-EN-1070 | 0 | 0 | D1070 |
| HFR1-05-6150 |  | Shop DWG Submittal for Standards Details | 10d | 2025-12-07 | 2025-12-17 | HFR1-05-2980 SS, HFR1-05-3110 | Draftsman [20 h] | HAS3-3540 | CON-LEG101-EN-1380 | MKH2-02-002-EN-1080 | 0 | 0 | D1080 |
|  | 3 | **Shop Drawings Submittal for Potable Water Network** |  | 2025-12-07 | 2025-12-17 |  |  |  |  |  |  |  |  |
| HFR1-05-6210 |  | Shop DWG Submittal for Potable Water Plans | 10d | 2025-12-07 | 2025-12-17 | HFR1-05-3110 | Draftsman [40 h] | HAS3-3600 | CON-LEG101-EN-1390 | MKH2-02-002-EN-1090 | 0 | 0 | D1090 |
| HFR1-05-7830 |  | Shop DWG Submittal for Potable Water Profiles | 10d | 2025-12-07 | 2025-12-17 | HFR1-05-3110 | Draftsman [40 h] | HAS3-5850 | CON-LEG101-EN-1400 | MKH2-02-002-EN-1100 | 0 | 0 | D1100 |
| HFR1-05-7840 |  | Shop DWG Submittal for Potable Water Standard Details | 10d | 2025-12-07 | 2025-12-17 | HFR1-05-3110 | Draftsman [40 h] | HAS3-5860 | CON-LEG101-EN-1410 | MKH2-02-002-EN-1110 | 0 | 0 | D1110 |

| ID | WBS | Activity | Duration | Start | Finish | Predecessors | Resources | USERTEXT | Total Weight % | Weight 1 | Mapping Sheet Activity ID | Old Activity ID | Old Activity ID-Alhasa | Responsibilities | Cost Varince( User Field) | Cost Varince( User Field) % | EV |
| --- | --- | --- | --- | --- | --- | --- | --- | --- | --- | --- | --- | --- | --- | --- | --- | --- | --- |
|  | 7 | **Shop Drawings Submittal for Sewer Water Network** |  | 2025-12-07 | 2025-12-17 |  |  |  |  |  |  |  |  |  |  |  |  |
| HFR1-05-6220 |  | Shop DWG Submittal for Sewer Network Plans | 10d | 2025-12-07 | 2025-12-17 | HFR1-05-3110 | Draftsman [40 h] | MKH2-02-002-EN-1090 | 0 | 0 | D1090 | CON-LEG101-EN-1390 | HAS3-3610 |  |  |  |  |
| HFR1-05-7850 |  | Shop DWG Submittal for Sewer Network Profiles | 10d | 2025-12-07 | 2025-12-17 | HFR1-05-3110 | Draftsman [40 h] | MKH2-02-002-EN-1100 | 0 | 0 | D1100 | CON-LEG101-EN-1400 | HAS3-5870 |  |  |  |  |
| HFR1-05-7860 |  | Shop DWG Submittal for Sewer Network Standard Details | 10d | 2025-12-07 | 2025-12-17 | HFR1-05-3110 | Draftsman [40 h] | MKH2-02-002-EN-1110 | 0 | 0 | D1110 | CON-LEG101-EN-1410 | HAS3-5880 |  |  |  |  |
|  | 10 | **Shop Drawings Submittal for Earthing System** |  | 2025-12-07 | 2025-12-17 |  |  |  |  |  |  |  |  |  |  |  |  |
| HFR1-05-7620 |  | Shop DWG Submittal for Earthing System | 10d | 2025-12-07 | 2025-12-17 | HFR1-05-3110 | Draftsman [40 h] | MKH2-02-002-EN-1320 | 0 | 0 | D3960 | CON-LEG101-EN-3210 | HAS3-5640 |  |  |  |  |
|  | 11 | **Shop Drawings Submittal for Road Lighting** |  | 2025-12-07 | 2025-12-17 |  |  |  |  |  |  |  |  |  |  |  |  |
| HFR1-05-7630 |  | Shop DWG Submittal for Street Lighting General Arrangement | 10d | 2025-12-07 | 2025-12-17 | HFR1-05-3110 | Draftsman [40 h] |  |  |  | C03-E-SL-1560 | CON-LEG101-EN-1260 | HAS3-5650 | EN | 0 | 0 | 17102.23 |
| HFR1-05-7640 |  | Shop DWG Submittal for Street Lighting Network Layout | 10d | 2025-12-07 | 2025-12-17 | HFR1-05-3110 | Draftsman [40 h] |  |  |  | C03-E-SL-1570 | CON-LEG101-EN-1270 | HAS3-5660 | EN | 0 | 0 | 17102.23 |
| HFR1-05-7650 |  | Shop DWG Submittal for Street Lighting Details | 10d | 2025-12-07 | 2025-12-17 | HFR1-05-3110 | Draftsman [40 h] |  |  |  | C03-E-SL-1580 | CON-LEG101-EN-1280 | HAS3-5670 | EN | 0 | 0 | 17102.23 |
| HFR1-05-7660 |  | Shop DWG Submittal for Street Lighting Single Line Diagram | 10d | 2025-12-07 | 2025-12-17 | HFR1-05-3110 | Draftsman [40 h] |  |  |  | C03-E-SL-1590 | CON-LEG101-EN-1290 | HAS3-5680 | EN | 0 | 0 | 17102.23 |
|  | 12 | **Shop Drawings Submittal for Hungers** |  | 2025-12-07 | 2025-12-17 |  |  |  |  |  |  |  |  |  |  |  |  |
| HFR1-05-7790 |  | Shop DWG Submittal for the Hungers - Civil Works | 10d | 2025-12-07 | 2025-12-17 | HFR1-05-3110 | Draftsman [30 h] | MKH2-02-002-EN-1320 | 0 | 0 | D1270 | CON-LEG101-EN-1540 | HAS3-5810 |  |  |  |  |
| HFR1-05-7800 |  | Shop DWG Submittal for the Hungers - Mechanical Works | 10d | 2025-12-07 | 2025-12-17 | HFR1-05-3110 | Draftsman [30 h] | MKH2-02-002-EN-1340 | 0 | 0 | D1290 | CON-LEG101-EN-1550 | HAS3-5820 |  |  |  |  |
| HFR1-05-7810 |  | Shop DWG Submittal for the Hungers - Finishing Works | 10d | 2025-12-07 | 2025-12-17 | HFR1-05-3110 | Draftsman [30 h] | MKH2-02-002-EN-1350 | 0 | 0 | D1300 | CON-LEG101-EN-1560 | HAS3-5830 |  |  |  |  |
| HFR1-05-7820 |  | Shop DWG Submittal for the Hungers - Electrical Works | 10d | 2025-12-07 | 2025-12-17 | HFR1-05-3110 | Draftsman [30 h] |  |  |  |  |  | HAS3-5840 |  |  |  |  |
|  | 9 | **Shop Drawings Submittal for Prayer Room** |  | 2025-12-07 | 2025-12-17 |  |  |  |  |  |  |  |  |  |  |  |  |
| HFR1-05-7750 |  | Shop DWG Submittal for the Prayer Room - Civil Works | 10d | 2025-12-07 | 2025-12-17 | HFR1-05-3110 | Draftsman [40 h] | MKH2-02-002-EN-1320 | 0 | 0 | D1270 | CON-LEG101-EN-1540 | HAS3-5770 |  |  |  |  |
| HFR1-05-7760 |  | Shop DWG Submittal for the Prayer Room - Mechanical Works | 10d | 2025-12-07 | 2025-12-17 | HFR1-05-3110 | Draftsman [40 h] | MKH2-02-002-EN-1340 | 0 | 0 | D1290 | CON-LEG101-EN-1550 | HAS3-5780 |  |  |  |  |
| HFR1-05-7770 |  | Shop DWG Submittal for the Prayer Room - Finishing Works | 10d | 2025-12-07 | 2025-12-17 | HFR1-05-3110 | Draftsman [40 h] | MKH2-02-002-EN-1350 | 0 | 0 | D1300 | CON-LEG101-EN-1560 | HAS3-5790 |  |  |  |  |
| HFR1-05-7780 |  | Shop DWG Submittal for the Prayer Room - Electrical Works | 10d | 2025-12-07 | 2025-12-17 | HFR1-05-3110 | Draftsman [40 h] |  |  |  |  |  | HAS3-5800 |  |  |  |  |
|  | 6 | **Shop Drawings Submittal for Septic Tank** |  | 2025-12-07 | 2025-12-17 |  |  |  |  |  |  |  |  |  |  |  |  |
| HFR1-05-7710 |  | Shop DWG Submittal for the Septic Tank - Civil Works | 10d | 2025-12-07 | 2025-12-17 | HFR1-05-3110 | Draftsman [40 h] | MKH2-02-002-EN-1320 | 0 | 0 | D1270 | CON-LEG101-EN-1540 | HAS3-5730 |  |  |  |  |
| HFR1-05-7720 |  | Shop DWG Submittal for the Septic Tank - Mechanical Works | 10d | 2025-12-07 | 2025-12-17 | HFR1-05-3110 | Draftsman [40 h] | MKH2-02-002-EN-1340 | 0 | 0 | D1290 | CON-LEG101-EN-1550 | HAS3-5740 |  |  |  |  |
| HFR1-05-7730 |  | Shop DWG Submittal for the Septic Tank - Finishing Works | 10d | 2025-12-07 | 2025-12-17 | HFR1-05-3110 | Draftsman [40 h] | MKH2-02-002-EN-1350 | 0 | 0 | D1300 | CON-LEG101-EN-1560 | HAS3-5750 |  |  |  |  |
| HFR1-05-7740 |  | Shop DWG Submittal for the Septic Tank - Electrical Works | 10d | 2025-12-07 | 2025-12-17 | HFR1-05-3110 | Draftsman [40 h] |  |  |  |  |  | HAS3-5760 |  |  |  |  |

| ID | WBS | Activity | Duration | Start | Finish | Predecessors | Resources | Old Activity ID-Alhasa | Old Activity ID | USERTEXT | Total Weight % | Weight 1 | Mapping Sheet Activity ID |
| --- | --- | --- | --- | --- | --- | --- | --- | --- | --- | --- | --- | --- | --- |
|  | 5 | **Shop Drawings Submittal for GRB Tank** |  | 2025-12-07 | 2025-12-17 |  |  |  |  |  |  |  |  |
| HFR1-05-7670 |  | Shop DWG Submittal for the GRB - Civil Works | 10d | 2025-12-07 | 2025-12-17 | HFR1-05-3110 | Draftsman [40 h] | HAS3-5690 | CON-LEG101-EN-1540 | MKH2-02-002-EN-1320 | 0 | 0 | D1270 |
| HFR1-05-7680 |  | Shop DWG Submittal for the GRB - Mechanical Works | 10d | 2025-12-07 | 2025-12-17 | HFR1-05-3110 | Draftsman [40 h] | HAS3-5700 | CON-LEG101-EN-1550 | MKH2-02-002-EN-1340 | 0 | 0 | D1290 |
| HFR1-05-7690 |  | Shop DWG Submittal for the GRB - Finishing Works | 10d | 2025-12-07 | 2025-12-17 | HFR1-05-3110 | Draftsman [40 h] | HAS3-5710 | CON-LEG101-EN-1560 | MKH2-02-002-EN-1350 | 0 | 0 | D1300 |
| HFR1-05-7700 |  | Shop DWG Submittal for the GRB - Electrical Works | 10d | 2025-12-07 | 2025-12-17 | HFR1-05-3110 | Draftsman [40 h] | HAS3-5720 |  |  |  |  |  |
|  | 4 | **Shop Drawings Submittal for Pump Room** |  | 2025-12-07 | 2025-12-15 |  |  |  |  |  |  |  |  |
| HFR1-05-8580 |  | Shop DWG Submittal for the Pump - Civil Works | 8d | 2025-12-07 | 2025-12-15 | HFR1-05-3110 | Draftsman [40 h] | HAS3-6900 | CON-LEG101-EN-1540 | MKH2-02-002-EN-1320 | 0 | 0 | D1270 |
| HFR1-05-8590 |  | Shop DWG Submittal for the Pump - Mechanical Works | 8d | 2025-12-07 | 2025-12-15 | HFR1-05-3110 | Draftsman [40 h] | HAS3-6910 | CON-LEG101-EN-1550 | MKH2-02-002-EN-1340 | 0 | 0 | D1290 |
| HFR1-05-8600 |  | Shop DWG Submittal for the Pump - Finishing Works | 8d | 2025-12-07 | 2025-12-15 | HFR1-05-3110 | Draftsman [40 h] | HAS3-6920 | CON-LEG101-EN-1560 | MKH2-02-002-EN-1350 | 0 | 0 | D1300 |
| HFR1-05-8610 |  | Shop DWG Submittal for the Pump - Electrical Works | 8d | 2025-12-07 | 2025-12-15 | HFR1-05-3110 | Draftsman [40 h] | HAS3-6930 |  |  |  |  |  |
|  | 2 | **Shop Drawings Approval** |  | 2025-12-16 | 2025-12-29 |  |  |  |  |  |  |  |  |
|  | 1 | **Shop Drawings Approval for Road Works** |  | 2025-12-18 | 2025-12-29 |  |  |  |  |  |  |  |  |
| HFR1-05-6160 |  | Shop DWG Approval for Topographic Survey | 10d | 2025-12-18 | 2025-12-29 | HFR1-05-3220 | Consultant Staff [10.5 h] | HAS3-3550 | CON-LEG101-EN-1570 | MKH2-02-002-EN-1370 | 0.114229524671769 | 0.00114229524671769 | D1320 |
| HFR1-05-7540 |  | Shop DWG Approval for Road Layout Plan | 7d | 2025-12-18 | 2025-12-25 | HFR1-05-6080 | Consultant Staff [10.5 h] | HAS3-5560 | CON-LEG101-EN-1580 | MKH2-02-002-EN-1380 | 0.114229524671769 | 0.00114229524671769 | D1330 |
| HFR1-05-7550 |  | Shop DWG Approval for Typical Cross Section | 7d | 2025-12-18 | 2025-12-25 | HFR1-05-6090 | Consultant Staff [10.5 h] | HAS3-5570 | CON-LEG101-EN-1590 | MKH2-02-002-EN-1390 | 0.114229524671769 | 0.00114229524671769 | D1340 |
| HFR1-05-7560 |  | Shop DWG Approval for Road Setting Out | 7d | 2025-12-18 | 2025-12-25 | HFR1-05-6100 | Consultant Staff [10.5 h] | HAS3-5580 | CON-LEG101-EN-1600 | MKH2-02-002-EN-1400 | 0.114229524671769 | 0.00114229524671769 | D1350 |
| HFR1-05-7570 |  | Shop DWG Approval for Road Profiles | 7d | 2025-12-18 | 2025-12-25 | HFR1-05-6110 | Consultant Staff [10.5 h] | HAS3-5590 | CON-LEG101-EN-1610 | MKH2-02-002-EN-1410 | 0.114229524671769 | 0.00114229524671769 | D1360 |
| HFR1-05-7580 |  | Shop DWG Approval for Grading Layout Plan | 7d | 2025-12-18 | 2025-12-25 | HFR1-05-6120 | Consultant Staff [10.5 h] | HAS3-5600 | CON-LEG101-EN-1620 | MKH2-02-002-EN-1420 | 0.114229524671769 | 0.00114229524671769 | D1370 |
| HFR1-05-7590 |  | Shop DWG Approval for Curb Setting Out Points | 7d | 2025-12-18 | 2025-12-25 | HFR1-05-6130 | Consultant Staff [8 h] | HAS3-5610 | CON-LEG101-EN-1630 | MKH2-02-002-EN-1430 | 0.114229524671769 | 0.00114229524671769 | D1380 |
| HFR1-05-7600 |  | Shop DWG Approval for Signing & Marking Layout Plan | 7d | 2025-12-18 | 2025-12-25 | HFR1-05-6140 | Consultant Staff [10.5 h] | HAS3-5620 | CON-LEG101-EN-1640 | MKH2-02-002-EN-1440 | 0.114229524671769 | 0.00114229524671769 | D1390 |
| HFR1-05-7610 |  | Shop DWG Approval for Standards Details | 7d | 2025-12-18 | 2025-12-25 | HFR1-05-6150 | Consultant Staff [10.5 h] | HAS3-5630 | CON-LEG101-EN-1650 | MKH2-02-002-EN-1450 | 0.114229524671769 | 0.00114229524671769 | D1400 |
|  | 9 | **Shop Drawings Submittal for Potable Water Network** |  | 2025-12-18 | 2025-12-29 |  |  |  |  |  |  |  |  |
| HFR1-05-7870 |  | Shop DWG Approval for Potable Water Plans | 10d | 2025-12-18 | 2025-12-29 | HFR1-05-6210 | Draftsman [40 h] | HAS3-5890 | CON-LEG101-EN-1390 | MKH2-02-002-EN-1090 | 0 | 0 | D1090 |
| HFR1-05-8820 |  | Shop DWG Approval for Potable Water Profiles | 10d | 2025-12-18 | 2025-12-29 | HFR1-05-7830 | Draftsman [40 h] | HAS3-7140 | CON-LEG101-EN-1400 | MKH2-02-002-EN-1100 | 0 | 0 | D1100 |
| HFR1-05-8830 |  | Shop DWG Approval for Potable Water Standard Details | 10d | 2025-12-18 | 2025-12-29 | HFR1-05-7840 | Draftsman [40 h] | HAS3-7150 | CON-LEG101-EN-1410 | MKH2-02-002-EN-1110 | 0 | 0 | D1110 |

| ID | WBS | Activity | Duration | Start | Finish | Predecessors | Resources | USERTEXT | Weight 1 | Total Weight % | Mapping Sheet Activity ID | Old Activity ID-Alhasa | Old Activity ID |
| --- | --- | --- | --- | --- | --- | --- | --- | --- | --- | --- | --- | --- | --- |
|  | 12 | **Shop Drawings Submittal for Sewer Water Network** |  | 2025-12-18 | 2025-12-29 |  |  |  |  |  |  |  |  |
| HFR1-05-7880 |  | Shop DWG Approval for Sewer Network Plans | 10d | 2025-12-18 | 2025-12-29 | HFR1-05-6220 | Draftsman [40 h] | MKH2-02-002-EN-1090 | 0 | 0 | D1090 | HAS3-5900 | CON-LEG101-EN-1390 |
| HFR1-05-8840 |  | Shop DWG Approval for Sewer Network Profiles | 10d | 2025-12-18 | 2025-12-29 | HFR1-05-7850 | Draftsman [40 h] | MKH2-02-002-EN-1100 | 0 | 0 | D1100 | HAS3-7160 | CON-LEG101-EN-1400 |
| HFR1-05-8850 |  | Shop DWG Approval for Sewer Network Standard Details | 10d | 2025-12-18 | 2025-12-29 | HFR1-05-7860 | Draftsman [40 h] | MKH2-02-002-EN-1110 | 0 | 0 | D1110 | HAS3-7170 | CON-LEG101-EN-1410 |
|  | 10 | **Shop Drawings Approval for Earthing System** |  | 2025-12-18 | 2025-12-25 |  |  |  |  |  |  |  |  |
| HFR1-05-8490 |  | Shop DWG Approval for Earthing System By SEC | 7d | 2025-12-18 | 2025-12-25 | HFR1-05-7620 | Consultant Staff [10.5 h] | MKH2-02-002-EN-1460 | 0.00147340149191714 | 0.147340149191714 | D4180 | HAS3-6810 | CON-LEG101-EN-3300 |
|  | 11 | **Shop Drawings Approval for Road Lighting** |  | 2025-12-18 | 2025-12-25 |  |  |  |  |  |  |  |  |
| HFR1-05-8500 |  | Shop DWG Approval for Street Lighting General Arrangement By SEC | 7d | 2025-12-18 | 2025-12-25 | HFR1-05-7630 | Consultant Staff [10.5 h] | MKH2-02-002-EN-1460 | 0.00147340149191714 | 0.147340149191714 | D4210 | HAS3-6820 | CON-LEG101-EN-3310 |
| HFR1-05-8510 |  | Shop DWG Approval for Street Lighting Network Layout By SEC | 7d | 2025-12-18 | 2025-12-25 | HFR1-05-7640 | Consultant Staff [10.5 h] | MKH2-02-002-EN-1470 | 0.00147340149191714 | 0.147340149191714 | D4220 | HAS3-6830 | CON-LEG101-EN-3320 |
| HFR1-05-8520 |  | Shop DWG Approval for Street Lighting Details By SEC | 7d | 2025-12-18 | 2025-12-25 | HFR1-05-7650 | Consultant Staff [10.5 h] | MKH2-02-002-EN-1480 | 0.0014734013779999 | 0.14734013779999 | D4230 | HAS3-6840 | CON-LEG101-EN-3330 |
| HFR1-05-8530 |  | Shop DWG Approval for Street Lighting Single Line Diagram By SEC | 7d | 2025-12-18 | 2025-12-25 | HFR1-05-7660 | Consultant Staff [10.5 h] | MKH2-02-002-EN-1480 | 0.0014734013779999 | 0.14734013779999 | D4390 | HAS3-6850 | CON-LEG101-EN-3360 |
|  | 6 | **Shop Drawings Approval for Hungers** |  | 2025-12-18 | 2025-12-25 |  |  |  |  |  |  |  |  |
| HFR1-05-8700 |  | Shop DWG Approval for the Hungers - Civil Works | 7d | 2025-12-18 | 2025-12-25 | HFR1-05-7790 | Consultant Staff [5.25 h] | MKH2-02-002-EN-1320 | 0 | 0 | D4440 | HAS3-7020 | CON-LEG101-EN-3410 |
| HFR1-05-8710 |  | Shop DWG Approval for the Hungers - Mechanical Works | 7d | 2025-12-18 | 2025-12-25 | HFR1-05-7800 | Consultant Staff [5.25 h] | MKH2-02-002-EN-1340 | 0 | 0 | D4450 | HAS3-7030 | CON-LEG101-EN-3420 |
| HFR1-05-8720 |  | Shop DWG Approval for the Hungers - Finishing Works | 7d | 2025-12-18 | 2025-12-25 | HFR1-05-7810 | Consultant Staff [5.25 h] | MKH2-02-002-EN-1350 | 0 | 0 | D4460 | HAS3-7040 | CON-LEG101-EN-3430 |
| HFR1-05-8730 |  | Shop DWG Approval for the Hungers - Electrical Works | 7d | 2025-12-18 | 2025-12-25 | HFR1-05-7820 | Consultant Staff [40 h] |  |  |  |  | HAS3-7050 |  |
|  | 5 | **Shop Drawings Approval for Prayer Room** |  | 2025-12-18 | 2025-12-25 |  |  |  |  |  |  |  |  |
| HFR1-05-8660 |  | Shop DWG Approval for the Prayer Room - Civil Works | 7d | 2025-12-18 | 2025-12-25 | HFR1-05-7750 | Consultant Staff [5.25 h] | MKH2-02-002-EN-1320 | 0 | 0 | D4440 | HAS3-6980 | CON-LEG101-EN-3410 |
| HFR1-05-8670 |  | Shop DWG Approval for the Prayer Room - Mechanical Works | 7d | 2025-12-18 | 2025-12-25 | HFR1-05-7760 | Consultant Staff [5.25 h] | MKH2-02-002-EN-1340 | 0 | 0 | D4450 | HAS3-6990 | CON-LEG101-EN-3420 |
| HFR1-05-8680 |  | Shop DWG Approval for the Prayer Room - Finishing Works | 7d | 2025-12-18 | 2025-12-25 | HFR1-05-7770 | Consultant Staff [5.25 h] | MKH2-02-002-EN-1350 | 0 | 0 | D4460 | HAS3-7000 | CON-LEG101-EN-3430 |
| HFR1-05-8690 |  | Shop DWG Approval for the Prayer Room - Electrical Works | 7d | 2025-12-18 | 2025-12-25 | HFR1-05-7780 | Consultant Staff [40 h] |  |  |  |  | HAS3-7010 |  |
|  | 4 | **Shop Drawings Approval for Septic Tank** |  | 2025-12-18 | 2025-12-25 |  |  |  |  |  |  |  |  |
| HFR1-05-8620 |  | Shop DWG Approval for the Septic Tank - Civil Works | 7d | 2025-12-18 | 2025-12-25 | HFR1-05-7710 | Consultant Staff [5.25 h] | MKH2-02-002-EN-1320 | 0 | 0 | D4440 | HAS3-6940 | CON-LEG101-EN-3410 |
| HFR1-05-8630 |  | Shop DWG Approval for the Septic Tank - Mechanical Works | 7d | 2025-12-18 | 2025-12-25 | HFR1-05-7720 | Consultant Staff [5.25 h] | MKH2-02-002-EN-1340 | 0 | 0 | D4450 | HAS3-6950 | CON-LEG101-EN-3420 |
| HFR1-05-8640 |  | Shop DWG Approval for the Septic Tank - Finishing Works | 7d | 2025-12-18 | 2025-12-25 | HFR1-05-7730 | Consultant Staff [5.25 h] | MKH2-02-002-EN-1350 | 0 | 0 | D4460 | HAS3-6960 | CON-LEG101-EN-3430 |
| HFR1-05-8650 |  | Shop DWG Approval for the Septic Tank - Electrical Works | 7d | 2025-12-18 | 2025-12-25 | HFR1-05-7740 | Consultant Staff [40 h] |  |  |  |  | HAS3-6970 |  |

| ID | WBS | Activity | Duration | Start | Finish | Predecessors | Resources | Old Activity ID-Alhasa | Old Activity ID | USERTEXT | Total Weight % | Weight 1 | Mapping Sheet Activity ID |
| --- | --- | --- | --- | --- | --- | --- | --- | --- | --- | --- | --- | --- | --- |
|  | 7 | **Shop Drawings Approval for GRB Tank** |  | 2025-12-18 | 2025-12-25 |  |  |  |  |  |  |  |  |
| HFR1-05-8540 |  | Shop DWG Approval for the GRB - Civil Works | 7d | 2025-12-18 | 2025-12-25 | HFR1-05-7670 | Consultant Staff [5.25 h] | HAS3-6860 | CON-LEG101-EN-3410 | MKH2-02-002-EN-1320 | 0 | 0 | D4440 |
| HFR1-05-8550 |  | Shop DWG Approval for the GRB - Mechanical Works | 7d | 2025-12-18 | 2025-12-25 | HFR1-05-7680 | Consultant Staff [5.25 h] | HAS3-6870 | CON-LEG101-EN-3420 | MKH2-02-002-EN-1340 | 0 | 0 | D4450 |
| HFR1-05-8560 |  | Shop DWG Approval for the GRB - Finishing Works | 7d | 2025-12-18 | 2025-12-25 | HFR1-05-7690 | Consultant Staff [5.25 h] | HAS3-6880 | CON-LEG101-EN-3430 | MKH2-02-002-EN-1350 | 0 | 0 | D4460 |
| HFR1-05-8570 |  | Shop DWG Approval for the GRB - Electrical Works | 7d | 2025-12-18 | 2025-12-25 | HFR1-05-7700 | Consultant Staff [40 h] | HAS3-6890 |  |  |  |  |  |
|  | 3 | **Shop Drawings Approval for Pump Room** |  | 2025-12-16 | 2025-12-24 |  |  |  |  |  |  |  |  |
| HFR1-05-9020 |  | Shop DWG Approval for the Pump Room - Civil Works | 8d | 2025-12-16 | 2025-12-24 | HFR1-05-8580 | Consultant Staff [5.25 h] | HAS3-7930 | CON-LEG101-EN-3410 | MKH2-02-002-EN-1320 | 0 | 0 | D4440 |
| HFR1-05-9030 |  | Shop DWG Approval for the Pump Room - Mechanical Works | 8d | 2025-12-16 | 2025-12-24 | HFR1-05-8590 | Consultant Staff [5.25 h] | HAS3-7940 | CON-LEG101-EN-3420 | MKH2-02-002-EN-1340 | 0 | 0 | D4450 |
| HFR1-05-9040 |  | Shop DWG Approval for the Pump Room - Finishing Works | 8d | 2025-12-16 | 2025-12-24 | HFR1-05-8600 | Consultant Staff [5.25 h] | HAS3-7950 | CON-LEG101-EN-3430 | MKH2-02-002-EN-1350 | 0 | 0 | D4460 |
| HFR1-05-9050 |  | Shop DWG Approval for the Pump Room - Electrical Works | 8d | 2025-12-16 | 2025-12-24 | HFR1-05-8610 | Consultant Staff [40 h] | HAS3-7960 |  |  |  |  |  |
|  | 3 | **Method Statements** |  | 2025-12-25 | 2026-01-11 |  |  |  |  |  |  |  |  |
|  | 1 | **Method Statements Submittal** |  | 2025-12-25 | 2025-12-31 |  |  |  |  |  |  |  |  |
| HFR1-05-3230 |  | Preparation & Submission of Method Statement for Earthworks | 6d | 2025-12-25 | 2025-12-31 | HFR1-05-9020 | QA/QC Engineer [30 h] | HAS3-1210 | CON-LEG101-EN-1810 | MKH2-02-002-EN-1740 | 0 | 0 | D1640 |
| HFR1-05-3250 |  | Preparation & Submission of Method Statement for Concrete Works | 6d | 2025-12-25 | 2025-12-31 | HFR1-05-9020 | QA/QC Engineer [30 h] | HAS3-1220 | CON-LEG101-EN-1820 | MKH2-02-002-EN-1760 | 0 | 0 | D1650 |
| HFR1-05-3260 |  | Preparation & Submission of Method Statement for Waterproofing Works | 6d | 2025-12-25 | 2025-12-31 | HFR1-05-9020 | QA/QC Engineer [30 h] | HAS3-1230 | CON-LEG101-EN-1830 | MKH2-02-002-EN-1770 | 0 | 0 | D1660 |
| HFR1-05-3280 |  | Preparation & Submission of Method Statement for Asphalt | 6d | 2025-12-25 | 2025-12-31 | HFR1-05-9020 | QA/QC Engineer [30 h] | HAS3-1240 | CON-LEG101-EN-1840 | MKH2-02-002-EN-1870 | 0 | 0 | D1710 |
| HFR1-05-4970 |  | Preparation & Submission of Method Statement for Epoxy Coating | 6d | 2025-12-25 | 2025-12-31 | HFR1-05-9020 | QA/QC Engineer [30 h] | HAS3-1960 | CON-LEG101-EN-1810 | MKH2-02-002-EN-1740 | 0 | 0 | D1640 |
| HFR1-05-4980 |  | Preparation & Submission of Method Statement for Metals | 6d | 2025-12-25 | 2025-12-31 | HFR1-05-9020 | QA/QC Engineer [64 h] | HAS3-1970 | CON-LEG101-EN-1820 | MKH2-02-002-EN-1760 | 0 | 0 | D1650 |
| HFR1-05-4990 |  | Preparation & Submission of Method Statement for Doors & Windows | 6d | 2025-12-25 | 2025-12-31 | HFR1-05-9020, HFR1-05-8610, HFR1-05-7700, HFR1-05-7740, HFR1-05-7780, HFR1-05-7820, HFR1-05-7690 | QA/QC Engineer [32 h] | HAS3-1980 | CON-LEG101-EN-1830 | MKH2-02-002-EN-1770 | 0 | 0 | D1660 |
|  | 2 | **Method Statements Approval** |  | 2026-01-01 | 2026-01-07 |  |  |  |  |  |  |  |  |
| HFR1-05-6170 |  | Approval of Method Statement for Earthworks | 6d | 2026-01-01 | 2026-01-07 | HFR1-05-3230 | Consultant Staff [5.25 h] | HAS3-3560 | CON-LEG101-EN-3440 | MKH2-02-002-EN-1740 | 0 | 0 | D4530 |
| HFR1-05-6180 |  | Approval of Method Statement for Concrete Works | 6d | 2026-01-01 | 2026-01-07 | HFR1-05-3250 | Consultant Staff [5.25 h] | HAS3-3570 | CON-LEG101-EN-3450 | MKH2-02-002-EN-1760 | 0 | 0 | D4540 |
| HFR1-05-6190 |  | Approval of Method Statement for Waterproofing Works | 6d | 2026-01-01 | 2026-01-07 | HFR1-05-3260 | Consultant Staff [5.25 h] | HAS3-3580 | CON-LEG101-EN-3460 | MKH2-02-002-EN-1770 | 0 | 0 | D4550 |
| HFR1-05-6200 |  | Approval of Method Statement for Asphalt | 6d | 2026-01-01 | 2026-01-07 | HFR1-05-3280 | Consultant Staff [5.25 h] | HAS3-3590 | CON-LEG101-EN-3470 | MKH2-02-002-EN-1870 | 0 | 0 | D4600 |
| HFR1-05-6230 |  | Approval of Method Statement for Epoxy Coating | 6d | 2026-01-01 | 2026-01-07 | HFR1-05-4970 | Consultant Staff [5.25 h] | HAS3-3620 | CON-LEG101-EN-3440 | MKH2-02-002-EN-1740 | 0 | 0 | D4530 |
| HFR1-05-6240 |  | Approval of Method Statement for Metals | 6d | 2026-01-01 | 2026-01-07 | HFR1-05-4980 | Consultant Staff [5.25 h] | HAS3-3630 | CON-LEG101-EN-3450 | MKH2-02-002-EN-1760 | 0 | 0 | D4540 |
| HFR1-05-6250 |  | Approval of Method Statement for Doors & Windows | 6d | 2026-01-01 | 2026-01-07 | HFR1-05-4990 | Consultant Staff [5.25 h] | HAS3-3640 | CON-LEG101-EN-3460 | MKH2-02-002-EN-1770 | 0 | 0 | D4550 |

| ID | WBS | Activity | Duration | Start | Finish | Predecessors | Resources | Old Activity ID-Alhasa | Old Activity ID | USERTEXT | Total Weight % | Weight 1 | Mapping Sheet Activity ID |
| --- | --- | --- | --- | --- | --- | --- | --- | --- | --- | --- | --- | --- | --- |
|  | 3 | **Method Statements Staging Time** |  | 2026-01-08 | 2026-01-11 |  |  |  |  |  |  |  |  |
| HFR1-05-6920 |  | Staging Time of Method Statement for Earthworks | 3d | 2026-01-08 | 2026-01-11 | HFR1-05-6170 | Consultant Staff [5.25 h] | HAS3-4720 | CON-LEG101-EN-3520 | MKH2-02-002-EN-1740 | 0 | 0 | D4530 |
| HFR1-05-6930 |  | Staging Time of Method Statement for Concrete Works | 3d | 2026-01-08 | 2026-01-11 | HFR1-05-6180 | Consultant Staff [5.25 h] | HAS3-4730 | CON-LEG101-EN-3530 | MKH2-02-002-EN-1760 | 0 | 0 | D4540 |
| HFR1-05-6940 |  | Staging Time of Method Statement for Waterproofing Works | 3d | 2026-01-08 | 2026-01-11 | HFR1-05-6190 | Consultant Staff [5.25 h] | HAS3-4740 | CON-LEG101-EN-3540 | MKH2-02-002-EN-1770 | 0 | 0 | D4550 |
| HFR1-05-6950 |  | Staging Time of Method Statement for Asphalt | 3d | 2026-01-08 | 2026-01-11 | HFR1-05-6200 | Consultant Staff [5.25 h] | HAS3-4750 | CON-LEG101-EN-3550 | MKH2-02-002-EN-1870 | 0 | 0 | D4600 |
| HFR1-05-7510 |  | Staging Time of Method Statement for Epoxy Coating | 3d | 2026-01-08 | 2026-01-11 | HFR1-05-6230 | Consultant Staff [5.25 h] | HAS3-5310 | CON-LEG101-EN-3520 | MKH2-02-002-EN-1740 | 0 | 0 | D4530 |
| HFR1-05-7520 |  | Staging Time of Method Statement for Metals | 3d | 2026-01-08 | 2026-01-11 | HFR1-05-6240 | Consultant Staff [5.25 h] | HAS3-5320 | CON-LEG101-EN-3530 | MKH2-02-002-EN-1760 | 0 | 0 | D4540 |
| HFR1-05-7530 |  | Staging Time of Method Statement for Doors & Windows | 3d | 2026-01-08 | 2026-01-11 | HFR1-05-6250 | Consultant Staff [5.25 h] | HAS3-5330 | CON-LEG101-EN-3540 | MKH2-02-002-EN-1770 | 0 | 0 | D4550 |
|  | 4 | **Pre-qualification and Material** |  | 2025-12-25 | 2026-01-28 |  |  |  |  |  |  |  |  |
|  | 2 | **Pre-qualification** |  | 2025-12-25 | 2026-01-14 |  |  |  |  |  |  |  |  |
|  | 1 | **Road Works - Civil** |  | 2025-12-25 | 2026-01-14 |  |  |  |  |  |  |  |  |
|  | 1 | **Steel Reinforcement** |  | 2025-12-25 | 2026-01-07 |  |  |  |  |  |  |  |  |
| HFR1-05-3290 |  | Pre-Qualification Submittal for Steel Reinforcement | 6d | 2025-12-25 | 2025-12-31 | HFR1-05-9020 | QA/QC Engineer [32 h] | HAS3-1250 | CON-LEG101-SB-4200 | MKH2-02-002-SB-1120 | 0 | 0 | D6848 |
| HFR1-05-5040 |  | Pre-Qualification Approval for Steel Reinforcement | 6d | 2026-01-01 | 2026-01-07 | HFR1-05-3290 | Consultant Staff [7.35 h] | HAS3-2280 | CON-LEG101-SB-4210 | MKH2-02-002-SB-1130 | 0 | 0 | D6850 |
|  | 2 | **Ready Mixed Concrete** |  | 2025-12-25 | 2026-01-07 |  |  |  |  |  |  |  |  |
| HFR1-05-5050 |  | Pre-Qualification Submittal for Ready Mixed Concrete | 6d | 2025-12-25 | 2025-12-31 | HFR1-05-9020 | QA/QC Engineer [32 h] | HAS3-2290 | CON-LEG101-SB-4220 | MKH2-02-002-SB-1120 | 0 | 0 | D6868 |
| HFR1-05-6270 |  | Pre-Qualification Approval for Ready Mixed Concrete | 6d | 2026-01-01 | 2026-01-07 | HFR1-05-5050 | Consultant Staff [7.35 h] | HAS3-3780 | CON-LEG101-SB-4230 | MKH2-02-002-SB-1130 | 0 | 0 | D6870 |
|  | 3 | **Water Proofing** |  | 2025-12-25 | 2026-01-07 |  |  |  |  |  |  |  |  |
| HFR1-05-6280 |  | Pre-Qualification Submittal for Water Proofing | 6d | 2025-12-25 | 2025-12-31 | HFR1-05-9020 | QA/QC Engineer [32 h] | HAS3-3790 | CON-LEG101-SB-4240 | MKH2-02-002-SB-1120 | 0 | 0 | D6888 |
| HFR1-05-6910 |  | Pre-Qualification Approval for Water Proofing | 6d | 2026-01-01 | 2026-01-07 | HFR1-05-6280 | Consultant Staff [7.35 h] | HAS3-4710 | CON-LEG101-SB-4250 | MKH2-02-002-SB-1130 | 0 | 0 | D6890 |
|  | 4 | **Aggregate Base Course** |  | 2025-12-25 | 2026-01-07 |  |  |  |  |  |  |  |  |
| HFR1-05-6260 |  | Pre-Qualification Submittal for Aggregate Base Cource | 6d | 2025-12-25 | 2025-12-31 | HFR1-05-9020 | QA/QC Engineer [32 h] | HAS3-3770 | CON-LEG101-SB-1000 | MKH2-02-002-SB-1120 | 0 | 0 | D2000 |
| HFR1-05-6870 |  | Pre-Qualification Approval for Aggregate Base Cource | 6d | 2026-01-01 | 2026-01-07 | HFR1-05-6260 | Consultant Staff [7.35 h] | HAS3-4670 | CON-LEG101-SB-1010 | MKH2-02-002-SB-1130 | 0 | 0 | D2010 |
|  | 5 | **Bituminous Base & Wearing Course** |  | 2025-12-25 | 2026-01-07 |  |  |  |  |  |  |  |  |
| HFR1-05-6880 |  | Pre-Qualification Submittal for Bituminous Base & Wearing Cource | 6d | 2025-12-25 | 2025-12-31 | HFR1-05-9020 | QA/QC Engineer [32 h] | HAS3-4680 | CON-LEG101-SB-1040 | MKH2-02-002-SB-1160 | 0 | 0 | D2040 |
| HFR1-05-7920 |  | Pre-Qualification Approval for Bituminous & Wearing Cource | 6d | 2026-01-01 | 2026-01-07 | HFR1-05-6880 | Consultant Staff [7.35 h] | HAS3-6050 | CON-LEG101-SB-1050 | MKH2-02-002-SB-1170 | 0 | 0 | D2050 |

| ID | WBS | Activity | Duration | Start | Finish | Predecessors | Resources | Old Activity ID-Alhasa | Old Activity ID | USERTEXT | Weight 1 | Total Weight % | Mapping Sheet Activity ID |
| --- | --- | --- | --- | --- | --- | --- | --- | --- | --- | --- | --- | --- | --- |
|  | 7 | **Precast Concrete Kerb** |  | 2025-12-25 | 2026-01-07 |  |  |  |  |  |  |  |  |
| HFR1-05-6890 |  | Pre-Qualification Submittal for Precast Concrete Kerb | 6d | 2025-12-25 | 2025-12-31 | HFR1-05-9020 | QA/QC Engineer [32 h] | HAS3-4690 | CON-LEG101-SB-1080 | MKH2-02-002-SB-1240 | 0 | 0 | D2120 |
| HFR1-05-7930 |  | Pre-Qualification Approval for Precast Concrete Kerb | 6d | 2026-01-01 | 2026-01-07 | HFR1-05-6890 | Consultant Staff [7.35 h] | HAS3-6060 | CON-LEG101-SB-1090 | MKH2-02-002-SB-1250 | 0 | 0 | D2130 |
|  | 8 | **Interlocking Block Pavers** |  | 2025-12-25 | 2026-01-07 |  |  |  |  |  |  |  |  |
| HFR1-05-6900 |  | Pre-Qualification Submittal for Interlocking Block Pavers | 6d | 2025-12-25 | 2025-12-31 | HFR1-05-9020 | QA/QC Engineer [32 h] | HAS3-4700 | CON-LEG101-SB-1120 | MKH2-02-002-SB-1280 | 0 | 0 | D2160 |
| HFR1-05-7940 |  | Pre-Qualification Approval for Interlocking Block Pavers | 6d | 2026-01-01 | 2026-01-07 | HFR1-05-6900 | Consultant Staff [7.35 h] | HAS3-6070 | CON-LEG101-SB-1130 | MKH2-02-002-SB-1290 | 0 | 0 | D2170 |
|  | 9 | **Pavement Markings** |  | 2025-12-25 | 2026-01-14 |  |  |  |  |  |  |  |  |
| HFR1-05-7950 |  | Pre-Qualification Submittal for Pavement Markings | 6d | 2025-12-25 | 2025-12-31 | HFR1-05-9020 | QA/QC Engineer [32 h] | HAS3-6080 | CON-LEG101-SB-1160 | MKH2-02-002-SB-1320 | 0 | 0 | D2200 |
| HFR1-05-8470 |  | Pre-Qualification Approval for Pavement Markings | 6d | 2026-01-08 | 2026-01-14 | HFR1-05-7950, HFR1-05-6870 | Consultant Staff [7.35 h] | HAS3-6790 | CON-LEG101-SB-1170 | MKH2-02-002-SB-1330 | 0 | 0 | D2210 |
|  | 10 | **Traffic Signs** |  | 2025-12-25 | 2026-01-07 |  |  |  |  |  |  |  |  |
| HFR1-05-8480 |  | Pre-Qualification Submittal for Traffic Signs | 6d | 2025-12-25 | 2025-12-31 | HFR1-05-9020 | QA/QC Engineer [32 h] | HAS3-6800 | CON-LEG101-SB-1200 | MKH2-02-002-SB-1360 | 0 | 0 | D2240 |
| HFR1-05-8920 |  | Pre-Qualification Approval for Traffic Signs | 6d | 2026-01-01 | 2026-01-07 | HFR1-05-8480 | Consultant Staff [7.35 h] | HAS3-7440 | CON-LEG101-SB-1210 | MKH2-02-002-SB-1370 | 0 | 0 | D2250 |
|  | 2 | **Potable Water Network** |  | 2025-12-25 | 2026-01-07 |  |  |  |  |  |  |  |  |
|  | 1 | **HDPE Pipes** |  | 2025-12-25 | 2026-01-07 |  |  |  |  |  |  |  |  |
| HFR1-05-4910 |  | Pre-Qualification Submittal for HDPE Pipes | 6d | 2025-12-25 | 2025-12-31 | HFR1-05-9020 | QA/QC Engineer [32 h] | HAS3-1900 | CON-LEG101-SB-4200 | MKH2-02-002-SB-1120 | 0 | 0 | D6848 |
| HFR1-05-5600 |  | Pre-Qualification Approval for HDPE Pipes | 6d | 2026-01-01 | 2026-01-07 | HFR1-05-4910 | Consultant Staff [7.35 h] | HAS3-2840 | CON-LEG101-SB-4210 | MKH2-02-002-SB-1130 | 0 | 0 | D6850 |
|  | 2 | **Valves** |  | 2025-12-25 | 2026-01-07 |  |  |  |  |  |  |  |  |
| HFR1-05-5610 |  | Pre-Qualification Submittal for Valves | 6d | 2025-12-25 | 2025-12-31 | HFR1-05-9020 | QA/QC Engineer [32 h] | HAS3-2850 | CON-LEG101-SB-4220 | MKH2-02-002-SB-1120 | 0 | 0 | D6868 |
| HFR1-05-6800 |  | Pre-Qualification Approval for Valves | 6d | 2026-01-01 | 2026-01-07 | HFR1-05-5610 | Consultant Staff [7.35 h] | HAS3-4310 | CON-LEG101-SB-4230 | MKH2-02-002-SB-1130 | 0 | 0 | D6870 |
|  | 3 | **Sewer Water Network** |  | 2025-12-25 | 2026-01-07 |  |  |  |  |  |  |  |  |
|  | 1 | **GRP Pipes** |  | 2025-12-25 | 2026-01-07 |  |  |  |  |  |  |  |  |
| HFR1-05-4920 |  | Pre-Qualification Submittal for GRP Pipes | 6d | 2025-12-25 | 2025-12-31 | HFR1-05-9020 | QA/QC Engineer [32 h] | HAS3-1910 | CON-LEG101-SB-4200 | MKH2-02-002-SB-1120 | 0 | 0 | D6848 |
| HFR1-05-5620 |  | Pre-Qualification Approval for GRP Pipes | 6d | 2026-01-01 | 2026-01-07 | HFR1-05-4920 | Consultant Staff [7.35 h] | HAS3-2860 | CON-LEG101-SB-4210 | MKH2-02-002-SB-1130 | 0 | 0 | D6850 |
|  | 2 | **Manholes** |  | 2025-12-25 | 2026-01-07 |  |  |  |  |  |  |  |  |
| HFR1-05-5630 |  | Pre-Qualification Submittal for Manholes | 6d | 2025-12-25 | 2025-12-31 | HFR1-05-9020 | QA/QC Engineer [32 h] | HAS3-2870 | CON-LEG101-SB-4220 | MKH2-02-002-SB-1120 | 0 | 0 | D6868 |
| HFR1-05-6810 |  | Pre-Qualification Approval for Manholes | 6d | 2026-01-01 | 2026-01-07 | HFR1-05-5630 | Consultant Staff [7.35 h] | HAS3-4320 | CON-LEG101-SB-4230 | MKH2-02-002-SB-1130 | 0 | 0 | D6870 |

| ID | WBS | Activity | Duration | Start | Finish | Predecessors | Resources | Old Activity ID-Alhasa | Old Activity ID | Weight 1 | Total Weight % | USERTEXT | Mapping Sheet Activity ID |
| --- | --- | --- | --- | --- | --- | --- | --- | --- | --- | --- | --- | --- | --- |
|  | 7 | **Civil Works - Buildings** |  | 2025-12-25 | 2026-01-14 |  |  |  |  |  |  |  |  |
|  | 2 | **Steel Reinforcement** |  | 2025-12-25 | 2026-01-07 |  |  |  |  |  |  |  |  |
| HFR1-05-3340 |  | Pre-Qualification Submittal for Steel Reinforcement | 6d | 2025-12-25 | 2025-12-31 | HFR1-05-9020 | QA/QC Engineer [32 h] | HAS3-1280 | CON-LEG101-SB-2280 | 0 | 0 | MKH2-02-002-SB-3040 | D3820 |
| HFR1-05-5370 |  | Pre-Qualification Approval for Steel Reinforcement | 6d | 2026-01-01 | 2026-01-07 | HFR1-05-3340 | Consultant Staff [7.35 h] | HAS3-2610 | CON-LEG101-SB-2320 | 0 | 0 | MKH2-02-002-SB-3050 | D3860 |
|  | 1 | **Ready Mix Concrete** |  | 2025-12-25 | 2026-01-07 |  |  |  |  |  |  |  |  |
| HFR1-05-5360 |  | Pre-Qualification Submittal for Ready Mix Concrete | 6d | 2025-12-25 | 2025-12-31 | HFR1-05-9020 | QA/QC Engineer [32 h] | HAS3-2600 | CON-LEG101-SB-2260 | 0 | 0 | MKH2-02-002-SB-3040 | D3800 |
| HFR1-05-6600 |  | Pre-Qualification Approval for Ready Mix Concrete | 6d | 2026-01-01 | 2026-01-07 | HFR1-05-5360 | Consultant Staff [7.35 h] | HAS3-4110 | CON-LEG101-SB-2300 | 0 | 0 | MKH2-02-002-SB-3050 | D3840 |
|  | 3 | **Masonry** |  | 2025-12-25 | 2026-01-07 |  |  |  |  |  |  |  |  |
| HFR1-05-5380 |  | Pre-Qualification Submittal for Masonry | 6d | 2025-12-25 | 2025-12-31 | HFR1-05-9020 | QA/QC Engineer [32 h] | HAS3-2620 | CON-LEG101-SB-3240 | 0 | 0 | MKH2-02-002-SB-3040 | D5778 |
| HFR1-05-6610 |  | Pre-Qualification Approval for Masonry | 6d | 2026-01-01 | 2026-01-07 | HFR1-05-5380 | Consultant Staff [7.35 h] | HAS3-4120 | CON-LEG101-SB-3250 | 0 | 0 | MKH2-02-002-SB-3050 | D5788 |
|  | 4 | **Steel Structure** |  | 2025-12-25 | 2026-01-07 |  |  |  |  |  |  |  |  |
| HFR1-05-5390 |  | Pre-Qualification Submittal for Steel Structure | 6d | 2025-12-25 | 2025-12-31 | HFR1-05-9020 | QA/QC Engineer [32 h] | HAS3-2630 | CON-LEG101-SB-4350 | 0 | 0 | MKH2-02-002-SB-3040 | D3800 |
| HFR1-05-6620 |  | Pre-Qualification Approval for Steel Structure | 6d | 2026-01-01 | 2026-01-07 | HFR1-05-5390 | Consultant Staff [7.35 h] | HAS3-4130 | CON-LEG101-SB-4370 | 0 | 0 | MKH2-02-002-SB-3050 | D3840 |
|  | 5 | **Thermal & Moisture Protection** |  | 2025-12-25 | 2026-01-07 |  |  |  |  |  |  |  |  |
| HFR1-05-5400 |  | Pre-Qualification Submittal for Thermal & Moisture Protection | 6d | 2025-12-25 | 2025-12-31 | HFR1-05-9020 | QA/QC Engineer [32 h] | HAS3-2640 | CON-LEG101-SB-4360 | 0 | 0 | MKH2-02-002-SB-3040 | D3820 |
| HFR1-05-6630 |  | Pre-Qualification Approval for Thermal & Moisture Protection | 6d | 2026-01-01 | 2026-01-07 | HFR1-05-5400 | Consultant Staff [7.35 h] | HAS3-4140 | CON-LEG101-SB-4380 | 0 | 0 | MKH2-02-002-SB-3050 | D3860 |
|  | 6 | **Water Proofing System** |  | 2025-12-25 | 2026-01-07 |  |  |  |  |  |  |  |  |
| HFR1-05-5410 |  | Pre-Qualification Submittal for Water Proofing System | 6d | 2025-12-25 | 2025-12-31 | HFR1-05-9020 | QA/QC Engineer [32 h] | HAS3-2650 | CON-LEG101-SB-4390 | 0 | 0 | MKH2-02-002-SB-3040 | D5778 |
| HFR1-05-6640 |  | Pre-Qualification Approval for Water Proofing System | 6d | 2026-01-01 | 2026-01-07 | HFR1-05-5410 | Consultant Staff [7.35 h] | HAS3-4150 | CON-LEG101-SB-4400 | 0 | 0 | MKH2-02-002-SB-3050 | D5788 |
|  | 7 | **Doors & Windows** |  | 2025-12-25 | 2026-01-07 |  |  |  |  |  |  |  |  |
| HFR1-05-5450 |  | Pre-Qualification Submittal for Doors & Windows | 6d | 2025-12-25 | 2025-12-31 | HFR1-05-9020 | QA/QC Engineer [32 h] | HAS3-2690 | CON-LEG101-SB-4470 | 0 | 0 | MKH2-02-002-SB-3040 | D3800 |
| HFR1-05-6680 |  | Pre-Qualification Approval for Doors & Windows | 6d | 2026-01-01 | 2026-01-07 | HFR1-05-5450 | Consultant Staff [7.35 h] | HAS3-4190 | CON-LEG101-SB-4490 | 0 | 0 | MKH2-02-002-SB-3050 | D3840 |
|  | 8 | **Floor Finishes** |  | 2025-12-25 | 2026-01-07 |  |  |  |  |  |  |  |  |
| HFR1-05-5420 |  | Pre-Qualification Submittal for Floor Finishes | 6d | 2025-12-25 | 2025-12-31 | HFR1-05-9020 | QA/QC Engineer [32 h] | HAS3-2660 | CON-LEG101-SB-4410 | 0 | 0 | MKH2-02-002-SB-3040 | D3800 |
| HFR1-05-6650 |  | Pre-Qualification Approval for Floor Finishes | 6d | 2026-01-01 | 2026-01-07 | HFR1-05-5420 | Consultant Staff [7.35 h] | HAS3-4160 | CON-LEG101-SB-4430 | 0 | 0 | MKH2-02-002-SB-3050 | D3840 |

| ID | WBS | Activity | Duration | Start | Finish | Predecessors | Resources | Old Activity ID-Alhasa | Old Activity ID | Total Weight % | Weight 1 | USERTEXT | Mapping Sheet Activity ID |
| --- | --- | --- | --- | --- | --- | --- | --- | --- | --- | --- | --- | --- | --- |
|  | 9 | **Wall Finishes** |  | 2025-12-25 | 2026-01-07 |  |  |  |  |  |  |  |  |
| HFR1-05-5460 |  | Pre-Qualification Submittal for Wall Finishes | 6d | 2025-12-25 | 2025-12-31 | HFR1-05-9020 | QA/QC Engineer [32 h] | HAS3-2700 | CON-LEG101-SB-4480 | 0 | 0 | MKH2-02-002-SB-3040 | D3820 |
| HFR1-05-6690 |  | Pre-Qualification Approval for Wall Finishes | 6d | 2026-01-01 | 2026-01-07 | HFR1-05-5460 | Consultant Staff [7.35 h] | HAS3-4200 | CON-LEG101-SB-4500 | 0 | 0 | MKH2-02-002-SB-3050 | D3860 |
|  | 10 | **Ceiling Finishes** |  | 2026-01-01 | 2026-01-14 |  |  |  |  |  |  |  |  |
| HFR1-05-5470 |  | Pre-Qualification Submittal for Ceiling Finishes | 6d | 2026-01-01 | 2026-01-07 | HFR1-05-5460 | QA/QC Engineer [32 h] | HAS3-2710 | CON-LEG101-SB-4510 | 0 | 0 | MKH2-02-002-SB-3040 | D5778 |
| HFR1-05-6700 |  | Pre-Qualification Approval for Ceiling Finishes | 6d | 2026-01-08 | 2026-01-14 | HFR1-05-5470 | Consultant Staff [7.35 h] | HAS3-4210 | CON-LEG101-SB-4520 | 0 | 0 | MKH2-02-002-SB-3050 | D5788 |
|  | 11 | **Fittings** |  | 2026-01-01 | 2026-01-14 |  |  |  |  |  |  |  |  |
| HFR1-05-5430 |  | Pre-Qualification Submittal for Fittings | 6d | 2026-01-01 | 2026-01-07 | HFR1-05-5460 | QA/QC Engineer [32 h] | HAS3-2670 | CON-LEG101-SB-4420 | 0 | 0 | MKH2-02-002-SB-3040 | D3820 |
| HFR1-05-6660 |  | Pre-Qualification Approval for Fittings | 6d | 2026-01-08 | 2026-01-14 | HFR1-05-5430 | Consultant Staff [7.35 h] | HAS3-4170 | CON-LEG101-SB-4440 | 0 | 0 | MKH2-02-002-SB-3050 | D3860 |
|  | 12 | **Signages** |  | 2026-01-01 | 2026-01-14 |  |  |  |  |  |  |  |  |
| HFR1-05-5440 |  | Pre-Qualification Submittal for Signages | 6d | 2026-01-01 | 2026-01-07 | HFR1-05-5460 | QA/QC Engineer [32 h] | HAS3-2680 | CON-LEG101-SB-4450 | 0 | 0 | MKH2-02-002-SB-3040 | D5778 |
| HFR1-05-6670 |  | Pre-Qualification Approval for Signages | 6d | 2026-01-08 | 2026-01-14 | HFR1-05-5440 | Consultant Staff [7.35 h] | HAS3-4180 | CON-LEG101-SB-4460 | 0 | 0 | MKH2-02-002-SB-3050 | D5788 |
|  | 13 | **Logo** |  | 2026-01-01 | 2026-01-14 |  |  |  |  |  |  |  |  |
| HFR1-05-5510 |  | Pre-Qualification Submittal for Logo | 6d | 2026-01-01 | 2026-01-07 | HFR1-05-5460 | QA/QC Engineer [32 h] | HAS3-2750 | CON-LEG101-SB-4590 | 0 | 0 | MKH2-02-002-SB-3040 | D3800 |
| HFR1-05-6740 |  | Pre-Qualification Approval for Logo | 6d | 2026-01-08 | 2026-01-14 | HFR1-05-5510 | Consultant Staff [7.35 h] | HAS3-4250 | CON-LEG101-SB-4600 | 0 | 0 | MKH2-02-002-SB-3050 | D3840 |
|  | 14 | **Pre Engineered Structures** |  | 2026-01-01 | 2026-01-14 |  |  |  |  |  |  |  |  |
| HFR1-05-5480 |  | Pre-Qualification Submittal for Pre Engineered Structure | 6d | 2026-01-01 | 2026-01-07 | HFR1-05-5460 | QA/QC Engineer [32 h] | HAS3-2720 | CON-LEG101-SB-4530 | 0 | 0 | MKH2-02-002-SB-3040 | D3800 |
| HFR1-05-6710 |  | Pre-Qualification Approval for Pre Engineered Structure | 6d | 2026-01-08 | 2026-01-14 | HFR1-05-5480 | Consultant Staff [7.35 h] | HAS3-4220 | CON-LEG101-SB-4540 | 0 | 0 | MKH2-02-002-SB-3050 | D3840 |
|  | 15 | **Steel Fence** |  | 2026-01-01 | 2026-01-14 |  |  |  |  |  |  |  |  |
| HFR1-05-5490 |  | Pre-Qualification Submittal for Steel Fences | 6d | 2026-01-01 | 2026-01-07 | HFR1-05-5460 | QA/QC Engineer [32 h] | HAS3-2730 | CON-LEG101-SB-4550 | 0 | 0 | MKH2-02-002-SB-3040 | D3820 |
| HFR1-05-6720 |  | Pre-Qualification Approval for Steel Fences | 6d | 2026-01-08 | 2026-01-14 | HFR1-05-5490 | Consultant Staff [7.35 h] | HAS3-4230 | CON-LEG101-SB-4560 | 0 | 0 | MKH2-02-002-SB-3050 | D3860 |
|  | 16 | **Gates** |  | 2026-01-01 | 2026-01-14 |  |  |  |  |  |  |  |  |
| HFR1-05-5500 |  | Pre-Qualification Submittal for Gates | 6d | 2026-01-01 | 2026-01-07 | HFR1-05-5460 | QA/QC Engineer [32 h] | HAS3-2740 | CON-LEG101-SB-4570 | 0 | 0 | MKH2-02-002-SB-3040 | D3800 |
| HFR1-05-6730 |  | Pre-Qualification Approval for Gates | 6d | 2026-01-08 | 2026-01-14 | HFR1-05-5500 | Consultant Staff [7.35 h] | HAS3-4240 | CON-LEG101-SB-4580 | 0 | 0 | MKH2-02-002-SB-3050 | D3840 |

| ID | WBS | Activity | Duration | Start | Finish | Predecessors | Resources | Old Activity ID-Alhasa | Old Activity ID | Total Weight % | Weight 1 | USERTEXT | Mapping Sheet Activity ID |
| --- | --- | --- | --- | --- | --- | --- | --- | --- | --- | --- | --- | --- | --- |
|  | 17 | **Pump Shed** |  | 2026-01-01 | 2026-01-14 |  |  |  |  |  |  |  |  |
| HFR1-05-5520 |  | Pre-Qualification Submittal for Pump Shed | 6d | 2026-01-01 | 2026-01-07 | HFR1-05-5460 | QA/QC Engineer [32 h] | HAS3-2760 | CON-LEG101-SB-4730 | 0 | 0 | MKH2-02-002-SB-3040 | D3800 |
| HFR1-05-6750 |  | Pre-Qualification Approval for Pump Shed | 6d | 2026-01-08 | 2026-01-14 | HFR1-05-5520 | Consultant Staff [7.35 h] | HAS3-4260 | CON-LEG101-SB-4740 | 0 | 0 | MKH2-02-002-SB-3050 | D3840 |
|  | 5 | **Mechanical - Buildings** |  | 2026-01-01 | 2026-01-14 |  |  |  |  |  |  |  |  |
|  | 2 | **Fire Fighting System** |  | 2026-01-01 | 2026-01-14 |  |  |  |  |  |  |  |  |
| HFR1-05-3300 |  | Pre-Qualification Submittal for Fire Fighting System | 6d | 2026-01-01 | 2026-01-07 | HFR1-05-5460 | QA/QC Engineer [32 h] | HAS3-1260 | CON-LEG101-SB-2280 | 0 | 0 | MKH2-02-002-SB-3040 | D3820 |
| HFR1-05-5070 |  | Pre-Qualification Approval for Fire Fighting System | 6d | 2026-01-08 | 2026-01-14 | HFR1-05-3300 | Consultant Staff [7.35 h] | HAS3-2310 | CON-LEG101-SB-2320 | 0 | 0 | MKH2-02-002-SB-3050 | D3860 |
|  | 1 | **HDPE Pipes** |  | 2026-01-01 | 2026-01-14 |  |  |  |  |  |  |  |  |
| HFR1-05-5060 |  | Pre-Qualification Submittal for HDPE Pipes | 6d | 2026-01-01 | 2026-01-07 | HFR1-05-5460 | QA/QC Engineer [32 h] | HAS3-2300 | CON-LEG101-SB-2260 | 0 | 0 | MKH2-02-002-SB-3040 | D3800 |
| HFR1-05-6290 |  | Pre-Qualification Approval for HDPE Pipes | 6d | 2026-01-08 | 2026-01-14 | HFR1-05-5060 | Consultant Staff [7.35 h] | HAS3-3800 | CON-LEG101-SB-2300 | 0 | 0 | MKH2-02-002-SB-3050 | D3840 |
|  | 3 | **Valves** |  | 2026-01-01 | 2026-01-14 |  |  |  |  |  |  |  |  |
| HFR1-05-5080 |  | Pre-Qualification Submittal for Valves | 6d | 2026-01-01 | 2026-01-07 | HFR1-05-5460 | QA/QC Engineer [32 h] | HAS3-2320 | CON-LEG101-SB-3240 | 0 | 0 | MKH2-02-002-SB-3040 | D5778 |
| HFR1-05-6300 |  | Pre-Qualification Approval for Valves | 6d | 2026-01-08 | 2026-01-14 | HFR1-05-5080 | Consultant Staff [7.35 h] | HAS3-3810 | CON-LEG101-SB-3250 | 0 | 0 | MKH2-02-002-SB-3050 | D5788 |
|  | 4 | **GRP pipes** |  | 2026-01-01 | 2026-01-14 |  |  |  |  |  |  |  |  |
| HFR1-05-5090 |  | Pre-Qualification Submittal for GRP Pipes | 6d | 2026-01-01 | 2026-01-07 | HFR1-05-5460 | QA/QC Engineer [32 h] | HAS3-2330 | CON-LEG101-SB-4350 | 0 | 0 | MKH2-02-002-SB-3040 | D3800 |
| HFR1-05-6310 |  | Pre-Qualification Approval for GRP Pipes | 6d | 2026-01-08 | 2026-01-14 | HFR1-05-5090 | Consultant Staff [7.35 h] | HAS3-3820 | CON-LEG101-SB-4370 | 0 | 0 | MKH2-02-002-SB-3050 | D3840 |
|  | 5 | **Manholes** |  | 2026-01-01 | 2026-01-14 |  |  |  |  |  |  |  |  |
| HFR1-05-5100 |  | Pre-Qualification Submittal for Manholes | 6d | 2026-01-01 | 2026-01-07 | HFR1-05-5460 | QA/QC Engineer [32 h] | HAS3-2340 | CON-LEG101-SB-4360 | 0 | 0 | MKH2-02-002-SB-3040 | D3820 |
| HFR1-05-6320 |  | Pre-Qualification Approval for Manholes | 6d | 2026-01-08 | 2026-01-14 | HFR1-05-5100 | Consultant Staff [7.35 h] | HAS3-3830 | CON-LEG101-SB-4380 | 0 | 0 | MKH2-02-002-SB-3050 | D3860 |
|  | 6 | **Fire Protectional System** |  | 2026-01-01 | 2026-01-14 |  |  |  |  |  |  |  |  |
| HFR1-05-5110 |  | Pre-Qualification Submittal for Fire Protection System | 6d | 2026-01-01 | 2026-01-07 | HFR1-05-5460 | QA/QC Engineer [32 h] | HAS3-2350 | CON-LEG101-SB-4390 | 0 | 0 | MKH2-02-002-SB-3040 | D5778 |
| HFR1-05-6330 |  | Pre-Qualification Approval for Fire Protection System | 6d | 2026-01-08 | 2026-01-14 | HFR1-05-5110 | Consultant Staff [7.35 h] | HAS3-3840 | CON-LEG101-SB-4400 | 0 | 0 | MKH2-02-002-SB-3050 | D5788 |
|  | 7 | **Water Supply System** |  | 2026-01-01 | 2026-01-14 |  |  |  |  |  |  |  |  |
| HFR1-05-5150 |  | Pre-Qualification Submittal for Water Supply System | 6d | 2026-01-01 | 2026-01-07 | HFR1-05-5460 | QA/QC Engineer [32 h] | HAS3-2390 | CON-LEG101-SB-4470 | 0 | 0 | MKH2-02-002-SB-3040 | D3800 |
| HFR1-05-6370 |  | Pre-Qualification Approval for Water Supply System | 6d | 2026-01-08 | 2026-01-14 | HFR1-05-5150 | Consultant Staff [7.35 h] | HAS3-3880 | CON-LEG101-SB-4490 | 0 | 0 | MKH2-02-002-SB-3050 | D3840 |

| ID | WBS | Activity | Duration | Start | Finish | Predecessors | Resources | Old Activity ID | Old Activity ID-Alhasa | Total Weight % | Weight 1 | USERTEXT | Mapping Sheet Activity ID |
| --- | --- | --- | --- | --- | --- | --- | --- | --- | --- | --- | --- | --- | --- |
|  | 8 | **Upvc Pipes** |  | 2026-01-01 | 2026-01-14 |  |  |  |  |  |  |  |  |
| HFR1-05-5120 |  | Pre-Qualification Submittal for UPVC Pipes | 6d | 2026-01-01 | 2026-01-07 | HFR1-05-5460 | QA/QC Engineer [32 h] | CON-LEG101-SB-4410 | HAS3-2360 | 0 | 0 | MKH2-02-002-SB-3040 | D3800 |
| HFR1-05-6340 |  | Pre-Qualification Approval for UPVC Pipes | 6d | 2026-01-08 | 2026-01-14 | HFR1-05-5120 | Consultant Staff [7.35 h] | CON-LEG101-SB-4430 | HAS3-3850 | 0 | 0 | MKH2-02-002-SB-3050 | D3840 |
|  | 9 | **Roof Vent Caps** |  | 2026-01-01 | 2026-01-14 |  |  |  |  |  |  |  |  |
| HFR1-05-5160 |  | Pre-Qualification Submittal for Roof Vent Caps | 6d | 2026-01-01 | 2026-01-07 | HFR1-05-5460 | QA/QC Engineer [32 h] | CON-LEG101-SB-4480 | HAS3-2400 | 0 | 0 | MKH2-02-002-SB-3040 | D3820 |
| HFR1-05-6380 |  | Pre-Qualification Approval for Roof Vent Caps | 6d | 2026-01-08 | 2026-01-14 | HFR1-05-5160 | Consultant Staff [7.35 h] | CON-LEG101-SB-4500 | HAS3-3890 | 0 | 0 | MKH2-02-002-SB-3050 | D3860 |
|  | 10 | **Floor Drains** |  | 2026-01-01 | 2026-01-14 |  |  |  |  |  |  |  |  |
| HFR1-05-5170 |  | Pre-Qualification Submittal for Floor Drains | 6d | 2026-01-01 | 2026-01-07 | HFR1-05-5460 | QA/QC Engineer [32 h] | CON-LEG101-SB-4510 | HAS3-2410 | 0 | 0 | MKH2-02-002-SB-3040 | D5778 |
| HFR1-05-6390 |  | Pre-Qualification Approval for Floor Drains | 6d | 2026-01-08 | 2026-01-14 | HFR1-05-5170 | Consultant Staff [7.35 h] | CON-LEG101-SB-4520 | HAS3-3900 | 0 | 0 | MKH2-02-002-SB-3050 | D5788 |
|  | 11 | **Electric Water Heater** |  | 2026-01-01 | 2026-01-14 |  |  |  |  |  |  |  |  |
| HFR1-05-5130 |  | Pre-Qualification Submittal for Electric Water Heater | 6d | 2026-01-01 | 2026-01-07 | HFR1-05-5460 | QA/QC Engineer [32 h] | CON-LEG101-SB-4420 | HAS3-2370 | 0 | 0 | MKH2-02-002-SB-3040 | D3820 |
| HFR1-05-6350 |  | Pre-Qualification Approval for Electric Water Heater | 6d | 2026-01-08 | 2026-01-14 | HFR1-05-5130 | Consultant Staff [7.35 h] | CON-LEG101-SB-4440 | HAS3-3860 | 0 | 0 | MKH2-02-002-SB-3050 | D3860 |
|  | 12 | **Heating,Ventilation & Air Conditioning** |  | 2026-01-01 | 2026-01-14 |  |  |  |  |  |  |  |  |
| HFR1-05-5140 |  | Pre-Qualification Submittal for Heating,Ventilation & Air Conditioning | 6d | 2026-01-01 | 2026-01-07 | HFR1-05-5460 | QA/QC Engineer [32 h] | CON-LEG101-SB-4450 | HAS3-2380 | 0 | 0 | MKH2-02-002-SB-3040 | D5778 |
| HFR1-05-6360 |  | Pre-Qualification Approval for Heating,Ventilation & Air Conditioning | 6d | 2026-01-08 | 2026-01-14 | HFR1-05-5140 | Consultant Staff [7.35 h] | CON-LEG101-SB-4460 | HAS3-3870 | 0 | 0 | MKH2-02-002-SB-3050 | D5788 |
|  | 6 | **Electrical - Buildings** |  | 2026-01-01 | 2026-01-14 |  |  |  |  |  |  |  |  |
|  | 2 | **Telecome Manholes & Handholes** |  | 2026-01-01 | 2026-01-14 |  |  |  |  |  |  |  |  |
| HFR1-05-3310 |  | Pre-Qualification Submittal for Telecome Manholes & handholes | 6d | 2026-01-01 | 2026-01-07 | HFR1-05-5460 | QA/QC Engineer [32 h] | CON-LEG101-SB-2280 | HAS3-1270 | 0 | 0 | MKH2-02-002-SB-3040 | D3820 |
| HFR1-05-5190 |  | Pre-Qualification Approval for Telecome Manholes & handholes | 6d | 2026-01-08 | 2026-01-14 | HFR1-05-3310 | Consultant Staff [7.35 h] | CON-LEG101-SB-2320 | HAS3-2430 | 0 | 0 | MKH2-02-002-SB-3050 | D3860 |
|  | 1 | **Electrical manholes** |  | 2026-01-01 | 2026-01-14 |  |  |  |  |  |  |  |  |
| HFR1-05-5180 |  | Pre-Qualification Submittal for Manholes | 6d | 2026-01-01 | 2026-01-07 | HFR1-05-5460 | QA/QC Engineer [32 h] | CON-LEG101-SB-2260 | HAS3-2420 | 0 | 0 | MKH2-02-002-SB-3040 | D3800 |
| HFR1-05-6400 |  | Pre-Qualification Approval for Manholes | 6d | 2026-01-08 | 2026-01-14 | HFR1-05-5180 | Consultant Staff [7.35 h] | CON-LEG101-SB-2300 | HAS3-3910 | 0 | 0 | MKH2-02-002-SB-3050 | D3840 |
|  | 3 | **Street Lighting Manholes** |  | 2026-01-01 | 2026-01-14 |  |  |  |  |  |  |  |  |
| HFR1-05-5200 |  | Pre-Qualification Submittal for Street Lighting Manholes | 6d | 2026-01-01 | 2026-01-07 | HFR1-05-5460 | QA/QC Engineer [32 h] | CON-LEG101-SB-3240 | HAS3-2440 | 0 | 0 | MKH2-02-002-SB-3040 | D5778 |
| HFR1-05-6410 |  | Pre-Qualification Approval for Street Lighting Manholes | 6d | 2026-01-08 | 2026-01-14 | HFR1-05-5200 | Consultant Staff [7.35 h] | CON-LEG101-SB-3250 | HAS3-3920 | 0 | 0 | MKH2-02-002-SB-3050 | D5788 |

| ID | WBS | Activity | Duration | Start | Finish | Predecessors | Resources | Old Activity ID | Old Activity ID-Alhasa | Total Weight % | Weight 1 | USERTEXT | Mapping Sheet Activity ID |
| --- | --- | --- | --- | --- | --- | --- | --- | --- | --- | --- | --- | --- | --- |
|  | 4 | **Duct Banks** |  | 2026-01-01 | 2026-01-14 |  |  |  |  |  |  |  |  |
| HFR1-05-5210 |  | Pre-Qualification Submittal for Duct Bank | 6d | 2026-01-01 | 2026-01-07 | HFR1-05-5460 | QA/QC Engineer [32 h] | CON-LEG101-SB-4350 | HAS3-2450 | 0 | 0 | MKH2-02-002-SB-3040 | D3800 |
| HFR1-05-6420 |  | Pre-Qualification Approval for Duct Bank | 6d | 2026-01-08 | 2026-01-14 | HFR1-05-5210 | Consultant Staff [7.35 h] | CON-LEG101-SB-4370 | HAS3-3930 | 0 | 0 | MKH2-02-002-SB-3050 | D3840 |
|  | 5 | **Feeder Pillers** |  | 2026-01-01 | 2026-01-14 |  |  |  |  |  |  |  |  |
| HFR1-05-5220 |  | Pre-Qualification Submittal for Feeder Pillers | 6d | 2026-01-01 | 2026-01-07 | HFR1-05-5460 | QA/QC Engineer [32 h] | CON-LEG101-SB-4360 | HAS3-2460 | 0 | 0 | MKH2-02-002-SB-3040 | D3820 |
| HFR1-05-6430 |  | Pre-Qualification Approval for Feeder Pillers | 6d | 2026-01-08 | 2026-01-14 | HFR1-05-5220 | Consultant Staff [7.35 h] | CON-LEG101-SB-4380 | HAS3-3940 | 0 | 0 | MKH2-02-002-SB-3050 | D3860 |
|  | 6 | **Street Lighting Poles** |  | 2026-01-01 | 2026-01-14 |  |  |  |  |  |  |  |  |
| HFR1-05-5230 |  | Pre-Qualification Submittal for Street Lighting Poles | 6d | 2026-01-01 | 2026-01-07 | HFR1-05-5460 | QA/QC Engineer [32 h] | CON-LEG101-SB-4390 | HAS3-2470 | 0 | 0 | MKH2-02-002-SB-3040 | D5778 |
| HFR1-05-6440 |  | Pre-Qualification Approval for Street Lighting Poles | 6d | 2026-01-08 | 2026-01-14 | HFR1-05-5230 | Consultant Staff [7.35 h] | CON-LEG101-SB-4400 | HAS3-3950 | 0 | 0 | MKH2-02-002-SB-3050 | D5788 |
|  | 7 | **Street Lighting Luminaires** |  | 2026-01-01 | 2026-01-14 |  |  |  |  |  |  |  |  |
| HFR1-05-5270 |  | Pre-Qualification Submittal for Street Lighting Luminaires | 6d | 2026-01-01 | 2026-01-07 | HFR1-05-5460 | QA/QC Engineer [32 h] | CON-LEG101-SB-4470 | HAS3-2510 | 0 | 0 | MKH2-02-002-SB-3040 | D3800 |
| HFR1-05-6480 |  | Pre-Qualification Approval for Street Lighting Luminaires | 6d | 2026-01-08 | 2026-01-14 | HFR1-05-5270 | Consultant Staff [7.35 h] | CON-LEG101-SB-4490 | HAS3-3990 | 0 | 0 | MKH2-02-002-SB-3050 | D3840 |
|  | 8 | **Low Voltage Cables** |  | 2026-01-01 | 2026-01-14 |  |  |  |  |  |  |  |  |
| HFR1-05-5240 |  | Pre-Qualification Submittal for Low Voltage Cables | 6d | 2026-01-01 | 2026-01-07 | HFR1-05-5460 | QA/QC Engineer [32 h] | CON-LEG101-SB-4410 | HAS3-2480 | 0 | 0 | MKH2-02-002-SB-3040 | D3800 |
| HFR1-05-6450 |  | Pre-Qualification Approval for Low Voltage Cables | 6d | 2026-01-08 | 2026-01-14 | HFR1-05-5240 | Consultant Staff [7.35 h] | CON-LEG101-SB-4430 | HAS3-3960 | 0 | 0 | MKH2-02-002-SB-3050 | D3840 |
|  | 9 | **LED Lighting Fixtures** |  | 2026-01-01 | 2026-01-14 |  |  |  |  |  |  |  |  |
| HFR1-05-5280 |  | Pre-Qualification Submittal for LED Lighting Fixtures | 6d | 2026-01-01 | 2026-01-07 | HFR1-05-5460 | QA/QC Engineer [32 h] | CON-LEG101-SB-4480 | HAS3-2520 | 0 | 0 | MKH2-02-002-SB-3040 | D3820 |
| HFR1-05-6490 |  | Pre-Qualification Approval for LED Lighting Fixtures | 6d | 2026-01-08 | 2026-01-14 | HFR1-05-5280 | Consultant Staff [7.35 h] | CON-LEG101-SB-4500 | HAS3-4000 | 0 | 0 | MKH2-02-002-SB-3050 | D3860 |
|  | 10 | **Power Panel** |  | 2026-01-01 | 2026-01-14 |  |  |  |  |  |  |  |  |
| HFR1-05-5290 |  | Pre-Qualification Submittal for Power Panel | 6d | 2026-01-01 | 2026-01-07 | HFR1-05-5460 | QA/QC Engineer [32 h] | CON-LEG101-SB-4510 | HAS3-2530 | 0 | 0 | MKH2-02-002-SB-3040 | D5778 |
| HFR1-05-6500 |  | Pre-Qualification Approval for Power Panel | 6d | 2026-01-08 | 2026-01-14 | HFR1-05-5290 | Consultant Staff [7.35 h] | CON-LEG101-SB-4520 | HAS3-4010 | 0 | 0 | MKH2-02-002-SB-3050 | D5788 |
|  | 11 | **Control Panels** |  | 2026-01-01 | 2026-01-14 |  |  |  |  |  |  |  |  |
| HFR1-05-5250 |  | Pre-Qualification Submittal for Control Panels | 6d | 2026-01-01 | 2026-01-07 | HFR1-05-5460 | QA/QC Engineer [32 h] | CON-LEG101-SB-4420 | HAS3-2490 | 0 | 0 | MKH2-02-002-SB-3040 | D3820 |
| HFR1-05-6460 |  | Pre-Qualification Approval for Control Panels | 6d | 2026-01-08 | 2026-01-14 | HFR1-05-5250 | Consultant Staff [7.35 h] | CON-LEG101-SB-4440 | HAS3-3970 | 0 | 0 | MKH2-02-002-SB-3050 | D3860 |

| ID | WBS | Activity | Duration | Start | Finish | Predecessors | Resources | Old Activity ID-Alhasa | Old Activity ID | Weight 1 | Total Weight % | USERTEXT | Mapping Sheet Activity ID |
| --- | --- | --- | --- | --- | --- | --- | --- | --- | --- | --- | --- | --- | --- |
|  | 12 | **Isolator & Disconnecting Switches** |  | 2026-01-01 | 2026-01-14 |  |  |  |  |  |  |  |  |
| HFR1-05-5260 |  | Pre-Qualification Submittal for Isolator & Disconnecting Switches | 6d | 2026-01-01 | 2026-01-07 | HFR1-05-5460 | QA/QC Engineer [32 h] | HAS3-2500 | CON-LEG101-SB-4450 | 0 | 0 | MKH2-02-002-SB-3040 | D5778 |
| HFR1-05-6470 |  | Pre-Qualification Approval for Isolator & Disconnecting Switches | 6d | 2026-01-08 | 2026-01-14 | HFR1-05-5260 | Consultant Staff [7.35 h] | HAS3-3980 | CON-LEG101-SB-4460 | 0 | 0 | MKH2-02-002-SB-3050 | D5788 |
|  | 13 | **Cable Trays** |  | 2026-01-01 | 2026-01-14 |  |  |  |  |  |  |  |  |
| HFR1-05-5330 |  | Pre-Qualification Submittal for Cable Trays | 6d | 2026-01-01 | 2026-01-07 | HFR1-05-5460 | QA/QC Engineer [32 h] | HAS3-2570 | CON-LEG101-SB-4590 | 0 | 0 | MKH2-02-002-SB-3040 | D3800 |
| HFR1-05-6540 |  | Pre-Qualification Approval for Cable Trays | 6d | 2026-01-08 | 2026-01-14 | HFR1-05-5330 | Consultant Staff [7.35 h] | HAS3-4050 | CON-LEG101-SB-4600 | 0 | 0 | MKH2-02-002-SB-3050 | D3840 |
|  | 14 | **KWHM** |  | 2026-01-01 | 2026-01-14 |  |  |  |  |  |  |  |  |
| HFR1-05-5300 |  | Pre-Qualification Submittal for KWHM | 6d | 2026-01-01 | 2026-01-07 | HFR1-05-5460 | QA/QC Engineer [32 h] | HAS3-2540 | CON-LEG101-SB-4530 | 0 | 0 | MKH2-02-002-SB-3040 | D3800 |
| HFR1-05-6510 |  | Pre-Qualification Approval for KWHM | 6d | 2026-01-08 | 2026-01-14 | HFR1-05-5300 | Consultant Staff [7.35 h] | HAS3-4020 | CON-LEG101-SB-4540 | 0 | 0 | MKH2-02-002-SB-3050 | D3840 |
|  | 15 | **Safety Disconnect Switches** |  | 2026-01-01 | 2026-01-14 |  |  |  |  |  |  |  |  |
| HFR1-05-5310 |  | Pre-Qualification Submittal for Safety Disconnects Switches | 6d | 2026-01-01 | 2026-01-07 | HFR1-05-5460 | QA/QC Engineer [32 h] | HAS3-2550 | CON-LEG101-SB-4550 | 0 | 0 | MKH2-02-002-SB-3040 | D3820 |
| HFR1-05-6520 |  | Pre-Qualification Approval for Safety Disconnects Switches | 6d | 2026-01-08 | 2026-01-14 | HFR1-05-5310 | Consultant Staff [7.35 h] | HAS3-4030 | CON-LEG101-SB-4560 | 0 | 0 | MKH2-02-002-SB-3050 | D3860 |
|  | 16 | **Telecom & Data System** |  | 2026-01-01 | 2026-01-14 |  |  |  |  |  |  |  |  |
| HFR1-05-5320 |  | Pre-Qualification Submittal for Telecome & Data System | 6d | 2026-01-01 | 2026-01-07 | HFR1-05-5460 | QA/QC Engineer [32 h] | HAS3-2560 | CON-LEG101-SB-4570 | 0 | 0 | MKH2-02-002-SB-3040 | D3800 |
| HFR1-05-6530 |  | Pre-Qualification Approval for Telecome & Data System | 6d | 2026-01-08 | 2026-01-14 | HFR1-05-5320 | Consultant Staff [7.35 h] | HAS3-4040 | CON-LEG101-SB-4580 | 0 | 0 | MKH2-02-002-SB-3050 | D3840 |
|  | 17 | **Grounding System** |  | 2026-01-01 | 2026-01-14 |  |  |  |  |  |  |  |  |
| HFR1-05-5350 |  | Pre-Qualification Submittal for Grounding System | 6d | 2026-01-01 | 2026-01-07 | HFR1-05-5460 | QA/QC Engineer [32 h] | HAS3-2590 | CON-LEG101-SB-4730 | 0 | 0 | MKH2-02-002-SB-3040 | D3800 |
| HFR1-05-6590 |  | Pre-Qualification Approval for Grounding System | 6d | 2026-01-08 | 2026-01-14 | HFR1-05-5350 | Consultant Staff [7.35 h] | HAS3-4100 | CON-LEG101-SB-4740 | 0 | 0 | MKH2-02-002-SB-3050 | D3840 |
|  | 18 | **Lightning Protection System** |  | 2026-01-01 | 2026-01-14 |  |  |  |  |  |  |  |  |
| HFR1-05-5340 |  | Pre-Qualification Submittal for Lightning Protection System | 6d | 2026-01-01 | 2026-01-07 | HFR1-05-5460 | QA/QC Engineer [32 h] | HAS3-2580 | CON-LEG101-SB-4710 | 0 | 0 | MKH2-02-002-SB-3040 | D3800 |
| HFR1-05-6580 |  | Pre-Qualification Approval for Lightning Protection System | 6d | 2026-01-08 | 2026-01-14 | HFR1-05-5340 | Consultant Staff [7.35 h] | HAS3-4090 | CON-LEG101-SB-4720 | 0 | 0 | MKH2-02-002-SB-3050 | D3840 |
|  | 19 | **Fire Alarm System** |  | 2026-01-01 | 2026-01-14 |  |  |  |  |  |  |  |  |
| HFR1-05-6560 |  | Pre-Qualification Submittal for Fire Alarm System | 6d | 2026-01-01 | 2026-01-07 | HFR1-05-5460 | QA/QC Engineer [32 h] | HAS3-4070 | CON-LEG101-SB-4670 | 0 | 0 | MKH2-02-002-SB-3040 | D3820 |
| HFR1-05-6970 |  | Pre-Qualification Approval for Fire Alarm System | 6d | 2026-01-08 | 2026-01-14 | HFR1-05-6560 | Consultant Staff [7.35 h] | HAS3-4770 | CON-LEG101-SB-4680 | 0 | 0 | MKH2-02-002-SB-3050 | D3860 |

| ID | WBS | Activity | Duration | Start | Finish | Predecessors | Resources | Cost | Old Activity ID-Alhasa | Old Activity ID | Weight 1 | Total Weight % | USERTEXT | Mapping Sheet Activity ID |
| --- | --- | --- | --- | --- | --- | --- | --- | --- | --- | --- | --- | --- | --- | --- |
|  | 20 | **Solar Power Plant** |  | 2026-01-01 | 2026-01-14 |  |  |  |  |  |  |  |  |  |
| HFR1-05-6570 |  | Pre-Qualification Submittal for Solar Power Plant | 6d | 2026-01-01 | 2026-01-07 | HFR1-05-5460 | QA/QC Engineer [32 h] |  | HAS3-4080 | CON-LEG101-SB-4690 | 0 | 0 | MKH2-02-002-SB-3040 | D5778 |
| HFR1-05-6980 |  | Pre-Qualification Approval for Solar Power Plant | 6d | 2026-01-08 | 2026-01-14 | HFR1-05-6570 | Consultant Staff [7.35 h] |  | HAS3-4780 | CON-LEG101-SB-4700 | 0 | 0 | MKH2-02-002-SB-3050 | D5788 |
|  | 21 | **Skylight Fixtures** |  | 2026-01-01 | 2026-01-14 |  |  |  |  |  |  |  |  |  |
| HFR1-05-6550 |  | Pre-Qualification Submittal for Skylight Fixtures | 6d | 2026-01-01 | 2026-01-07 | HFR1-05-5460 | QA/QC Engineer [32 h] |  | HAS3-4060 | CON-LEG101-SB-4650 | 0 | 0 | MKH2-02-002-SB-3040 | D3800 |
| HFR1-05-6960 |  | Pre-Qualification Approval for Skylight Fixtures | 6d | 2026-01-08 | 2026-01-14 | HFR1-05-6550 | Consultant Staff [7.35 h] |  | HAS3-4760 | CON-LEG101-SB-4660 | 0 | 0 | MKH2-02-002-SB-3050 | D3840 |
|  | 3 | **Material Submittal** |  | 2026-01-08 | 2026-01-28 |  |  |  |  |  |  |  |  |  |
|  | 1 | **Road Works - Civil** |  | 2026-01-08 | 2026-01-27 |  |  |  |  |  |  |  |  |  |
|  | 1 | **Steel Reinforcement** |  | 2026-01-08 | 2026-01-21 |  |  |  |  |  |  |  |  |  |
| HFR1-05-6760 |  | Material Submittal for Steel Reinforcement | 6d | 2026-01-08 | 2026-01-14 | HFR1-05-5040 | QA/QC Engineer [32 h] |  | HAS3-4270 | CON-LEG101-SB-4200 | 0 | 0 | MKH2-02-002-SB-1120 | D6848 |
| HFR1-05-6990 |  | Material Approval for Steel Reinforcement | 6d | 2026-01-15 | 2026-01-21 | HFR1-05-6760, HFR1-05-6810 | Consultant Staff [7.35 h]; Eng+Pro+Tc [1] | 7,855 | HAS3-4790 | CON-LEG101-SB-4210 | 0 | 0 | MKH2-02-002-SB-1130 | D6850 |
|  | 2 | **Ready Mixed Concrete** |  | 2026-01-08 | 2026-01-21 |  |  |  |  |  |  |  |  |  |
| HFR1-05-7000 |  | Material Submittal for Ready Mixed Concrete | 6d | 2026-01-08 | 2026-01-14 | HFR1-05-6270 | QA/QC Engineer [32 h] |  | HAS3-4800 | CON-LEG101-SB-4220 | 0 | 0 | MKH2-02-002-SB-1120 | D6868 |
| HFR1-05-7970 |  | Material Approval for Ready Mixed Concrete | 6d | 2026-01-15 | 2026-01-21 | HFR1-05-7000 | Consultant Staff [7.35 h]; Eng+Pro+Tc [1] | 7,855 | HAS3-6100 | CON-LEG101-SB-4230 | 0 | 0 | MKH2-02-002-SB-1130 | D6870 |
|  | 3 | **Water Proofing** |  | 2026-01-08 | 2026-01-21 |  |  |  |  |  |  |  |  |  |
| HFR1-05-7980 |  | Material Submittal for Water Proofing | 6d | 2026-01-08 | 2026-01-14 | HFR1-05-6910 | QA/QC Engineer [32 h] |  | HAS3-6110 | CON-LEG101-SB-4240 | 0 | 0 | MKH2-02-002-SB-1120 | D6888 |
| HFR1-05-8780 |  | Material Approval for Water Proofing | 6d | 2026-01-15 | 2026-01-21 | HFR1-05-7980 | Consultant Staff [7.35 h]; Eng+Pro+Tc [1] | 7,855 | HAS3-7100 | CON-LEG101-SB-4250 | 0 | 0 | MKH2-02-002-SB-1130 | D6890 |
|  | 4 | **Aggregate Base Course** |  | 2026-01-08 | 2026-01-21 |  |  |  |  |  |  |  |  |  |
| HFR1-05-7960 |  | Material Submittal for Aggregate Base Cource | 6d | 2026-01-08 | 2026-01-14 | HFR1-05-6870 | QA/QC Engineer [32 h] |  | HAS3-6090 | CON-LEG101-SB-1000 | 0 | 0 | MKH2-02-002-SB-1120 | D2000 |
| HFR1-05-8740 |  | Material Approval for Aggregate Base Cource | 6d | 2026-01-15 | 2026-01-21 | HFR1-05-7960 | Consultant Staff [7.35 h]; Eng+Pro+Tc [1] | 7,855 | HAS3-7060 | CON-LEG101-SB-1010 | 0 | 0 | MKH2-02-002-SB-1130 | D2010 |
|  | 5 | **Bituminous Base & Wearing Course** |  | 2026-01-08 | 2026-01-21 |  |  |  |  |  |  |  |  |  |
| HFR1-05-8750 |  | Material Submittal for Bituminous Base & Wearing Cource | 6d | 2026-01-08 | 2026-01-14 | HFR1-05-7920 | QA/QC Engineer [32 h] |  | HAS3-7070 | CON-LEG101-SB-1040 | 0 | 0 | MKH2-02-002-SB-1160 | D2040 |
| HFR1-05-8930 |  | Material Approval for Bituminous & Wearing Cource | 6d | 2026-01-15 | 2026-01-21 | HFR1-05-8750 | Consultant Staff [7.35 h]; Eng+Pro+Tc [1] | 7,855 | HAS3-7450 | CON-LEG101-SB-1050 | 0 | 0 | MKH2-02-002-SB-1170 | D2050 |
|  | 7 | **Precast Concrete Kerb** |  | 2026-01-08 | 2026-01-21 |  |  |  |  |  |  |  |  |  |
| HFR1-05-8760 |  | Material Submittal for Precast Concrete Kerb | 6d | 2026-01-08 | 2026-01-14 | HFR1-05-7930 | QA/QC Engineer [32 h] |  | HAS3-7080 | CON-LEG101-SB-1080 | 0 | 0 | MKH2-02-002-SB-1240 | D2120 |
| HFR1-05-8940 |  | Material Approval for Precast Concrete Kerb | 6d | 2026-01-15 | 2026-01-21 | HFR1-05-8760 | Consultant Staff [7.35 h]; Eng+Pro+Tc [1] | 7,855 | HAS3-7460 | CON-LEG101-SB-1090 | 0 | 0 | MKH2-02-002-SB-1250 | D2130 |

| ID | WBS | Activity | Duration | Start | Finish | Predecessors | Resources | Cost | Old Activity ID | Old Activity ID-Alhasa | Mapping Sheet Activity ID | USERTEXT | Weight 1 | Total Weight % |
| --- | --- | --- | --- | --- | --- | --- | --- | --- | --- | --- | --- | --- | --- | --- |
|  | 8 | **Interlocking Block Pavers** |  | 2026-01-08 | 2026-01-21 |  |  |  |  |  |  |  |  |  |
| HFR1-05-8770 |  | Material Submittal for Interlocking Block Pavers | 6d | 2026-01-08 | 2026-01-14 | HFR1-05-7940 | QA/QC Engineer [32 h] |  | CON-LEG101-SB-1120 | HAS3-7090 | D2160 | MKH2-02-002-SB-1280 | 0 | 0 |
| HFR1-05-8950 |  | Material Approval for Interlocking Block Pavers | 6d | 2026-01-15 | 2026-01-21 | HFR1-05-8770 | Consultant Staff [7.35 h]; Eng+Pro+Tc [1] | 7,855 | CON-LEG101-SB-1130 | HAS3-7470 | D2170 | MKH2-02-002-SB-1290 | 0 | 0 |
|  | 9 | **Pavement Markings** |  | 2026-01-15 | 2026-01-27 |  |  |  |  |  |  |  |  |  |
| HFR1-05-8960 |  | Material Submittal for Pavement Markings | 5d | 2026-01-15 | 2026-01-20 | HFR1-05-8470 | QA/QC Engineer [32 h] |  | CON-LEG101-SB-1160 | HAS3-7480 | D2200 | MKH2-02-002-SB-1320 | 0 | 0 |
| HFR1-05-9070 |  | Material Approval for Pavement Markings | 6d | 2026-01-21 | 2026-01-27 | HFR1-05-8960 | Consultant Staff [7.35 h]; Eng+Pro+Tc [1] | 7,855 | CON-LEG101-SB-1170 | HAS3-8030 | D2210 | MKH2-02-002-SB-1330 | 0 | 0 |
|  | 10 | **Traffic Signs** |  | 2026-01-08 | 2026-01-20 |  |  |  |  |  |  |  |  |  |
| HFR1-05-9080 |  | Material Submittal for Traffic Signs | 5d | 2026-01-08 | 2026-01-13 | HFR1-05-8920 | QA/QC Engineer [32 h] |  | CON-LEG101-SB-1200 | HAS3-8040 | D2240 | MKH2-02-002-SB-1360 | 0 | 0 |
| HFR1-05-9180 |  | Material Approval for Traffic Signs | 6d | 2026-01-14 | 2026-01-20 | HFR1-05-9080 | Consultant Staff [7.35 h]; Eng+Pro+Tc [1] | 7,855 | CON-LEG101-SB-1210 | HAS3-8630 | D2250 | MKH2-02-002-SB-1370 | 0 | 0 |
|  | 2 | **Potable Water Network** |  | 2026-01-08 | 2026-01-28 |  |  |  |  |  |  |  |  |  |
|  | 1 | **HDPE Pipes** |  | 2026-01-08 | 2026-01-21 |  |  |  |  |  |  |  |  |  |
| HFR1-05-5640 |  | Material Submittal for HDPE Pipes | 6d | 2026-01-08 | 2026-01-14 | HFR1-05-5600, HFR1-05-4910 | QA/QC Engineer [32 h] |  | CON-LEG101-SB-4200 | HAS3-2880 | D6848 | MKH2-02-002-SB-1120 | 0 | 0 |
| HFR1-05-6820 |  | Material Approval for HDPE Pipes | 6d | 2026-01-15 | 2026-01-21 | HFR1-05-5640 | Consultant Staff [7.35 h]; Eng+Pro+Tc [1] | 7,855 | CON-LEG101-SB-4210 | HAS3-4330 | D6850 | MKH2-02-002-SB-1130 | 0 | 0 |
|  | 2 | **Valves** |  | 2026-01-15 | 2026-01-28 |  |  |  |  |  |  |  |  |  |
| HFR1-05-6830 |  | Material Submittal for Valves | 6d | 2026-01-15 | 2026-01-21 | HFR1-05-6800, HFR1-05-5640, HFR1-05-5610 | QA/QC Engineer [32 h] |  | CON-LEG101-SB-4220 | HAS3-4340 | D6868 | MKH2-02-002-SB-1120 | 0 | 0 |
| HFR1-05-7480 |  | Material Approval for Valves | 6d | 2026-01-22 | 2026-01-28 | HFR1-05-6830 | Consultant Staff [7.35 h]; Eng+Pro+Tc [1] | 7,855 | CON-LEG101-SB-4230 | HAS3-5280 | D6870 | MKH2-02-002-SB-1130 | 0 | 0 |
|  | 3 | **Sewer Water Network** |  | 2026-01-08 | 2026-01-27 |  |  |  |  |  |  |  |  |  |
|  | 1 | **GRP Pipes** |  | 2026-01-08 | 2026-01-21 |  |  |  |  |  |  |  |  |  |
| HFR1-05-6840 |  | Material Submittal for GRP Pipes | 6d | 2026-01-08 | 2026-01-14 | HFR1-05-5620 | QA/QC Engineer [32 h] |  | CON-LEG101-SB-4200 | HAS3-4350 | D6848 | MKH2-02-002-SB-1120 | 0 | 0 |
| HFR1-05-7490 |  | Material Approval for GRP Pipes | 6d | 2026-01-15 | 2026-01-21 | HFR1-05-6840 | Consultant Staff [7.35 h]; Eng+Pro+Tc [1] | 7,855 | CON-LEG101-SB-4210 | HAS3-5290 | D6850 | MKH2-02-002-SB-1130 | 0 | 0 |
|  | 2 | **Manholes** |  | 2026-01-15 | 2026-01-27 |  |  |  |  |  |  |  |  |  |
| HFR1-05-7500 |  | Material Submittal for Manholes | 5d | 2026-01-15 | 2026-01-20 | HFR1-05-6840, HFR1-05-6810 | QA/QC Engineer [32 h] |  | CON-LEG101-SB-4220 | HAS3-5300 | D6868 | MKH2-02-002-SB-1120 | 0 | 0 |
| HFR1-05-8460 |  | Material Approval for Manholes | 6d | 2026-01-21 | 2026-01-27 | HFR1-05-7500 | Consultant Staff [7.35 h]; Eng+Pro+Tc [1] | 7,855 | CON-LEG101-SB-4230 | HAS3-6590 | D6870 | MKH2-02-002-SB-1130 | 0 | 0 |
|  | 7 | **Civil Works - Buildings** |  | 2026-01-08 | 2026-01-27 |  |  |  |  |  |  |  |  |  |
|  | 2 | **Steel Reinforcement** |  | 2026-01-08 | 2026-01-21 |  |  |  |  |  |  |  |  |  |
| HFR1-05-6790 |  | Material Submittal for Steel Reinforcement | 6d | 2026-01-08 | 2026-01-14 | HFR1-05-5370 | QA/QC Engineer [32 h] |  | CON-LEG101-SB-2280 | HAS3-4300 | D3820 | MKH2-02-002-SB-3040 | 0 | 0 |
| HFR1-05-7320 |  | Material Approval for Steel Reinforcement | 6d | 2026-01-15 | 2026-01-21 | HFR1-05-6790 | Consultant Staff [7.35 h]; Eng+Pro+Tc [1] | 7,855 | CON-LEG101-SB-2320 | HAS3-5120 | D3860 | MKH2-02-002-SB-3050 | 0 | 0 |

| ID | WBS | Activity | Duration | Start | Finish | Predecessors | Resources | Cost | Old Activity ID-Alhasa | Old Activity ID | Mapping Sheet Activity ID | USERTEXT | Weight 1 | Total Weight % |
| --- | --- | --- | --- | --- | --- | --- | --- | --- | --- | --- | --- | --- | --- | --- |
|  | 1 | **Ready Mix Concrete** |  | 2026-01-15 | 2026-01-27 |  |  |  |  |  |  |  |  |  |
| HFR1-05-7310 |  | Material Submittal for Ready Mix Concrete | 5d | 2026-01-15 | 2026-01-20 | HFR1-05-6790, HFR1-05-6600 | QA/QC Engineer [32 h] |  | HAS3-5110 | CON-LEG101-SB-2260 | D3800 | MKH2-02-002-SB-3040 | 0 | 0 |
| HFR1-05-8300 |  | Material Approval for Ready Mix Concrete | 6d | 2026-01-21 | 2026-01-27 | HFR1-05-7310 | Consultant Staff [7.35 h]; Eng+Pro+Tc [1] | 7,855 | HAS3-6430 | CON-LEG101-SB-2300 | D3840 | MKH2-02-002-SB-3050 | 0 | 0 |
|  | 3 | **Masonry** |  | 2026-01-15 | 2026-01-27 |  |  |  |  |  |  |  |  |  |
| HFR1-05-7330 |  | Material Submittal for Masonry | 5d | 2026-01-15 | 2026-01-20 | HFR1-05-6790, HFR1-05-6610 | QA/QC Engineer [32 h] |  | HAS3-5130 | CON-LEG101-SB-3240 | D5778 | MKH2-02-002-SB-3040 | 0 | 0 |
| HFR1-05-8310 |  | Material Approval for Masonry | 6d | 2026-01-21 | 2026-01-27 | HFR1-05-7330 | Consultant Staff [7.35 h]; Eng+Pro+Tc [1] | 7,855 | HAS3-6440 | CON-LEG101-SB-3250 | D5788 | MKH2-02-002-SB-3050 | 0 | 0 |
|  | 4 | **Steel Structure** |  | 2026-01-15 | 2026-01-27 |  |  |  |  |  |  |  |  |  |
| HFR1-05-7340 |  | Material Submittal for Steel Structure | 5d | 2026-01-15 | 2026-01-20 | HFR1-05-6790, HFR1-05-6620 | QA/QC Engineer [32 h] |  | HAS3-5140 | CON-LEG101-SB-4350 | D3800 | MKH2-02-002-SB-3040 | 0 | 0 |
| HFR1-05-8320 |  | Material Approval for Steel Structure | 6d | 2026-01-21 | 2026-01-27 | HFR1-05-7340 | Consultant Staff [7.35 h]; Eng+Pro+Tc [1] | 7,855 | HAS3-6450 | CON-LEG101-SB-4370 | D3840 | MKH2-02-002-SB-3050 | 0 | 0 |
|  | 5 | **Thermal & Moisture Protection** |  | 2026-01-15 | 2026-01-27 |  |  |  |  |  |  |  |  |  |
| HFR1-05-7350 |  | Material Submittal for Thermal & Moisture Protection | 5d | 2026-01-15 | 2026-01-20 | HFR1-05-6790, HFR1-05-6630 | QA/QC Engineer [32 h] |  | HAS3-5150 | CON-LEG101-SB-4360 | D3820 | MKH2-02-002-SB-3040 | 0 | 0 |
| HFR1-05-8330 |  | Material Approval for Thermal & Moisture Protection | 6d | 2026-01-21 | 2026-01-27 | HFR1-05-7350 | Consultant Staff [7.35 h]; Eng+Pro+Tc [1] | 7,855 | HAS3-6460 | CON-LEG101-SB-4380 | D3860 | MKH2-02-002-SB-3050 | 0 | 0 |
|  | 6 | **Water Proofing System** |  | 2026-01-15 | 2026-01-27 |  |  |  |  |  |  |  |  |  |
| HFR1-05-7360 |  | Material Submittal for Water Proofing System | 5d | 2026-01-15 | 2026-01-20 | HFR1-05-6790, HFR1-05-6640 | QA/QC Engineer [32 h] |  | HAS3-5160 | CON-LEG101-SB-4390 | D5778 | MKH2-02-002-SB-3040 | 0 | 0 |
| HFR1-05-8340 |  | Material Approval for Water Proofing System | 6d | 2026-01-21 | 2026-01-27 | HFR1-05-7360 | Consultant Staff [7.35 h]; Eng+Pro+Tc [1] | 7,855 | HAS3-6470 | CON-LEG101-SB-4400 | D5788 | MKH2-02-002-SB-3050 | 0 | 0 |
|  | 7 | **Doors & Windows** |  | 2026-01-15 | 2026-01-27 |  |  |  |  |  |  |  |  |  |
| HFR1-05-7400 |  | Material Submittal for Doors & Windows | 5d | 2026-01-15 | 2026-01-20 | HFR1-05-6790, HFR1-05-6680 | QA/QC Engineer [32 h] |  | HAS3-5200 | CON-LEG101-SB-4470 | D3800 | MKH2-02-002-SB-3040 | 0 | 0 |
| HFR1-05-8380 |  | Material Approval for Doors & Windows | 6d | 2026-01-21 | 2026-01-27 | HFR1-05-7400 | Consultant Staff [7.35 h]; Eng+Pro+Tc [1] | 7,855 | HAS3-6510 | CON-LEG101-SB-4490 | D3840 | MKH2-02-002-SB-3050 | 0 | 0 |
|  | 8 | **Floor Finishes** |  | 2026-01-15 | 2026-01-27 |  |  |  |  |  |  |  |  |  |
| HFR1-05-7370 |  | Material Submittal for Floor Finishes | 5d | 2026-01-15 | 2026-01-20 | HFR1-05-6790, HFR1-05-6650 | QA/QC Engineer [32 h] |  | HAS3-5170 | CON-LEG101-SB-4410 | D3800 | MKH2-02-002-SB-3040 | 0 | 0 |
| HFR1-05-8350 |  | Material Approval for Floor Finishes | 6d | 2026-01-21 | 2026-01-27 | HFR1-05-7370 | Consultant Staff [7.35 h]; Eng+Pro+Tc [1] | 7,855 | HAS3-6480 | CON-LEG101-SB-4430 | D3840 | MKH2-02-002-SB-3050 | 0 | 0 |
|  | 9 | **Wall Finishes** |  | 2026-01-15 | 2026-01-27 |  |  |  |  |  |  |  |  |  |
| HFR1-05-7410 |  | Material Submittal for Wall Finishes | 5d | 2026-01-15 | 2026-01-20 | HFR1-05-6790, HFR1-05-6690 | QA/QC Engineer [32 h] |  | HAS3-5210 | CON-LEG101-SB-4480 | D3820 | MKH2-02-002-SB-3040 | 0 | 0 |
| HFR1-05-8390 |  | Material Approval for Wall Finishes | 6d | 2026-01-21 | 2026-01-27 | HFR1-05-7410 | Consultant Staff [7.35 h]; Eng+Pro+Tc [1] | 7,855 | HAS3-6520 | CON-LEG101-SB-4500 | D3860 | MKH2-02-002-SB-3050 | 0 | 0 |

| ID | WBS | Activity | Duration | Start | Finish | Predecessors | Resources | Cost | Old Activity ID-Alhasa | Old Activity ID | Mapping Sheet Activity ID | USERTEXT | Total Weight % | Weight 1 |
| --- | --- | --- | --- | --- | --- | --- | --- | --- | --- | --- | --- | --- | --- | --- |
|  | 10 | **Ceiling Finishes** |  | 2026-01-15 | 2026-01-27 |  |  |  |  |  |  |  |  |  |
| HFR1-05-7420 |  | Material Submittal for Ceiling Finishes | 5d | 2026-01-15 | 2026-01-20 | HFR1-05-6790, HFR1-05-6700 | QA/QC Engineer [32 h] |  | HAS3-5220 | CON-LEG101-SB-4510 | D5778 | MKH2-02-002-SB-3040 | 0 | 0 |
| HFR1-05-8400 |  | Material Approval for Ceiling Finishes | 6d | 2026-01-21 | 2026-01-27 | HFR1-05-7420 | Consultant Staff [7.35 h]; Eng+Pro+Tc [1] | 7,855 | HAS3-6530 | CON-LEG101-SB-4520 | D5788 | MKH2-02-002-SB-3050 | 0 | 0 |
|  | 11 | **Fittings** |  | 2026-01-15 | 2026-01-27 |  |  |  |  |  |  |  |  |  |
| HFR1-05-7380 |  | Material Submittal for Fittings | 5d | 2026-01-15 | 2026-01-20 | HFR1-05-6790, HFR1-05-6660 | QA/QC Engineer [32 h] |  | HAS3-5180 | CON-LEG101-SB-4420 | D3820 | MKH2-02-002-SB-3040 | 0 | 0 |
| HFR1-05-8360 |  | Material Approval for Fittings | 6d | 2026-01-21 | 2026-01-27 | HFR1-05-7380 | Consultant Staff [7.35 h]; Eng+Pro+Tc [1] | 7,855 | HAS3-6490 | CON-LEG101-SB-4440 | D3860 | MKH2-02-002-SB-3050 | 0 | 0 |
|  | 12 | **Signages** |  | 2026-01-15 | 2026-01-27 |  |  |  |  |  |  |  |  |  |
| HFR1-05-7390 |  | Material Submittal for Signages | 5d | 2026-01-15 | 2026-01-20 | HFR1-05-6790, HFR1-05-6670 | QA/QC Engineer [32 h] |  | HAS3-5190 | CON-LEG101-SB-4450 | D5778 | MKH2-02-002-SB-3040 | 0 | 0 |
| HFR1-05-8370 |  | Material Approval for Signages | 6d | 2026-01-21 | 2026-01-27 | HFR1-05-7390 | Consultant Staff [7.35 h]; Eng+Pro+Tc [1] | 7,855 | HAS3-6500 | CON-LEG101-SB-4460 | D5788 | MKH2-02-002-SB-3050 | 0 | 0 |
|  | 13 | **Logo** |  | 2026-01-15 | 2026-01-27 |  |  |  |  |  |  |  |  |  |
| HFR1-05-7460 |  | Material Submittal for Logo | 5d | 2026-01-15 | 2026-01-20 | HFR1-05-6790, HFR1-05-6740 | QA/QC Engineer [32 h] |  | HAS3-5260 | CON-LEG101-SB-4590 | D3800 | MKH2-02-002-SB-3040 | 0 | 0 |
| HFR1-05-8440 |  | Material Approval for Logo | 6d | 2026-01-21 | 2026-01-27 | HFR1-05-7460 | Consultant Staff [7.35 h]; Eng+Pro+Tc [1] | 7,855 | HAS3-6570 | CON-LEG101-SB-4600 | D3840 | MKH2-02-002-SB-3050 | 0 | 0 |
|  | 14 | **Pre Engineered Structures** |  | 2026-01-15 | 2026-01-27 |  |  |  |  |  |  |  |  |  |
| HFR1-05-7430 |  | Material Submittal for Pre Engineered Structure | 5d | 2026-01-15 | 2026-01-20 | HFR1-05-6790, HFR1-05-6710 | QA/QC Engineer [32 h] |  | HAS3-5230 | CON-LEG101-SB-4530 | D3800 | MKH2-02-002-SB-3040 | 0 | 0 |
| HFR1-05-8410 |  | Material Approval for Pre Engineered Structure | 6d | 2026-01-21 | 2026-01-27 | HFR1-05-7430 | Consultant Staff [7.35 h]; Eng+Pro+Tc [1] | 7,855 | HAS3-6540 | CON-LEG101-SB-4540 | D3840 | MKH2-02-002-SB-3050 | 0 | 0 |
|  | 15 | **Steel Fence** |  | 2026-01-15 | 2026-01-27 |  |  |  |  |  |  |  |  |  |
| HFR1-05-7440 |  | Material Submittal for Steel Fences | 5d | 2026-01-15 | 2026-01-20 | HFR1-05-6790, HFR1-05-6720 | QA/QC Engineer [32 h] |  | HAS3-5240 | CON-LEG101-SB-4550 | D3820 | MKH2-02-002-SB-3040 | 0 | 0 |
| HFR1-05-8420 |  | Material Approval for Steel Fences | 6d | 2026-01-21 | 2026-01-27 | HFR1-05-7440 | Consultant Staff [7.35 h]; Eng+Pro+Tc [1] | 7,855 | HAS3-6550 | CON-LEG101-SB-4560 | D3860 | MKH2-02-002-SB-3050 | 0 | 0 |
|  | 16 | **Gates** |  | 2026-01-15 | 2026-01-27 |  |  |  |  |  |  |  |  |  |
| HFR1-05-7450 |  | Material Submittal for Gates | 5d | 2026-01-15 | 2026-01-20 | HFR1-05-6790, HFR1-05-6730 | QA/QC Engineer [32 h] |  | HAS3-5250 | CON-LEG101-SB-4570 | D3800 | MKH2-02-002-SB-3040 | 0 | 0 |
| HFR1-05-8430 |  | Material Approval for Gates | 6d | 2026-01-21 | 2026-01-27 | HFR1-05-7450 | Consultant Staff [7.35 h]; Eng+Pro+Tc [1] | 7,855 | HAS3-6560 | CON-LEG101-SB-4580 | D3840 | MKH2-02-002-SB-3050 | 0 | 0 |
|  | 17 | **Pump Shed** |  | 2026-01-15 | 2026-01-27 |  |  |  |  |  |  |  |  |  |
| HFR1-05-7470 |  | Material Submittal for Pump Shed | 5d | 2026-01-15 | 2026-01-20 | HFR1-05-6790, HFR1-05-6750 | QA/QC Engineer [32 h] |  | HAS3-5270 | CON-LEG101-SB-4730 | D3800 | MKH2-02-002-SB-3040 | 0 | 0 |
| HFR1-05-8450 |  | Material Approval for Pump Shed | 6d | 2026-01-21 | 2026-01-27 | HFR1-05-7470 | Consultant Staff [7.35 h]; Eng+Pro+Tc [1] | 7,855 | HAS3-6580 | CON-LEG101-SB-4740 | D3840 | MKH2-02-002-SB-3050 | 0 | 0 |

| ID | WBS | Activity | Duration | Start | Finish | Predecessors | Resources | Cost | Old Activity ID | Old Activity ID-Alhasa | Mapping Sheet Activity ID | USERTEXT | Weight 1 | Total Weight % |
| --- | --- | --- | --- | --- | --- | --- | --- | --- | --- | --- | --- | --- | --- | --- |
|  | 5 | **Mechanical - Buildings** |  | 2026-01-15 | 2026-01-27 |  |  |  |  |  |  |  |  |  |
|  | 2 | **Fire Fighting System** |  | 2026-01-15 | 2026-01-27 |  |  |  |  |  |  |  |  |  |
| HFR1-05-6770 |  | Material Submittal for Fire Fighting System | 5d | 2026-01-15 | 2026-01-20 | HFR1-05-5070 | QA/QC Engineer [32 h] |  | CON-LEG101-SB-2280 | HAS3-4280 | D3820 | MKH2-02-002-SB-3040 | 0 | 0 |
| HFR1-05-7020 |  | Material Approval for Fire Fighting System | 6d | 2026-01-21 | 2026-01-27 | HFR1-05-6770 | Consultant Staff [7.35 h]; Eng+Pro+Tc [1] | 7,855 | CON-LEG101-SB-2320 | HAS3-4820 | D3860 | MKH2-02-002-SB-3050 | 0 | 0 |
|  | 1 | **HDPE Pipes** |  | 2026-01-15 | 2026-01-27 |  |  |  |  |  |  |  |  |  |
| HFR1-05-7010 |  | Material Submittal for HDPE Pipes | 5d | 2026-01-15 | 2026-01-20 | HFR1-05-6290 | QA/QC Engineer [32 h] |  | CON-LEG101-SB-2260 | HAS3-4810 | D3800 | MKH2-02-002-SB-3040 | 0 | 0 |
| HFR1-05-7990 |  | Material Approval for HDPE Pipes | 6d | 2026-01-21 | 2026-01-27 | HFR1-05-7010 | Consultant Staff [7.35 h]; Eng+Pro+Tc [1] | 7,855 | CON-LEG101-SB-2300 | HAS3-6120 | D3840 | MKH2-02-002-SB-3050 | 0 | 0 |
|  | 3 | **Valves** |  | 2026-01-15 | 2026-01-27 |  |  |  |  |  |  |  |  |  |
| HFR1-05-7030 |  | Material Submittal for Valves | 5d | 2026-01-15 | 2026-01-20 | HFR1-05-6300 | QA/QC Engineer [32 h] |  | CON-LEG101-SB-3240 | HAS3-4830 | D5778 | MKH2-02-002-SB-3040 | 0 | 0 |
| HFR1-05-8000 |  | Material Approval for Valves | 6d | 2026-01-21 | 2026-01-27 | HFR1-05-7030 | Consultant Staff [7.35 h]; Eng+Pro+Tc [1] | 7,855 | CON-LEG101-SB-3250 | HAS3-6130 | D5788 | MKH2-02-002-SB-3050 | 0 | 0 |
|  | 4 | **GRP pipes** |  | 2026-01-15 | 2026-01-27 |  |  |  |  |  |  |  |  |  |
| HFR1-05-7040 |  | Material Submittal for GRP Pipes | 5d | 2026-01-15 | 2026-01-20 | HFR1-05-6310 | QA/QC Engineer [32 h] |  | CON-LEG101-SB-4350 | HAS3-4840 | D3800 | MKH2-02-002-SB-3040 | 0 | 0 |
| HFR1-05-8010 |  | Material Approval for GRP Pipes | 6d | 2026-01-21 | 2026-01-27 | HFR1-05-7040 | Consultant Staff [7.35 h]; Eng+Pro+Tc [1] | 7,855 | CON-LEG101-SB-4370 | HAS3-6140 | D3840 | MKH2-02-002-SB-3050 | 0 | 0 |
|  | 5 | **Manholes** |  | 2026-01-15 | 2026-01-27 |  |  |  |  |  |  |  |  |  |
| HFR1-05-7050 |  | Material Submittal for Manholes | 5d | 2026-01-15 | 2026-01-20 | HFR1-05-6320 | QA/QC Engineer [32 h] |  | CON-LEG101-SB-4360 | HAS3-4850 | D3820 | MKH2-02-002-SB-3040 | 0 | 0 |
| HFR1-05-8020 |  | Material Approval for Manholes | 6d | 2026-01-21 | 2026-01-27 | HFR1-05-7050 | Consultant Staff [7.35 h]; Eng+Pro+Tc [1] | 7,855 | CON-LEG101-SB-4380 | HAS3-6150 | D3860 | MKH2-02-002-SB-3050 | 0 | 0 |
|  | 6 | **Fire Protectional System** |  | 2026-01-15 | 2026-01-27 |  |  |  |  |  |  |  |  |  |
| HFR1-05-7060 |  | Material Submittal for Fire Protection System | 5d | 2026-01-15 | 2026-01-20 | HFR1-05-6330 | QA/QC Engineer [32 h] |  | CON-LEG101-SB-4390 | HAS3-4860 | D5778 | MKH2-02-002-SB-3040 | 0 | 0 |
| HFR1-05-8030 |  | Material Approval for Fire Protection System | 6d | 2026-01-21 | 2026-01-27 | HFR1-05-7060 | Consultant Staff [7.35 h]; Eng+Pro+Tc [1] | 7,855 | CON-LEG101-SB-4400 | HAS3-6160 | D5788 | MKH2-02-002-SB-3050 | 0 | 0 |
|  | 7 | **Water Supply System** |  | 2026-01-15 | 2026-01-27 |  |  |  |  |  |  |  |  |  |
| HFR1-05-7100 |  | Material Submittal for Water Supply System | 5d | 2026-01-15 | 2026-01-20 | HFR1-05-6370 | QA/QC Engineer [32 h] |  | CON-LEG101-SB-4470 | HAS3-4900 | D3800 | MKH2-02-002-SB-3040 | 0 | 0 |
| HFR1-05-8070 |  | Material Approval for Water Supply System | 6d | 2026-01-21 | 2026-01-27 | HFR1-05-7100 | Consultant Staff [7.35 h]; Eng+Pro+Tc [1] | 7,855 | CON-LEG101-SB-4490 | HAS3-6200 | D3840 | MKH2-02-002-SB-3050 | 0 | 0 |
|  | 8 | **Upvc Pipes** |  | 2026-01-15 | 2026-01-27 |  |  |  |  |  |  |  |  |  |
| HFR1-05-7070 |  | Material Submittal for UPVC Pipes | 5d | 2026-01-15 | 2026-01-20 | HFR1-05-6340 | QA/QC Engineer [32 h] |  | CON-LEG101-SB-4410 | HAS3-4870 | D3800 | MKH2-02-002-SB-3040 | 0 | 0 |
| HFR1-05-8040 |  | Material Approval for UPVC Pipes | 6d | 2026-01-21 | 2026-01-27 | HFR1-05-7070 | Consultant Staff [7.35 h]; Eng+Pro+Tc [1] | 7,855 | CON-LEG101-SB-4430 | HAS3-6170 | D3840 | MKH2-02-002-SB-3050 | 0 | 0 |

| ID | WBS | Activity | Duration | Start | Finish | Predecessors | Resources | Cost | Old Activity ID | Old Activity ID-Alhasa | Mapping Sheet Activity ID | USERTEXT | Total Weight % | Weight 1 |
| --- | --- | --- | --- | --- | --- | --- | --- | --- | --- | --- | --- | --- | --- | --- |
|  | 9 | **Roof Vent Caps** |  | 2026-01-15 | 2026-01-27 |  |  |  |  |  |  |  |  |  |
| HFR1-05-7110 |  | Material Submittal for Roof Vent Caps | 5d | 2026-01-15 | 2026-01-20 | HFR1-05-6380 | QA/QC Engineer [32 h] |  | CON-LEG101-SB-4480 | HAS3-4910 | D3820 | MKH2-02-002-SB-3040 | 0 | 0 |
| HFR1-05-8080 |  | Material Approval for Roof Vent Caps | 6d | 2026-01-21 | 2026-01-27 | HFR1-05-7110 | Consultant Staff [7.35 h]; Eng+Pro+Tc [1] | 7,855 | CON-LEG101-SB-4500 | HAS3-6210 | D3860 | MKH2-02-002-SB-3050 | 0 | 0 |
|  | 10 | **Floor Drains** |  | 2026-01-15 | 2026-01-27 |  |  |  |  |  |  |  |  |  |
| HFR1-05-7120 |  | Material Submittal for Floor Drains | 5d | 2026-01-15 | 2026-01-20 | HFR1-05-6390 | QA/QC Engineer [32 h] |  | CON-LEG101-SB-4510 | HAS3-4920 | D5778 | MKH2-02-002-SB-3040 | 0 | 0 |
| HFR1-05-8090 |  | Material Approval for Floor Drains | 6d | 2026-01-21 | 2026-01-27 | HFR1-05-7120 | Consultant Staff [7.35 h]; Eng+Pro+Tc [1] | 7,855 | CON-LEG101-SB-4520 | HAS3-6220 | D5788 | MKH2-02-002-SB-3050 | 0 | 0 |
|  | 11 | **Electric Water Heater** |  | 2026-01-15 | 2026-01-27 |  |  |  |  |  |  |  |  |  |
| HFR1-05-7080 |  | Material Submittal for Electric Water Heater | 5d | 2026-01-15 | 2026-01-20 | HFR1-05-6350 | QA/QC Engineer [32 h] |  | CON-LEG101-SB-4420 | HAS3-4880 | D3820 | MKH2-02-002-SB-3040 | 0 | 0 |
| HFR1-05-8050 |  | Material Approval for Electric Water Heater | 6d | 2026-01-21 | 2026-01-27 | HFR1-05-7080 | Consultant Staff [7.35 h]; Eng+Pro+Tc [1] | 7,855 | CON-LEG101-SB-4440 | HAS3-6180 | D3860 | MKH2-02-002-SB-3050 | 0 | 0 |
|  | 12 | **Heating,Ventilation & Air Conditioning** |  | 2026-01-15 | 2026-01-27 |  |  |  |  |  |  |  |  |  |
| HFR1-05-7090 |  | Material Submittal for Heating,Ventilation & Air Conditioning | 5d | 2026-01-15 | 2026-01-20 | HFR1-05-6360 | QA/QC Engineer [32 h] |  | CON-LEG101-SB-4450 | HAS3-4890 | D5778 | MKH2-02-002-SB-3040 | 0 | 0 |
| HFR1-05-8060 |  | Material Approval for Heating,Ventilation & Air Conditioning | 6d | 2026-01-21 | 2026-01-27 | HFR1-05-7090 | Consultant Staff [7.35 h]; Eng+Pro+Tc [1] | 7,855 | CON-LEG101-SB-4460 | HAS3-6190 | D5788 | MKH2-02-002-SB-3050 | 0 | 0 |
|  | 6 | **Electrical - Buildings** |  | 2026-01-15 | 2026-01-27 |  |  |  |  |  |  |  |  |  |
|  | 2 | **Telecome Manholes & Handholes** |  | 2026-01-15 | 2026-01-27 |  |  |  |  |  |  |  |  |  |
| HFR1-05-6780 |  | Material Submittal for Telecome Manholes & handholes | 5d | 2026-01-15 | 2026-01-20 | HFR1-05-5190 | QA/QC Engineer [32 h] |  | CON-LEG101-SB-2280 | HAS3-4290 | D3820 | MKH2-02-002-SB-3040 | 0 | 0 |
| HFR1-05-7140 |  | Material Approval for Telecome Manholes & handholes | 6d | 2026-01-21 | 2026-01-27 | HFR1-05-6780 | Consultant Staff [7.35 h]; Eng+Pro+Tc [1] | 7,855 | CON-LEG101-SB-2320 | HAS3-4940 | D3860 | MKH2-02-002-SB-3050 | 0 | 0 |
|  | 1 | **Electrical manholes** |  | 2026-01-15 | 2026-01-27 |  |  |  |  |  |  |  |  |  |
| HFR1-05-7130 |  | Material Submittal for Manholes | 5d | 2026-01-15 | 2026-01-20 | HFR1-05-6400 | QA/QC Engineer [32 h] |  | CON-LEG101-SB-2260 | HAS3-4930 | D3800 | MKH2-02-002-SB-3040 | 0 | 0 |
| HFR1-05-8100 |  | Material Approval for Manholes | 6d | 2026-01-21 | 2026-01-27 | HFR1-05-7130 | Consultant Staff [7.35 h]; Eng+Pro+Tc [1] | 7,855 | CON-LEG101-SB-2300 | HAS3-6230 | D3840 | MKH2-02-002-SB-3050 | 0 | 0 |
|  | 3 | **Street Lighting Manholes** |  | 2026-01-15 | 2026-01-27 |  |  |  |  |  |  |  |  |  |
| HFR1-05-7150 |  | Material Submittal for Street Lighting Manholes | 5d | 2026-01-15 | 2026-01-20 | HFR1-05-6410 | QA/QC Engineer [32 h] |  | CON-LEG101-SB-3240 | HAS3-4950 | D5778 | MKH2-02-002-SB-3040 | 0 | 0 |
| HFR1-05-8110 |  | Material Approval for Street Lighting Manholes | 6d | 2026-01-21 | 2026-01-27 | HFR1-05-7150 | Consultant Staff [7.35 h]; Eng+Pro+Tc [1] | 7,855 | CON-LEG101-SB-3250 | HAS3-6240 | D5788 | MKH2-02-002-SB-3050 | 0 | 0 |
|  | 4 | **Duct Banks** |  | 2026-01-15 | 2026-01-27 |  |  |  |  |  |  |  |  |  |
| HFR1-05-7160 |  | Material Submittal for Duct Bank | 5d | 2026-01-15 | 2026-01-20 | HFR1-05-6420 | QA/QC Engineer [32 h] |  | CON-LEG101-SB-4350 | HAS3-4960 | D3800 | MKH2-02-002-SB-3040 | 0 | 0 |
| HFR1-05-8120 |  | Material Approval for Duct Bank | 6d | 2026-01-21 | 2026-01-27 | HFR1-05-7160 | Consultant Staff [7.35 h]; Eng+Pro+Tc [1] | 7,855 | CON-LEG101-SB-4370 | HAS3-6250 | D3840 | MKH2-02-002-SB-3050 | 0 | 0 |

| ID | WBS | Activity | Duration | Start | Finish | Predecessors | Resources | Cost | Old Activity ID | Old Activity ID-Alhasa | Mapping Sheet Activity ID | USERTEXT | Total Weight % | Weight 1 |
| --- | --- | --- | --- | --- | --- | --- | --- | --- | --- | --- | --- | --- | --- | --- |
|  | 5 | **Feeder Pillers** |  | 2026-01-15 | 2026-01-27 |  |  |  |  |  |  |  |  |  |
| HFR1-05-7170 |  | Material Submittal for Feeder Pillers | 5d | 2026-01-15 | 2026-01-20 | HFR1-05-6430 | QA/QC Engineer [32 h] |  | CON-LEG101-SB-4360 | HAS3-4970 | D3820 | MKH2-02-002-SB-3040 | 0 | 0 |
| HFR1-05-8130 |  | Material Approval for Feeder Pillers | 6d | 2026-01-21 | 2026-01-27 | HFR1-05-7170 | Consultant Staff [7.35 h]; Eng+Pro+Tc [1] | 7,855 | CON-LEG101-SB-4380 | HAS3-6260 | D3860 | MKH2-02-002-SB-3050 | 0 | 0 |
|  | 6 | **Street Lighting Poles** |  | 2026-01-15 | 2026-01-27 |  |  |  |  |  |  |  |  |  |
| HFR1-05-7180 |  | Material Submittal for Street Lighting Poles | 5d | 2026-01-15 | 2026-01-20 | HFR1-05-6440 | QA/QC Engineer [32 h] |  | CON-LEG101-SB-4390 | HAS3-4980 | D5778 | MKH2-02-002-SB-3040 | 0 | 0 |
| HFR1-05-8140 |  | Material Approval for Street Lighting Poles | 6d | 2026-01-21 | 2026-01-27 | HFR1-05-7180 | Consultant Staff [7.35 h]; Eng+Pro+Tc [1] | 7,855 | CON-LEG101-SB-4400 | HAS3-6270 | D5788 | MKH2-02-002-SB-3050 | 0 | 0 |
|  | 7 | **Street Lighting Luminaires** |  | 2026-01-15 | 2026-01-27 |  |  |  |  |  |  |  |  |  |
| HFR1-05-7220 |  | Material Submittal for Street Lighting Luminaires | 5d | 2026-01-15 | 2026-01-20 | HFR1-05-6480 | QA/QC Engineer [32 h] |  | CON-LEG101-SB-4470 | HAS3-5020 | D3800 | MKH2-02-002-SB-3040 | 0 | 0 |
| HFR1-05-8180 |  | Material Approval for Street Lighting Luminaires | 6d | 2026-01-21 | 2026-01-27 | HFR1-05-7220 | Consultant Staff [7.35 h]; Eng+Pro+Tc [1] | 7,855 | CON-LEG101-SB-4490 | HAS3-6310 | D3840 | MKH2-02-002-SB-3050 | 0 | 0 |
|  | 8 | **Low Voltage Cables** |  | 2026-01-15 | 2026-01-27 |  |  |  |  |  |  |  |  |  |
| HFR1-05-7190 |  | Material Submittal for Low Voltage Cables | 5d | 2026-01-15 | 2026-01-20 | HFR1-05-6450 | QA/QC Engineer [32 h] |  | CON-LEG101-SB-4410 | HAS3-4990 | D3800 | MKH2-02-002-SB-3040 | 0 | 0 |
| HFR1-05-8150 |  | Material Approval for Low Voltage Cables | 6d | 2026-01-21 | 2026-01-27 | HFR1-05-7190 | Consultant Staff [7.35 h]; Eng+Pro+Tc [1] | 7,855 | CON-LEG101-SB-4430 | HAS3-6280 | D3840 | MKH2-02-002-SB-3050 | 0 | 0 |
|  | 9 | **LED Lighting Fixtures** |  | 2026-01-15 | 2026-01-27 |  |  |  |  |  |  |  |  |  |
| HFR1-05-7230 |  | Material Submittal for LED Lighting Fixtures | 5d | 2026-01-15 | 2026-01-20 | HFR1-05-6490 | QA/QC Engineer [32 h] |  | CON-LEG101-SB-4480 | HAS3-5030 | D3820 | MKH2-02-002-SB-3040 | 0 | 0 |
| HFR1-05-8190 |  | Material Approval for LED Lighting Fixtures | 6d | 2026-01-21 | 2026-01-27 | HFR1-05-7230 | Consultant Staff [7.35 h]; Eng+Pro+Tc [1] | 7,855 | CON-LEG101-SB-4500 | HAS3-6320 | D3860 | MKH2-02-002-SB-3050 | 0 | 0 |
|  | 10 | **Power Panel** |  | 2026-01-15 | 2026-01-27 |  |  |  |  |  |  |  |  |  |
| HFR1-05-7240 |  | Material Submittal for Power Panel | 5d | 2026-01-15 | 2026-01-20 | HFR1-05-6500 | QA/QC Engineer [32 h] |  | CON-LEG101-SB-4510 | HAS3-5040 | D5778 | MKH2-02-002-SB-3040 | 0 | 0 |
| HFR1-05-8200 |  | Material Approval for Power Panel | 6d | 2026-01-21 | 2026-01-27 | HFR1-05-7240 | Consultant Staff [7.35 h]; Eng+Pro+Tc [1] | 7,855 | CON-LEG101-SB-4520 | HAS3-6330 | D5788 | MKH2-02-002-SB-3050 | 0 | 0 |
|  | 11 | **Control Panels** |  | 2026-01-15 | 2026-01-27 |  |  |  |  |  |  |  |  |  |
| HFR1-05-7200 |  | Material Submittal for Control Panels | 5d | 2026-01-15 | 2026-01-20 | HFR1-05-6460 | QA/QC Engineer [32 h] |  | CON-LEG101-SB-4420 | HAS3-5000 | D3820 | MKH2-02-002-SB-3040 | 0 | 0 |
| HFR1-05-8160 |  | Material Approval for Control Panels | 6d | 2026-01-21 | 2026-01-27 | HFR1-05-7200 | Consultant Staff [7.35 h]; Eng+Pro+Tc [1] | 7,855 | CON-LEG101-SB-4440 | HAS3-6290 | D3860 | MKH2-02-002-SB-3050 | 0 | 0 |
|  | 12 | **Isolator & Disconnecting Switches** |  | 2026-01-15 | 2026-01-27 |  |  |  |  |  |  |  |  |  |
| HFR1-05-7210 |  | Material Submittal for Isolator & Disconnecting Switches | 5d | 2026-01-15 | 2026-01-20 | HFR1-05-6470 | QA/QC Engineer [32 h] |  | CON-LEG101-SB-4450 | HAS3-5010 | D5778 | MKH2-02-002-SB-3040 | 0 | 0 |
| HFR1-05-8170 |  | Material Approval for Isolator & Disconnecting Switches | 6d | 2026-01-21 | 2026-01-27 | HFR1-05-7210 | Consultant Staff [7.35 h]; Eng+Pro+Tc [1] | 7,855 | CON-LEG101-SB-4460 | HAS3-6300 | D5788 | MKH2-02-002-SB-3050 | 0 | 0 |

| ID | WBS | Activity | Duration | Start | Finish | Predecessors | Resources | Cost | Old Activity ID-Alhasa | Old Activity ID | Mapping Sheet Activity ID | USERTEXT | Weight 1 | Total Weight % |
| --- | --- | --- | --- | --- | --- | --- | --- | --- | --- | --- | --- | --- | --- | --- |
|  | 13 | **Cable Trays** |  | 2026-01-15 | 2026-01-27 |  |  |  |  |  |  |  |  |  |
| HFR1-05-7280 |  | Material Submittal for Cable Trays | 5d | 2026-01-15 | 2026-01-20 | HFR1-05-6540 | QA/QC Engineer [32 h] |  | HAS3-5080 | CON-LEG101-SB-4590 | D3800 | MKH2-02-002-SB-3040 | 0 | 0 |
| HFR1-05-8240 |  | Material Approval for Cable Trays | 6d | 2026-01-21 | 2026-01-27 | HFR1-05-7280 | Consultant Staff [7.35 h]; Eng+Pro+Tc [1] | 7,855 | HAS3-6370 | CON-LEG101-SB-4600 | D3840 | MKH2-02-002-SB-3050 | 0 | 0 |
|  | 14 | **KWHM** |  | 2026-01-15 | 2026-01-27 |  |  |  |  |  |  |  |  |  |
| HFR1-05-7250 |  | Material Submittal for KWHM | 5d | 2026-01-15 | 2026-01-20 | HFR1-05-6510 | QA/QC Engineer [32 h] |  | HAS3-5050 | CON-LEG101-SB-4530 | D3800 | MKH2-02-002-SB-3040 | 0 | 0 |
| HFR1-05-8210 |  | Material Approval for KWHM | 6d | 2026-01-21 | 2026-01-27 | HFR1-05-7250 | Consultant Staff [7.35 h]; Eng+Pro+Tc [1] | 7,855 | HAS3-6340 | CON-LEG101-SB-4540 | D3840 | MKH2-02-002-SB-3050 | 0 | 0 |
|  | 15 | **Safety Disconnect Switches** |  | 2026-01-15 | 2026-01-27 |  |  |  |  |  |  |  |  |  |
| HFR1-05-7260 |  | Material Submittal for Safety Disconnects Switches | 5d | 2026-01-15 | 2026-01-20 | HFR1-05-6520 | QA/QC Engineer [32 h] |  | HAS3-5060 | CON-LEG101-SB-4550 | D3820 | MKH2-02-002-SB-3040 | 0 | 0 |
| HFR1-05-8220 |  | Material Approval for Safety Disconnects Switches | 6d | 2026-01-21 | 2026-01-27 | HFR1-05-7260 | Consultant Staff [7.35 h]; Eng+Pro+Tc [1] | 7,855 | HAS3-6350 | CON-LEG101-SB-4560 | D3860 | MKH2-02-002-SB-3050 | 0 | 0 |
|  | 16 | **Telecom & Data System** |  | 2026-01-15 | 2026-01-27 |  |  |  |  |  |  |  |  |  |
| HFR1-05-7270 |  | Material Submittal for Telecome & Data System | 5d | 2026-01-15 | 2026-01-20 | HFR1-05-6530 | QA/QC Engineer [32 h] |  | HAS3-5070 | CON-LEG101-SB-4570 | D3800 | MKH2-02-002-SB-3040 | 0 | 0 |
| HFR1-05-8230 |  | Material Approval for Telecome & Data System | 6d | 2026-01-21 | 2026-01-27 | HFR1-05-7270 | Consultant Staff [7.35 h]; Eng+Pro+Tc [1] | 7,855 | HAS3-6360 | CON-LEG101-SB-4580 | D3840 | MKH2-02-002-SB-3050 | 0 | 0 |
|  | 17 | **Grounding System** |  | 2026-01-15 | 2026-01-27 |  |  |  |  |  |  |  |  |  |
| HFR1-05-7300 |  | Material Submittal for Grounding System | 5d | 2026-01-15 | 2026-01-20 | HFR1-05-6590 | QA/QC Engineer [32 h] |  | HAS3-5100 | CON-LEG101-SB-4730 | D3800 | MKH2-02-002-SB-3040 | 0 | 0 |
| HFR1-05-8290 |  | Material Approval for Grounding System | 6d | 2026-01-21 | 2026-01-27 | HFR1-05-7300 | Consultant Staff [7.35 h]; Eng+Pro+Tc [1] | 7,855 | HAS3-6420 | CON-LEG101-SB-4740 | D3840 | MKH2-02-002-SB-3050 | 0 | 0 |
|  | 18 | **Lightning Protection System** |  | 2026-01-15 | 2026-01-27 |  |  |  |  |  |  |  |  |  |
| HFR1-05-7290 |  | Material Submittal for Lightning Protection System | 5d | 2026-01-15 | 2026-01-20 | HFR1-05-6580 | QA/QC Engineer [32 h] |  | HAS3-5090 | CON-LEG101-SB-4710 | D3800 | MKH2-02-002-SB-3040 | 0 | 0 |
| HFR1-05-8280 |  | Material Approval for Lightning Protection System | 6d | 2026-01-21 | 2026-01-27 | HFR1-05-7290 | Consultant Staff [7.35 h]; Eng+Pro+Tc [1] | 7,855 | HAS3-6410 | CON-LEG101-SB-4720 | D3840 | MKH2-02-002-SB-3050 | 0 | 0 |
|  | 19 | **Fire Alarm System** |  | 2026-01-15 | 2026-01-27 |  |  |  |  |  |  |  |  |  |
| HFR1-05-8260 |  | Material Submittal for Fire Alarm System | 5d | 2026-01-15 | 2026-01-20 | HFR1-05-6970 | QA/QC Engineer [32 h] |  | HAS3-6390 | CON-LEG101-SB-4670 | D3820 | MKH2-02-002-SB-3040 | 0 | 0 |
| HFR1-05-8800 |  | Material Approval for Fire Alarm System | 6d | 2026-01-21 | 2026-01-27 | HFR1-05-8260 | Consultant Staff [7.35 h]; Eng+Pro+Tc [1] | 7,855 | HAS3-7120 | CON-LEG101-SB-4680 | D3860 | MKH2-02-002-SB-3050 | 0 | 0 |
|  | 20 | **Solar Power Plant** |  | 2026-01-15 | 2026-01-27 |  |  |  |  |  |  |  |  |  |
| HFR1-05-8270 |  | Material Submittal for Solar Power Plant | 5d | 2026-01-15 | 2026-01-20 | HFR1-05-6980 | QA/QC Engineer [32 h] |  | HAS3-6400 | CON-LEG101-SB-4690 | D5778 | MKH2-02-002-SB-3040 | 0 | 0 |
| HFR1-05-8810 |  | Material Approval for Solar Power Plant | 6d | 2026-01-21 | 2026-01-27 | HFR1-05-8270 | Consultant Staff [7.35 h]; Eng+Pro+Tc [1] | 7,855 | HAS3-7130 | CON-LEG101-SB-4700 | D5788 | MKH2-02-002-SB-3050 | 0 | 0 |

| ID | WBS | Activity | Duration | Start | Finish | Predecessors | Resources | Cost | Old Activity ID-Alhasa | Old Activity ID | Mapping Sheet Activity ID | USERTEXT | Weight 1 | Total Weight % |
| --- | --- | --- | --- | --- | --- | --- | --- | --- | --- | --- | --- | --- | --- | --- |
|  | 21 | **Skylight Fixtures** |  | 2026-01-15 | 2026-01-27 |  |  |  |  |  |  |  |  |  |
| HFR1-05-8250 |  | Material Submittal for Skylight Fixtures | 5d | 2026-01-15 | 2026-01-20 | HFR1-05-6960 | QA/QC Engineer [32 h] |  | HAS3-6380 | CON-LEG101-SB-4650 | D3800 | MKH2-02-002-SB-3040 | 0 | 0 |
| HFR1-05-8790 |  | Material Approval for Skylight Fixtures | 6d | 2026-01-21 | 2026-01-27 | HFR1-05-8250 | Consultant Staff [7.35 h]; Eng+Pro+Tc [1] | 7,855 | HAS3-7110 | CON-LEG101-SB-4660 | D3840 | MKH2-02-002-SB-3050 | 0 | 0 |
|  | 5 | **Procurement** |  | 2026-01-15 | 2026-07-22 |  |  |  |  |  |  |  |  |  |
|  | 2 | **Short Lead Item** |  | 2026-01-15 | 2026-07-22 |  |  |  |  |  |  |  |  |  |
|  | 1 | **Road Works - Civil** |  | 2026-01-15 | 2026-07-22 |  |  |  |  |  |  |  |  |  |
|  | 1 | **Steel Reinforcement** |  | 2026-01-15 | 2026-02-11 |  |  |  |  |  |  |  |  |  |
| HFR1-05-3350 |  | PO for Steel Reinforcement | 6d | 2026-01-15 | 2026-01-21 | HFR1-05-6990 SS | Purchaser [8 h] |  | HAS3-1290 | CON-LEG101-PR-1390 | E1450 | MKH2-02-002-PR-1930 | 0 | 0 |
| HFR1-05-5530 |  | Material Fabrication for Steel Reinforcement | 6d | 2026-01-22 | 2026-01-28 | HFR1-05-3350 | QA/QC Engineer [160 h] |  | HAS3-2770 | CON-LEG101-PR-1400 | E1460 | MKH2-02-002-PR-1940 | 0 | 0 |
| HFR1-05-8860 |  | Material Delivery for Steel Reinforcement | 12d | 2026-01-29 | 2026-02-11 | HFR1-05-5530 | Purchaser [180 h]; PRO-SHORT-ROAD [1] | 20,149 | HAS3-7280 |  |  |  |  |  |
|  | 2 | **Ready Mixed Concrete** |  | 2026-01-15 | 2026-02-04 |  |  |  |  |  |  |  |  |  |
| HFR1-05-3360 |  | PO for Ready Mixed Concrete | 8d | 2026-01-15 | 2026-01-24 | HFR1-05-7970 SS | Purchaser [16 h] |  | HAS3-1300 | CON-LEG101-PR-1420 | E1480 | MKH2-02-002-PR-1960 | 0 | 0 |
| HFR1-05-5700 |  | Material Delivery for Ready Mixed Concrete | 10d | 2026-01-25 | 2026-02-04 | HFR1-05-3360 | QA/QC Engineer [24 h]; PRO-SHORT-ROAD [1] | 20,149 | HAS3-2940 | CON-LEG101-PR-1430 | E1490 | MKH2-02-002-PR-1970 | 0 | 0 |
|  | 3 | **Water Proofing** |  | 2026-01-22 | 2026-04-01 |  |  |  |  |  |  |  |  |  |
| HFR1-05-3400 |  | PO for Water Proofing | 6d | 2026-01-22 | 2026-01-28 | HFR1-05-8780 | Purchaser [8 h] |  | HAS3-1310 | CON-LEG101-PR-1440 | E1500 | MKH2-02-002-PR-1980 | 0 | 0 |
| HFR1-05-5540 |  | Material Fabrication for Water Proofing | 25d | 2026-01-29 | 2026-02-28 | HFR1-05-3400, HFR1-05-8200, HFR1-05-8170, HFR1-05-8410, HFR1-05-8380 | QA/QC Engineer [200 h] |  | HAS3-2780 | CON-LEG101-PR-1450 | E1510 | MKH2-02-002-PR-1990 | 0 | 0 |
| HFR1-05-8990 |  | Material Delivery for Water Proofing | 25d | 2026-03-01 | 2026-04-01 | HFR1-05-5540 | QA/QC Engineer [24 h]; PRO-SHORT-ROAD [1] | 20,149 | HAS3-7850 | CON-LEG101-PR-1460 | E1520 | MKH2-02-002-PR-2000 | 0 | 0 |
|  | 4 | **Aggregate Base Course** |  | 2026-01-22 | 2026-02-11 |  |  |  |  |  |  |  |  |  |
| HFR1-05-3430 |  | PO for Aggregate Base Course | 6d | 2026-01-22 | 2026-01-28 | HFR1-05-8740 | Purchaser [40 h] |  | HAS3-1320 | CON-LEG101-PR-1470 | E1530 | MKH2-02-002-PR-2010 | 0 | 0 |
| HFR1-05-5570 |  | Material Delivery for Aggregate Base Course | 12d | 2026-01-29 | 2026-02-11 | HFR1-05-3430 | Purchaser [200 h]; PRO-SHORT-ROAD [1] | 20,149 | HAS3-2810 |  |  |  |  |  |
|  | 5 | **Bituminous Base & Wearing Course** |  | 2026-01-22 | 2026-06-10 |  |  |  |  |  |  |  |  |  |
| HFR1-05-3460 |  | PO for Bituminous Base & Wearing Cource | 6d | 2026-01-22 | 2026-01-28 | HFR1-05-8930 | Purchaser [32 h] |  | HAS3-1330 | CON-LEG101-PR-1500 | E1560 | MKH2-02-002-PR-2040 | 0 | 0 |
| HFR1-05-5550 |  | Material Delivery to the Site | 37d | 2026-04-26 | 2026-06-10 | HFR1-05-3460 FS+70d | QA/QC Engineer [224 h]; PRO-SHORT-ROAD [1] | 20,149 | HAS3-2790 | CON-LEG101-PR-1510 | E1570 | MKH2-02-002-PR-2050 | 0 | 0 |
|  | 7 | **Precast Concrete Kerb** |  | 2026-01-22 | 2026-06-17 |  |  |  |  |  |  |  |  |  |
| HFR1-05-3500 |  | PO for Precast Concrete Kerb | 6d | 2026-01-22 | 2026-01-28 | HFR1-05-8940 | Purchaser [40 h] |  | HAS3-1340 | CON-LEG101-PR-1520 | E1600 | MKH2-02-002-PR-2080 | 0 | 0 |
| HFR1-05-5560 |  | Material Fabrication for Precast Concrete Kerb | 38d | 2026-03-22 | 2026-05-04 | HFR1-05-3500 FS+40d | QA/QC Engineer [144 h] |  | HAS3-2800 | CON-LEG101-PR-1530 | E1610 | MKH2-02-002-PR-2090 | 0 | 0 |
| HFR1-05-9110 |  | Material Delivery for Precast Concrete Kerb | 35d | 2026-05-05 | 2026-06-17 | HFR1-05-5560 | QA/QC Engineer [32 h]; PRO-SHORT-ROAD [1] | 20,149 | HAS3-8210 | CON-LEG101-PR-1540 | E1620 | MKH2-02-002-PR-2100 | 0 | 0 |

| ID | WBS | Activity | Duration | Start | Finish | Predecessors | Resources | Cost | Old Activity ID | Old Activity ID-Alhasa | Mapping Sheet Activity ID | Weight 1 | Total Weight % | USERTEXT |
| --- | --- | --- | --- | --- | --- | --- | --- | --- | --- | --- | --- | --- | --- | --- |
|  | 8 | **Interlocking Block Pavers** |  | 2026-03-05 | 2026-07-01 |  |  |  |  |  |  |  |  |  |
| HFR1-05-3550 |  | PO for Interlocking Block Pavers | 4d | 2026-03-05 | 2026-03-09 | HFR1-05-8950 FS+35d, HFR1-05-5700, HFR1-05-8860 | Purchaser [24 h] |  | CON-LEG101-PR-1550 | HAS3-1350 | E1630 | 0 | 0 | MKH2-02-002-PR-2110 |
| HFR1-05-5000 |  | Material Fabrication for Interlocking Block Pavers | 37d | 2026-04-06 | 2026-05-18 | HFR1-05-3550 FS+20d | QA/QC Engineer [128 h] |  | CON-LEG101-PR-1560 | HAS3-1990 | E1640 | 0 | 0 | MKH2-02-002-PR-2120 |
| HFR1-05-9060 |  | Material Delivery for Interlocking Block Pavers | 35d | 2026-05-19 | 2026-07-01 | HFR1-05-5000 | QA/QC Engineer [32 h]; PRO-SHORT-ROAD [1] | 20,149 | CON-LEG101-PR-1570 | HAS3-7980 | E1650 | 0 | 0 | MKH2-02-002-PR-2130 |
|  | 9 | **Pavement Markings** |  | 2026-03-11 | 2026-07-12 |  |  |  |  |  |  |  |  |  |
| HFR1-05-3570 |  | PO for Pavement Markings | 5d | 2026-03-11 | 2026-03-16 | HFR1-05-9070 FS+35d | Purchaser [32 h] |  | CON-LEG101-PR-1580 | HAS3-1360 | E1660 | 0 | 0 | MKH2-02-002-PR-2140 |
| HFR1-05-5020 |  | Material Fabrication for Pavement Markings | 40d | 2026-04-07 | 2026-05-23 | HFR1-05-8990, HFR1-05-3570 FS+15d | QA/QC Engineer [112 h] |  | CON-LEG101-PR-1590 | HAS3-2020 | E1670 | 0 | 0 | MKH2-02-002-PR-2150 |
| HFR1-05-9130 |  | Material Delivery for Pavement Markings | 40d | 2026-05-24 | 2026-07-12 | HFR1-05-5020 | QA/QC Engineer [224 h]; PRO-SHORT-ROAD [1] | 20,149 | CON-LEG101-PR-1600 | HAS3-8470 | E1680 | 0 | 0 | MKH2-02-002-PR-2160 |
|  | 10 | **Traffic Signs** |  | 2026-03-16 | 2026-07-22 |  |  |  |  |  |  |  |  |  |
| HFR1-05-2920 |  | PO for Traffic Signs | 5d | 2026-03-16 | 2026-03-24 | HFR1-05-9180 FS+45d | Purchaser [48 h] |  | CON-LEG101-PR-1610 | HAS3-1 | E1690 | 0 | 0 | MKH2-02-002-PR-2170 |
| HFR1-05-5010 |  | Material Fabrication for Traffic Signs | 75d | 2026-03-25 | 2026-06-23 | HFR1-05-2920 | QA/QC Engineer [152 h] |  | CON-LEG101-PR-1620 | HAS3-2 | E1700 | 0 | 0 | MKH2-02-002-PR-2180 |
| HFR1-05-5760 |  | Material Delivery for Traffic Signs | 25d | 2026-06-24 | 2026-07-22 | HFR1-05-5010, HFR1-05-9110, HFR1-05-5550 | QA/QC Engineer [128 h]; PRO-SHORT-ROAD [1] | 20,149 | CON-LEG101-PR-1630 | HAS3-3 | E1710 | 0 | 0 | MKH2-02-002-PR-2190 |
|  | 2 | **Potable Water Network** |  | 2026-01-22 | 2026-03-17 |  |  |  |  |  |  |  |  |  |
|  | 1 | **HDPE Pipes** |  | 2026-01-22 | 2026-03-17 |  |  |  |  |  |  |  |  |  |
| HFR1-05-4930 |  | PO for HDPE Pipes | 6d | 2026-01-22 | 2026-01-28 | HFR1-05-6820 | Purchaser [8 h] |  | CON-LEG101-PR-1390 | HAS3-1920 | E1450 | 0 | 0 | MKH2-02-002-PR-1930 |
| HFR1-05-5650 |  | Material Fabrication for HDPE Pipes | 25d | 2026-01-29 | 2026-02-28 | HFR1-05-4930 | QA/QC Engineer [160 h] |  | CON-LEG101-PR-1400 | HAS3-2890 | E1460 | 0 | 0 | MKH2-02-002-PR-1940 |
| HFR1-05-8970 |  | Material Delivery for HDPE Pipes | 15d | 2026-03-01 | 2026-03-17 | HFR1-05-5650 | Purchaser [180 h]; PRO-SHORT-POTABEL WA [1] | 19,550 |  | HAS3-7490 |  |  |  |  |
|  | 2 | **Valves** |  | 2026-01-22 | 2026-03-17 |  |  |  |  |  |  |  |  |  |
| HFR1-05-4940 |  | PO for Valves | 6d | 2026-01-22 | 2026-01-28 | HFR1-05-7480 SS | Purchaser [8 h] |  | CON-LEG101-PR-1390 | HAS3-1930 | E1450 | 0 | 0 | MKH2-02-002-PR-1930 |
| HFR1-05-5660 |  | Material Fabrication for Valves | 25d | 2026-01-29 | 2026-02-28 | HFR1-05-4940 | QA/QC Engineer [160 h] |  | CON-LEG101-PR-1400 | HAS3-2900 | E1460 | 0 | 0 | MKH2-02-002-PR-1940 |
| HFR1-05-8980 |  | Material Delivery for Valves | 15d | 2026-03-01 | 2026-03-17 | HFR1-05-5660 | Purchaser [180 h]; PRO-SHORT-POTABEL WA [1] | 19,550 |  | HAS3-7500 |  |  |  |  |
|  | 3 | **Sewer Water Network** |  | 2026-01-15 | 2026-03-31 |  |  |  |  |  |  |  |  |  |
|  | 1 | **GRP Pipes** |  | 2026-01-15 | 2026-03-25 |  |  |  |  |  |  |  |  |  |
| HFR1-05-4950 |  | PO for GRP Pipes | 6d | 2026-01-15 | 2026-01-21 | HFR1-05-7490 SS | Purchaser [8 h] |  | CON-LEG101-PR-1390 | HAS3-1940 | E1450 | 0 | 0 | MKH2-02-002-PR-1930 |
| HFR1-05-5670 |  | Material Fabrication for GRP Pipes | 25d | 2026-01-22 | 2026-02-19 | HFR1-05-4950 | QA/QC Engineer [160 h] |  | CON-LEG101-PR-1400 | HAS3-2910 | E1460 | 0 | 0 | MKH2-02-002-PR-1940 |
| HFR1-05-8870 |  | Material Delivery for GRP Pipes | 25d | 2026-02-21 | 2026-03-25 | HFR1-05-5670 | Purchaser [180 h]; PRO-SHORT-POTABEL WA [1] | 19,550 |  | HAS3-7290 |  |  |  |  |

| ID | WBS | Activity | Duration | Start | Finish | Predecessors | Resources | Cost | USERTEXT | Weight 1 | Total Weight % | Mapping Sheet Activity ID | Old Activity ID-Alhasa | Old Activity ID |
| --- | --- | --- | --- | --- | --- | --- | --- | --- | --- | --- | --- | --- | --- | --- |
|  | 2 | **Manholes** |  | 2026-01-21 | 2026-03-31 |  |  |  |  |  |  |  |  |  |
| HFR1-05-4960 |  | PO for Manholes | 6d | 2026-01-21 | 2026-01-27 | HFR1-05-8460 SS | Purchaser [8 h] |  | MKH2-02-002-PR-1930 | 0 | 0 | E1450 | HAS3-1950 | CON-LEG101-PR-1390 |
| HFR1-05-5680 |  | Material Fabrication for Manholes | 25d | 2026-01-28 | 2026-02-26 | HFR1-05-4960 | QA/QC Engineer [160 h] |  | MKH2-02-002-PR-1940 | 0 | 0 | E1460 | HAS3-2920 | CON-LEG101-PR-1400 |
| HFR1-05-8880 |  | Material Delivery for Manholes | 25d | 2026-02-28 | 2026-03-31 | HFR1-05-5680 | Purchaser [180 h]; PRO-SHORT-POTABEL WA [1] | 19,550 |  |  |  |  | HAS3-7300 |  |
|  | 7 | **Civil Works - Buildings** |  | 2026-01-15 | 2026-07-12 |  |  |  |  |  |  |  |  |  |
|  | 2 | **Steel Reinforcement** |  | 2026-01-15 | 2026-01-28 |  |  |  |  |  |  |  |  |  |
| HFR1-05-3630 |  | PO for Steel Reinforcement | 3d | 2026-01-15 | 2026-01-18 | HFR1-05-7320 SS | Purchaser [32 h] |  | MKH2-02-002-PR-1320 | 0 | 0 | E3720 | HAS3-1380 | CON-LEG101-PR-3160 |
| HFR1-05-5580 |  | Material Fabrication for Steel Reinforcement | 4d | 2026-01-19 | 2026-01-22 | HFR1-05-3630 | QA/QC Engineer [128 h] |  | MKH2-02-002-PR-1360 | 0 | 0 | E3750 | HAS3-2820 | CON-LEG101-PR-3170 |
| HFR1-05-9160 |  | Material Delivery for Steel Reinforcement | 5d | 2026-01-24 | 2026-01-28 | HFR1-05-5580 | QA/QC Engineer [48 h]; PRO-SHORT-CIVIL [1] | 21,400 | MKH2-02-002-PR-1400 | 0.00245815896638331 | 0.245815896638331 | E3780 | HAS3-8530 | CON-LEG101-PR-3180 |
|  | 1 | **Ready Mix Concrete** |  | 2026-01-21 | 2026-02-04 |  |  |  |  |  |  |  |  |  |
| HFR1-05-3670 |  | PO for Ready Mix Concrete | 5d | 2026-01-21 | 2026-01-26 | HFR1-05-8300 SS | Purchaser [32 h] |  | MKH2-02-002-PR-1320 | 0 | 0 | E3720 | HAS3-1390 | CON-LEG101-PR-3160 |
| HFR1-05-3700 |  | Material Delivery for Ready Mix Concrete | 8d | 2026-01-27 | 2026-02-04 | HFR1-05-3670 | QA/QC Engineer [48 h]; PRO-SHORT-CIVIL [1] | 21,400 | MKH2-02-002-PR-1400 | 0.00245815896638331 | 0.245815896638331 | E3780 | HAS3-1400 | CON-LEG101-PR-3180 |
|  | 3 | **Masonry** |  | 2026-01-21 | 2026-02-04 |  |  |  |  |  |  |  |  |  |
| HFR1-05-3750 |  | PO for Masonry | 5d | 2026-01-21 | 2026-01-26 | HFR1-05-8310 SS | Purchaser [32 h] |  | MKH2-02-002-PR-1320 | 0 | 0 | E3720 | HAS3-1410 | CON-LEG101-PR-3160 |
| HFR1-05-3850 |  | Material Delivery for Masonry | 8d | 2026-01-27 | 2026-02-04 | HFR1-05-3750 | QA/QC Engineer [48 h]; PRO-SHORT-CIVIL [1] | 21,400 | MKH2-02-002-PR-1400 | 0.00245815896638331 | 0.245815896638331 | E3780 | HAS3-1420 | CON-LEG101-PR-3180 |
|  | 5 | **Thermal & Moisture Protection** |  | 2026-01-21 | 2026-02-09 |  |  |  |  |  |  |  |  |  |
| HFR1-05-3920 |  | PO for Thermal & Moisture Protection | 5d | 2026-01-21 | 2026-01-26 | HFR1-05-8330 SS | Purchaser [32 h] |  | MKH2-02-002-PR-1320 | 0 | 0 | E3720 | HAS3-1430 | CON-LEG101-PR-3160 |
| HFR1-05-5030 |  | Material Fabrication for Thermal & Moisture Protection | 6d | 2026-01-27 | 2026-02-02 | HFR1-05-3920 | QA/QC Engineer [128 h] |  | MKH2-02-002-PR-1360 | 0 | 0 | E3750 | HAS3-2040 | CON-LEG101-PR-3170 |
| HFR1-05-9140 |  | Material Delivery for Thermal & Moisture Protection | 6d | 2026-02-03 | 2026-02-09 | HFR1-05-5030 | QA/QC Engineer [48 h]; PRO-SHORT-CIVIL [1] | 21,400 | MKH2-02-002-PR-1400 | 0.00245815896638331 | 0.245815896638331 | E3780 | HAS3-8480 | CON-LEG101-PR-3180 |
|  | 6 | **Water Proofing System** |  | 2026-01-21 | 2026-02-07 |  |  |  |  |  |  |  |  |  |
| HFR1-05-3960 |  | PO for Water Proofing System | 3d | 2026-01-21 | 2026-01-24 | HFR1-05-8340 SS | Purchaser [32 h] |  | MKH2-02-002-PR-1320 | 0 | 0 | E3720 | HAS3-1440 | CON-LEG101-PR-3160 |
| HFR1-05-5710 |  | Material Fabrication for Water Proofing System | 6d | 2026-01-25 | 2026-01-31 | HFR1-05-3960 | QA/QC Engineer [128 h] |  | MKH2-02-002-PR-1360 | 0 | 0 | E3750 | HAS3-2950 | CON-LEG101-PR-3170 |
| HFR1-05-9090 |  | Material Delivery for Water Proofing System | 6d | 2026-02-01 | 2026-02-07 | HFR1-05-5710 | QA/QC Engineer [48 h]; PRO-SHORT-CIVIL [1] | 21,400 | MKH2-02-002-PR-1400 | 0.00245815896638331 | 0.245815896638331 | E3780 | HAS3-8180 | CON-LEG101-PR-3180 |
|  | 8 | **Floor Finishes** |  | 2026-01-21 | 2026-02-07 |  |  |  |  |  |  |  |  |  |
| HFR1-05-4060 |  | PO for Floor Finishes | 3d | 2026-01-21 | 2026-01-24 | HFR1-05-8350 SS | Purchaser [32 h] |  | MKH2-02-002-PR-1320 | 0 | 0 | E3720 | HAS3-1450 | CON-LEG101-PR-3160 |
| HFR1-05-5590 |  | Material Fabrication for Floor Finishes | 6d | 2026-01-25 | 2026-01-31 | HFR1-05-4060 | QA/QC Engineer [128 h] |  | MKH2-02-002-PR-1360 | 0 | 0 | E3750 | HAS3-2830 | CON-LEG101-PR-3170 |
| HFR1-05-9170 |  | Material Delivery for Floor Finishes | 6d | 2026-02-01 | 2026-02-07 | HFR1-05-5590 | QA/QC Engineer [48 h]; PRO-SHORT-CIVIL [1] | 21,400 | MKH2-02-002-PR-1400 | 0.00245815896638331 | 0.245815896638331 | E3780 | HAS3-8540 | CON-LEG101-PR-3180 |

| ID | WBS | Activity | Duration | Start | Finish | Predecessors | Resources | Cost | Old Activity ID | Old Activity ID-Alhasa | Mapping Sheet Activity ID | Weight 1 | Total Weight % | USERTEXT |
| --- | --- | --- | --- | --- | --- | --- | --- | --- | --- | --- | --- | --- | --- | --- |
|  | 9 | **Wall Finishes** |  | 2026-01-21 | 2026-02-07 |  |  |  |  |  |  |  |  |  |
| HFR1-05-4100 |  | PO for Wall Finishes | 3d | 2026-01-21 | 2026-01-24 | HFR1-05-8390 SS | Purchaser [32 h] |  | CON-LEG101-PR-3160 | HAS3-1460 | E3720 | 0 | 0 | MKH2-02-002-PR-1320 |
| HFR1-05-5720 |  | Material Fabrication for Wall Finishes | 6d | 2026-01-25 | 2026-01-31 | HFR1-05-4100 | QA/QC Engineer [128 h] |  | CON-LEG101-PR-3170 | HAS3-2960 | E3750 | 0 | 0 | MKH2-02-002-PR-1360 |
| HFR1-05-9100 |  | Material Delivery for Wall Finishes | 6d | 2026-02-01 | 2026-02-07 | HFR1-05-5720 | QA/QC Engineer [48 h]; PRO-SHORT-CIVIL [1] | 21,400 | CON-LEG101-PR-3180 | HAS3-8190 | E3780 | 0.00245815896638331 | 0.245815896638331 | MKH2-02-002-PR-1400 |
|  | 10 | **Ceiling Finishes** |  | 2026-01-28 | 2026-06-16 |  |  |  |  |  |  |  |  |  |
| HFR1-05-4210 |  | PO for Ceiling Finishes | 8d | 2026-01-28 | 2026-02-05 | HFR1-05-8400 | Purchaser [32 h] |  | CON-LEG101-PR-3160 | HAS3-1470 | E3720 | 0 | 0 | MKH2-02-002-PR-1320 |
| HFR1-05-5730 |  | Material Fabrication for Ceiling Finishes | 45d | 2026-02-25 | 2026-04-21 | HFR1-05-4210 FS+15d, HFR1-05-9170, HFR1-05-9090, HFR1-05-9140 | QA/QC Engineer [128 h] |  | CON-LEG101-PR-3170 | HAS3-2970 | E3750 | 0 | 0 | MKH2-02-002-PR-1360 |
| HFR1-05-9370 |  | Material Delivery for Ceiling Finishes | 45d | 2026-04-22 | 2026-06-16 | HFR1-05-5730 | QA/QC Engineer [48 h]; PRO-SHORT-CIVIL [1] | 21,400 | CON-LEG101-PR-3180 | HAS3-9460 | E3780 | 0.00245815896638331 | 0.245815896638331 | MKH2-02-002-PR-1400 |
|  | 12 | **Signages** |  | 2026-01-28 | 2026-06-16 |  |  |  |  |  |  |  |  |  |
| HFR1-05-4260 |  | PO for Signages | 8d | 2026-01-28 | 2026-02-05 | HFR1-05-8370 | Purchaser [32 h] |  | CON-LEG101-PR-3160 | HAS3-1480 | E3720 | 0 | 0 | MKH2-02-002-PR-1320 |
| HFR1-05-5740 |  | Material Fabrication for Signages | 45d | 2026-02-25 | 2026-04-21 | HFR1-05-9100, HFR1-05-4260 FS+15d | QA/QC Engineer [128 h] |  | CON-LEG101-PR-3170 | HAS3-2980 | E3750 | 0 | 0 | MKH2-02-002-PR-1360 |
| HFR1-05-9380 |  | Material Delivery for Signages | 45d | 2026-04-22 | 2026-06-16 | HFR1-05-5740, HFR1-05-8980, HFR1-05-8970 | QA/QC Engineer [48 h]; PRO-SHORT-CIVIL [1] | 21,400 | CON-LEG101-PR-3180 | HAS3-9470 | E3780 | 0.00245815896638331 | 0.245815896638331 | MKH2-02-002-PR-1400 |
|  | 13 | **Logo** |  | 2026-01-28 | 2026-06-16 |  |  |  |  |  |  |  |  |  |
| HFR1-05-4330 |  | PO for Logo | 8d | 2026-01-28 | 2026-02-05 | HFR1-05-8440 | Purchaser [32 h] |  | CON-LEG101-PR-3160 | HAS3-1490 | E3720 | 0 | 0 | MKH2-02-002-PR-1320 |
| HFR1-05-5750 |  | Material Fabrication for Logo | 45d | 2026-02-25 | 2026-04-21 | HFR1-05-3850, HFR1-05-4330 FS+15d | QA/QC Engineer [128 h] |  | CON-LEG101-PR-3170 | HAS3-2990 | E3750 | 0 | 0 | MKH2-02-002-PR-1360 |
| HFR1-05-9390 |  | Material Delivery for Logo | 45d | 2026-04-22 | 2026-06-16 | HFR1-05-5750 | QA/QC Engineer [48 h]; PRO-SHORT-CIVIL [1] | 21,400 | CON-LEG101-PR-3180 | HAS3-9480 | E3780 | 0.00245815896638331 | 0.245815896638331 | MKH2-02-002-PR-1400 |
|  | 15 | **Steel Fence** |  | 2026-01-28 | 2026-06-11 |  |  |  |  |  |  |  |  |  |
| HFR1-05-4370 |  | PO for Steel Fence | 8d | 2026-01-28 | 2026-02-05 | HFR1-05-8420 | Purchaser [32 h] |  | CON-LEG101-PR-3160 | HAS3-1500 | E3720 | 0 | 0 | MKH2-02-002-PR-1320 |
| HFR1-05-5770 |  | Material Fabrication for Steel Fence | 25d | 2026-04-12 | 2026-05-10 | HFR1-05-4370 FS+51d, HFR1-05-8980, HFR1-05-8970 | QA/QC Engineer [128 h] |  | CON-LEG101-PR-3170 | HAS3-3000 | E3750 | 0 | 0 | MKH2-02-002-PR-1360 |
| HFR1-05-9190 |  | Material Delivery for Steel Fence | 25d | 2026-05-11 | 2026-06-11 | HFR1-05-5770 | QA/QC Engineer [48 h]; PRO-SHORT-CIVIL [1] | 21,400 | CON-LEG101-PR-3180 | HAS3-8640 | E3780 | 0.00245815896638331 | 0.245815896638331 | MKH2-02-002-PR-1400 |
|  | 16 | **Gates** |  | 2026-01-28 | 2026-07-12 |  |  |  |  |  |  |  |  |  |
| HFR1-05-4410 |  | PO for Gates | 8d | 2026-01-28 | 2026-02-05 | HFR1-05-8430 | Purchaser [32 h] |  | CON-LEG101-PR-3160 | HAS3-1510 | E3720 | 0 | 0 | MKH2-02-002-PR-1320 |
| HFR1-05-5780 |  | Material Fabrication for Gates | 42d | 2026-04-11 | 2026-06-01 | HFR1-05-4410 FS+50d | QA/QC Engineer [128 h] |  | CON-LEG101-PR-3170 | HAS3-3010 | E3750 | 0 | 0 | MKH2-02-002-PR-1360 |
| HFR1-05-9310 |  | Material Delivery for Gates | 35d | 2026-06-02 | 2026-07-12 | HFR1-05-5780 | QA/QC Engineer [48 h]; PRO-SHORT-CIVIL [1] | 21,400 | CON-LEG101-PR-3180 | HAS3-9270 | E3780 | 0.00245815896638331 | 0.245815896638331 | MKH2-02-002-PR-1400 |

| ID | WBS | Activity | Duration | Start | Finish | Predecessors | Resources | Cost | Old Activity ID | Old Activity ID-Alhasa | Mapping Sheet Activity ID | Total Weight % | Weight 1 | USERTEXT |
| --- | --- | --- | --- | --- | --- | --- | --- | --- | --- | --- | --- | --- | --- | --- |
|  | 17 | **Pump Shed** |  | 2026-01-28 | 2026-06-17 |  |  |  |  |  |  |  |  |  |
| HFR1-05-4450 |  | PO for GatesPump Shed | 8d | 2026-01-28 | 2026-02-05 | HFR1-05-8450 | Purchaser [32 h] |  | CON-LEG101-PR-3160 | HAS3-1520 | E3720 | 0 | 0 | MKH2-02-002-PR-1320 |
| HFR1-05-5790 |  | Material Fabrication for Gates Pump Shed | 30d | 2026-04-12 | 2026-05-16 | HFR1-05-4450 FS+51d | QA/QC Engineer [128 h] |  | CON-LEG101-PR-3170 | HAS3-3020 | E3750 | 0 | 0 | MKH2-02-002-PR-1360 |
| HFR1-05-9200 |  | Material Delivery for Gates Pump Shed | 25d | 2026-05-17 | 2026-06-17 | HFR1-05-5790 | QA/QC Engineer [48 h]; PRO-SHORT-CIVIL [1] | 21,400 | CON-LEG101-PR-3180 | HAS3-8650 | E3780 | 0.245815896638331 | 0.00245815896638331 | MKH2-02-002-PR-1400 |
|  | 5 | **Mechanical - Buildings** |  | 2026-01-28 | 2026-06-14 |  |  |  |  |  |  |  |  |  |
|  | 1 | **HDPE Pipes** |  | 2026-01-28 | 2026-03-07 |  |  |  |  |  |  |  |  |  |
| HFR1-05-4490 |  | PO for HDPE Pipes | 8d | 2026-01-28 | 2026-02-05 | HFR1-05-7020 | Purchaser [32 h] |  | CON-LEG101-PR-3160 | HAS3-1530 | E3720 | 0 | 0 | MKH2-02-002-PR-1320 |
| HFR1-05-5800 |  | Material Fabrication for HDPE Pipes | 12d | 2026-02-07 | 2026-02-19 | HFR1-05-4490 | QA/QC Engineer [128 h] |  | CON-LEG101-PR-3170 | HAS3-3030 | E3750 | 0 | 0 | MKH2-02-002-PR-1360 |
| HFR1-05-9150 |  | Material Delivery for HDPE Pipes | 12d | 2026-02-21 | 2026-03-07 | HFR1-05-5800 | QA/QC Engineer [48 h]; Eng+Pro+Tc [450]; PRO-SHORT-elct & mec [1] | 22,085 | CON-LEG101-PR-3180 | HAS3-8490 | E3780 | 0.245815896638331 | 0.00245815896638331 | MKH2-02-002-PR-1400 |
|  | 4 | **GRP pipes** |  | 2026-01-28 | 2026-02-28 |  |  |  |  |  |  |  |  |  |
| HFR1-05-4580 |  | PO for GRP pipes | 8d | 2026-01-28 | 2026-02-05 | HFR1-05-7990, HFR1-05-8010 | Purchaser [32 h] |  | CON-LEG101-PR-3160 | HAS3-1540 | E3720 | 0 | 0 | MKH2-02-002-PR-1320 |
| HFR1-05-5810 |  | Material Fabrication for GRP pipes | 12d | 2026-02-07 | 2026-02-19 | HFR1-05-4580 | QA/QC Engineer [128 h] |  | CON-LEG101-PR-3170 | HAS3-3040 | E3750 | 0 | 0 | MKH2-02-002-PR-1360 |
| HFR1-05-9210 |  | Material Delivery for GRP pipes | 6d | 2026-02-21 | 2026-02-28 | HFR1-05-5810 | QA/QC Engineer [48 h]; Eng+Pro+Tc [400]; PRO-SHORT-elct & mec [1] | 22,085 | CON-LEG101-PR-3180 | HAS3-8660 | E3780 | 0.245815896638331 | 0.00245815896638331 | MKH2-02-002-PR-1400 |
|  | 5 | **Manholes** |  | 2026-01-28 | 2026-02-28 |  |  |  |  |  |  |  |  |  |
| HFR1-05-4610 |  | PO for Manholes | 8d | 2026-01-28 | 2026-02-05 | HFR1-05-8020 | Purchaser [32 h] |  | CON-LEG101-PR-3160 | HAS3-1550 | E3720 | 0 | 0 | MKH2-02-002-PR-1320 |
| HFR1-05-5820 |  | Material Fabrication for Manholes | 12d | 2026-02-07 | 2026-02-19 | HFR1-05-4610 | QA/QC Engineer [128 h] |  | CON-LEG101-PR-3170 | HAS3-3050 | E3750 | 0 | 0 | MKH2-02-002-PR-1360 |
| HFR1-05-9220 |  | Material Delivery for Manholes | 6d | 2026-02-21 | 2026-02-28 | HFR1-05-5820 | QA/QC Engineer [48 h]; Eng+Pro+Tc [400]; PRO-SHORT-elct & mec [1] | 22,085 | CON-LEG101-PR-3180 | HAS3-8670 | E3780 | 0.245815896638331 | 0.00245815896638331 | MKH2-02-002-PR-1400 |
|  | 7 | **Water Supply System** |  | 2026-01-28 | 2026-02-28 |  |  |  |  |  |  |  |  |  |
| HFR1-05-4640 |  | PO for Water Supply System | 8d | 2026-01-28 | 2026-02-05 | HFR1-05-8070 | Purchaser [32 h] |  | CON-LEG101-PR-3160 | HAS3-1560 | E3720 | 0 | 0 | MKH2-02-002-PR-1320 |
| HFR1-05-5830 |  | Material Fabrication for Water Supply System | 12d | 2026-02-07 | 2026-02-19 | HFR1-05-4640 | QA/QC Engineer [128 h] |  | CON-LEG101-PR-3170 | HAS3-3060 | E3750 | 0 | 0 | MKH2-02-002-PR-1360 |
| HFR1-05-9230 |  | Material Delivery for Water Supply System | 6d | 2026-02-21 | 2026-02-28 | HFR1-05-5830 | QA/QC Engineer [48 h]; Eng+Pro+Tc [350]; PRO-SHORT-elct & mec [1] | 22,085 | CON-LEG101-PR-3180 | HAS3-8680 | E3780 | 0.245815896638331 | 0.00245815896638331 | MKH2-02-002-PR-1400 |
|  | 8 | **Upvc Pipes** |  | 2026-01-28 | 2026-02-28 |  |  |  |  |  |  |  |  |  |
| HFR1-05-4710 |  | PO for Upvc Pipes | 8d | 2026-01-28 | 2026-02-05 | HFR1-05-8040 | Purchaser [32 h] |  | CON-LEG101-PR-3160 | HAS3-1570 | E3720 | 0 | 0 | MKH2-02-002-PR-1320 |
| HFR1-05-5840 |  | Material Fabrication for Upvc Pipes | 12d | 2026-02-07 | 2026-02-19 | HFR1-05-4710 | QA/QC Engineer [128 h] |  | CON-LEG101-PR-3170 | HAS3-3070 | E3750 | 0 | 0 | MKH2-02-002-PR-1360 |
| HFR1-05-9240 |  | Material Delivery for Upvc Pipes | 6d | 2026-02-21 | 2026-02-28 | HFR1-05-5840 | QA/QC Engineer [48 h]; Eng+Pro+Tc [350]; PRO-SHORT-elct & mec [1] | 22,085 | CON-LEG101-PR-3180 | HAS3-8690 | E3780 | 0.245815896638331 | 0.00245815896638331 | MKH2-02-002-PR-1400 |

| ID | WBS | Activity | Duration | Start | Finish | Predecessors | Resources | Cost | Old Activity ID-Alhasa | Old Activity ID | Mapping Sheet Activity ID | Weight 1 | Total Weight % | USERTEXT |
| --- | --- | --- | --- | --- | --- | --- | --- | --- | --- | --- | --- | --- | --- | --- |
|  | 9 | **Roof Vent Caps** |  | 2026-01-28 | 2026-06-14 |  |  |  |  |  |  |  |  |  |
| HFR1-05-4730 |  | PO for Roof Vent Caps | 8d | 2026-01-28 | 2026-02-05 | HFR1-05-8080 | Purchaser [32 h] |  | HAS3-1580 | CON-LEG101-PR-3160 | E3720 | 0 | 0 | MKH2-02-002-PR-1320 |
| HFR1-05-5850 |  | Material Fabrication for Roof Vent Caps | 27d | 2026-04-11 | 2026-05-11 | HFR1-05-4730 FS+50d | QA/QC Engineer [128 h] |  | HAS3-3080 | CON-LEG101-PR-3170 | E3750 | 0 | 0 | MKH2-02-002-PR-1360 |
| HFR1-05-8900 |  | Material Delivery for Roof Vent Caps | 26d | 2026-05-12 | 2026-06-14 | HFR1-05-5850 | QA/QC Engineer [48 h]; Eng+Pro+Tc [260]; PRO-SHORT-elct & mec [1] | 22,085 | HAS3-7400 | CON-LEG101-PR-3180 | E3780 | 0.00245815896638331 | 0.245815896638331 | MKH2-02-002-PR-1400 |
|  | 10 | **Floor Drains** |  | 2026-01-28 | 2026-06-13 |  |  |  |  |  |  |  |  |  |
| HFR1-05-4740 |  | PO for Floor Drains | 8d | 2026-01-28 | 2026-02-05 | HFR1-05-8090 | Purchaser [32 h] |  | HAS3-1590 | CON-LEG101-PR-3160 | E3720 | 0 | 0 | MKH2-02-002-PR-1320 |
| HFR1-05-5860 |  | Material Fabrication for Floor Drains | 27d | 2026-03-30 | 2026-04-29 | HFR1-05-4740 FS+40d, HFR1-05-9150 | QA/QC Engineer [128 h] |  | HAS3-3090 | CON-LEG101-PR-3170 | E3750 | 0 | 0 | MKH2-02-002-PR-1360 |
| HFR1-05-8910 |  | Material Delivery for Floor Drains | 35d | 2026-04-30 | 2026-06-13 | HFR1-05-5860 | QA/QC Engineer [48 h]; Eng+Pro+Tc [350]; PRO-SHORT-elct & mec [1] | 22,085 | HAS3-7410 | CON-LEG101-PR-3180 | E3780 | 0.00245815896638331 | 0.245815896638331 | MKH2-02-002-PR-1400 |
|  | 6 | **Electrical - Buildings** |  | 2026-01-21 | 2026-07-09 |  |  |  |  |  |  |  |  |  |
|  | 2 | **Telecome Manholes & Handholes** |  | 2026-01-28 | 2026-03-05 |  |  |  |  |  |  |  |  |  |
| HFR1-05-4750 |  | PO for Telecome Manholes & Handholes | 8d | 2026-01-28 | 2026-02-05 | HFR1-05-7140 | Purchaser [32 h] |  | HAS3-1600 | CON-LEG101-PR-3160 | E3720 | 0 | 0 | MKH2-02-002-PR-1320 |
| HFR1-05-5870 |  | Material Fabrication for Telecome Manholes & Handholes | 15d | 2026-02-07 | 2026-02-24 | HFR1-05-4750 | QA/QC Engineer [128 h] |  | HAS3-3100 | CON-LEG101-PR-3170 | E3750 | 0 | 0 | MKH2-02-002-PR-1360 |
| HFR1-05-9000 |  | Material Delivery for Telecome Manholes & Handholes | 8d | 2026-02-25 | 2026-03-05 | HFR1-05-5870 | QA/QC Engineer [48 h]; Eng+Pro+Tc [340]; PRO-SHORT-elct & mec [1] | 22,085 | HAS3-7860 | CON-LEG101-PR-3180 | E3780 | 0.00245815896638331 | 0.245815896638331 | MKH2-02-002-PR-1400 |
|  | 1 | **Electrical manholes** |  | 2026-01-28 | 2026-03-07 |  |  |  |  |  |  |  |  |  |
| HFR1-05-4760 |  | PO for Electrical manholes | 8d | 2026-01-28 | 2026-02-05 | HFR1-05-8100 | Purchaser [32 h] |  | HAS3-1610 | CON-LEG101-PR-3160 | E3720 | 0 | 0 | MKH2-02-002-PR-1320 |
| HFR1-05-5880 |  | Material Fabrication for Electrical manholes | 15d | 2026-02-07 | 2026-02-24 | HFR1-05-4760 | QA/QC Engineer [128 h] |  | HAS3-3110 | CON-LEG101-PR-3170 | E3750 | 0 | 0 | MKH2-02-002-PR-1360 |
| HFR1-05-9250 |  | Material Delivery for Electrical manholes | 9d | 2026-02-25 | 2026-03-07 | HFR1-05-5880 | QA/QC Engineer [48 h]; Eng+Pro+Tc [350]; PRO-SHORT-elct & mec [1] | 22,085 | HAS3-8700 | CON-LEG101-PR-3180 | E3780 | 0.00245815896638331 | 0.245815896638331 | MKH2-02-002-PR-1400 |
|  | 3 | **Street Lighting Manholes** |  | 2026-01-28 | 2026-03-05 |  |  |  |  |  |  |  |  |  |
| HFR1-05-4770 |  | PO for Street Lighting Manholes | 8d | 2026-01-28 | 2026-02-05 | HFR1-05-8110 | Purchaser [32 h] |  | HAS3-1620 | CON-LEG101-PR-3160 | E3720 | 0 | 0 | MKH2-02-002-PR-1320 |
| HFR1-05-5890 |  | Material Fabrication for Street Lighting Manholes | 15d | 2026-02-07 | 2026-02-24 | HFR1-05-4770 | QA/QC Engineer [128 h] |  | HAS3-3120 | CON-LEG101-PR-3170 | E3750 | 0 | 0 | MKH2-02-002-PR-1360 |
| HFR1-05-9260 |  | Material Delivery for Street Lighting Manholes | 8d | 2026-02-25 | 2026-03-05 | HFR1-05-5890 | QA/QC Engineer [48 h]; Eng+Pro+Tc [440]; PRO-SHORT-elct & mec [1] | 22,085 | HAS3-8710 | CON-LEG101-PR-3180 | E3780 | 0.00245815896638331 | 0.245815896638331 | MKH2-02-002-PR-1400 |
|  | 4 | **Duct Banks** |  | 2026-01-28 | 2026-03-07 |  |  |  |  |  |  |  |  |  |
| HFR1-05-4780 |  | PO for Duct Banks | 8d | 2026-01-28 | 2026-02-05 | HFR1-05-8120 | Purchaser [32 h] |  | HAS3-1630 | CON-LEG101-PR-3160 | E3720 | 0 | 0 | MKH2-02-002-PR-1320 |
| HFR1-05-5900 |  | Material Fabrication for Duct Banks | 15d | 2026-02-07 | 2026-02-24 | HFR1-05-4780 | QA/QC Engineer [128 h] |  | HAS3-3130 | CON-LEG101-PR-3170 | E3750 | 0 | 0 | MKH2-02-002-PR-1360 |
| HFR1-05-9340 |  | Material Delivery for Duct Banks | 9d | 2026-02-25 | 2026-03-07 | HFR1-05-5900 | QA/QC Engineer [48 h]; Eng+Pro+Tc [520]; PRO-SHORT-elct & mec [1] | 22,085 | HAS3-9320 | CON-LEG101-PR-3180 | E3780 | 0.00245815896638331 | 0.245815896638331 | MKH2-02-002-PR-1400 |

| ID | WBS | Activity | Duration | Start | Finish | Predecessors | Resources | Cost | Old Activity ID-Alhasa | Old Activity ID | Mapping Sheet Activity ID | Weight 1 | Total Weight % | USERTEXT |
| --- | --- | --- | --- | --- | --- | --- | --- | --- | --- | --- | --- | --- | --- | --- |
|  | 16 | **Telecom & Data System** |  | 2026-01-28 | 2026-07-09 |  |  |  |  |  |  |  |  |  |
| HFR1-05-4790 |  | PO for Telecom & Data System | 8d | 2026-01-28 | 2026-02-05 | HFR1-05-8230 | Purchaser [32 h] |  | HAS3-1640 | CON-LEG101-PR-3160 | E3720 | 0 | 0 | MKH2-02-002-PR-1320 |
| HFR1-05-5910 |  | Material Fabrication for Telecom & Data System | 45d | 2026-04-05 | 2026-05-30 | HFR1-05-4790 FS+45d, HFR1-05-9260 | QA/QC Engineer [128 h] |  | HAS3-3140 | CON-LEG101-PR-3170 | E3750 | 0 | 0 | MKH2-02-002-PR-1360 |
| HFR1-05-9400 |  | Material Delivery for Telecom & Data System | 35d | 2026-05-31 | 2026-07-09 | HFR1-05-5910 | QA/QC Engineer [48 h]; Eng+Pro+Tc [350]; PRO-SHORT-elct & mec [1] | 22,085 | HAS3-9490 | CON-LEG101-PR-3180 | E3780 | 0.00245815896638331 | 0.245815896638331 | MKH2-02-002-PR-1400 |
|  | 17 | **Grounding System** |  | 2026-01-21 | 2026-02-10 |  |  |  |  |  |  |  |  |  |
| HFR1-05-4800 |  | PO for Grounding System | 4d | 2026-01-21 | 2026-01-25 | HFR1-05-8290 SS | Purchaser [32 h] |  | HAS3-1650 | CON-LEG101-PR-3160 | E3720 | 0 | 0 | MKH2-02-002-PR-1320 |
| HFR1-05-5920 |  | Material Fabrication for Grounding System | 7d | 2026-01-26 | 2026-02-02 | HFR1-05-4800 | QA/QC Engineer [128 h] |  | HAS3-3150 | CON-LEG101-PR-3170 | E3750 | 0 | 0 | MKH2-02-002-PR-1360 |
| HFR1-05-9010 |  | Material Delivery for Grounding System | 7d | 2026-02-03 | 2026-02-10 | HFR1-05-5920 | QA/QC Engineer [48 h]; PRO-SHORT-elct & mec [1] | 22,085 | HAS3-7870 | CON-LEG101-PR-3180 | E3780 | 0.00245815896638331 | 0.245815896638331 | MKH2-02-002-PR-1400 |
|  | 1 | **Long Lead Item** |  | 2026-01-28 | 2026-07-18 |  |  |  |  |  |  |  |  |  |
|  | 7 | **Civil Works - Buildings** |  | 2026-01-28 | 2026-06-30 |  |  |  |  |  |  |  |  |  |
|  | 4 | **Steel Structure** |  | 2026-01-28 | 2026-04-13 |  |  |  |  |  |  |  |  |  |
| HFR1-05-1000 |  | PO for Steel Structure | 8d | 2026-01-28 | 2026-02-05 | HFR1-05-8320 | Purchaser [250 h] |  | 1 | CON-LEG101-PR-3160 | E3720 | 0 | 0 | MKH2-02-002-PR-1320 |
| HFR1-05-1240 |  | Material Fabrication for Steel Structure | 23d | 2026-02-07 | 2026-03-05 | HFR1-05-1000 | QA/QC Engineer [520 h] |  | 2 | CON-LEG101-PR-3170 | E3750 | 0 | 0 | MKH2-02-002-PR-1360 |
| HFR1-05-1300 |  | Material Delivery for Steel Structure | 22d | 2026-03-07 | 2026-04-04 | HFR1-05-9010, HFR1-05-1240, HFR1-05-9240, HFR1-05-9230, HFR1-05-9220, HFR1-05-9210 | QA/QC Engineer [520 h]; Eng+Pro+Tc [150]; PRO-LONG-CIVIL [1] | 105,330 | 3 | CON-LEG101-PR-3180 | E3780 | 0.00245815896638331 | 0.245815896638331 | MKH2-02-002-PR-1400 |
| HFR1-05-1580 |  | Staging Time For Steel Structure | 8d | 2026-04-05 | 2026-04-13 | HFR1-05-9340, HFR1-05-9260, HFR1-05-9250, HFR1-05-9000, HFR1-05-9240, HFR1-05-9230, HFR1-05-9220, HFR1-05-9210, HFR1-05-9150, HFR1-05-1300 |  |  | 4 |  |  |  |  |  |
|  | 7 | **Doors & Windows** |  | 2026-01-28 | 2026-06-15 |  |  |  |  |  |  |  |  |  |
| HFR1-05-2370 |  | PO for Doors & Windows | 8d | 2026-01-28 | 2026-02-05 | HFR1-05-8380 | Purchaser [100 h] |  | D1 | CON-LEG101-PR-3160 | E3720 | 0 | 0 | MKH2-02-002-PR-1320 |
| HFR1-05-2380 |  | Material Fabrication for Doors & Windows | 52d | 2026-02-07 | 2026-04-12 | HFR1-05-2370 | QA/QC Engineer [500 h] |  | D2 | CON-LEG101-PR-3170 | E3750 | 0 | 0 | MKH2-02-002-PR-1360 |
| HFR1-05-2960 |  | Material Delivery for Doors & Windows | 45d | 2026-04-13 | 2026-06-07 | HFR1-05-2380 | QA/QC Engineer [780 h]; Eng+Pro+Tc [450]; PRO-LONG-CIVIL [1] | 105,330 | HAS3-10140 | CON-LEG101-PR-3180 | E3780 | 0.00245815896638331 | 0.245815896638331 | MKH2-02-002-PR-1400 |
| HFR1-05-3180 |  | Staging Time For Doors & Windows | 7d | 2026-06-08 | 2026-06-15 | HFR1-05-2960 |  |  | HAS3-11860 |  |  |  |  |  |
|  | 11 | **Fittings** |  | 2026-01-28 | 2026-06-30 |  |  |  |  |  |  |  |  |  |
| HFR1-05-2390 |  | PO for Fittings | 8d | 2026-01-28 | 2026-02-05 | HFR1-05-8360 | Purchaser [200 h] |  | F1 | CON-LEG101-PR-3160 | E3720 | 0 | 0 | MKH2-02-002-PR-1320 |
| HFR1-05-2400 |  | Material Fabrication for Fittings | 54d | 2026-02-07 | 2026-04-14 | HFR1-05-2390 | QA/QC Engineer [200 h] |  | F2 | CON-LEG101-PR-3170 | E3750 | 0 | 0 | MKH2-02-002-PR-1360 |
| HFR1-05-2410 |  | Material Delivery for Fittings | 56d | 2026-04-15 | 2026-06-22 | HFR1-05-2400 | QA/QC Engineer [200 h]; Eng+Pro+Tc [560]; PRO-LONG-CIVIL [1] | 105,330 | F3 | CON-LEG101-PR-3180 | E3780 | 0.00245815896638331 | 0.245815896638331 | MKH2-02-002-PR-1400 |
| HFR1-05-2420 |  | Staging Time For Fittings | 7d | 2026-06-23 | 2026-06-30 | HFR1-05-2410 |  |  | F4 |  |  |  |  |  |

| ID | WBS | Activity | Duration | Start | Finish | Predecessors | Resources | Cost | Old Activity ID-Alhasa | Old Activity ID | Mapping Sheet Activity ID | Total Weight % | Weight 1 | USERTEXT |
| --- | --- | --- | --- | --- | --- | --- | --- | --- | --- | --- | --- | --- | --- | --- |
|  | 14 | **Pre Engineered Structures** |  | 2026-01-28 | 2026-03-28 |  |  |  |  |  |  |  |  |  |
| HFR1-05-9770 |  | PO for Pre Engineered Structures | 8d | 2026-01-28 | 2026-02-05 | HFR1-05-8410 | Purchaser [200 h] |  | P1 | CON-LEG101-PR-3160 | E3720 | 0 | 0 | MKH2-02-002-PR-1320 |
| HFR1-05-9780 |  | Material Fabrication for Pre Engineered Structures | 17d | 2026-02-07 | 2026-02-26 | HFR1-05-9770 | QA/QC Engineer [200 h] |  | P2 | CON-LEG101-PR-3170 | E3750 | 0 | 0 | MKH2-02-002-PR-1360 |
| HFR1-05-9790 |  | Material Delivery for Pre Engineered Structures | 15d | 2026-02-28 | 2026-03-16 | HFR1-05-9780 | QA/QC Engineer [200 h]; Eng+Pro+Tc [150]; PRO-LONG-CIVIL [1] | 105,330 | P4 | CON-LEG101-PR-3180 | E3780 | 0.245815896638331 | 0.00245815896638331 | MKH2-02-002-PR-1400 |
| HFR1-05-9800 |  | Staging Time For Pre Engineered Structures | 7d | 2026-03-17 | 2026-03-28 | HFR1-05-9790 |  |  | P5 |  |  |  |  |  |
|  | 5 | **Mechanical - Buildings** |  | 2026-01-28 | 2026-07-11 |  |  |  |  |  |  |  |  |  |
|  | 2 | **Fire Fighting System** |  | 2026-01-28 | 2026-06-18 |  |  |  |  |  |  |  |  |  |
| HFR1-05-4810 |  | PO for Fire Fighting System | 8d | 2026-01-28 | 2026-02-05 | HFR1-05-7020 | Purchaser [500 h] |  | HAS3-1700 | CON-LEG101-PR-3160 | E3720 | 0 | 0 | MKH2-02-002-PR-1320 |
| HFR1-05-5930 |  | Material Fabrication for Fire Fighting System | 45d | 2026-02-18 | 2026-04-15 | HFR1-05-4810 FS+10d | QA/QC Engineer [500 h] |  | HAS3-3200 | CON-LEG101-PR-3170 | E3750 | 0 | 0 | MKH2-02-002-PR-1360 |
| HFR1-05-9120 |  | Material Delivery for Fire Fighting System | 45d | 2026-04-16 | 2026-06-10 | HFR1-05-5930 | QA/QC Engineer [48 h]; Eng+Pro+Tc [360]; PRO-LONG-MECH [1] | 102,220 | HAS3-8220 | CON-LEG101-PR-3180 | E3780 | 0.245815896638331 | 0.00245815896638331 | MKH2-02-002-PR-1400 |
| HFR1-05-9890 |  | Staging Time For Fire Fighting System | 7d | 2026-06-11 | 2026-06-18 | HFR1-05-9120, HFR1-05-3390 |  |  | S4 |  |  |  |  |  |
|  | 3 | **Valves** |  | 2026-01-28 | 2026-06-16 |  |  |  |  |  |  |  |  |  |
| HFR1-05-9550 |  | PO for Valves | 8d | 2026-01-28 | 2026-02-05 | HFR1-05-8000 | Purchaser [32 h] |  | K1 | CON-LEG101-PR-3160 | E3720 | 0 | 0 | MKH2-02-002-PR-1320 |
| HFR1-05-9560 |  | Material Fabrication for Valves | 37d | 2026-03-09 | 2026-04-23 | HFR1-05-9550 FS+25d | QA/QC Engineer [128 h] |  | K2 | CON-LEG101-PR-3170 | E3750 | 0 | 0 | MKH2-02-002-PR-1360 |
| HFR1-05-9570 |  | Material Delivery for Valves | 35d | 2026-04-25 | 2026-06-07 | HFR1-05-9560 | QA/QC Engineer [48 h]; Eng+Pro+Tc [350]; PRO-LONG-MECH [1] | 102,220 | K3 | CON-LEG101-PR-3180 | E3780 | 0.245815896638331 | 0.00245815896638331 | MKH2-02-002-PR-1400 |
| HFR1-05-9580 |  | Staging Time For Valves | 8d | 2026-06-08 | 2026-06-16 | HFR1-05-9570, HFR1-05-3390 |  |  | K4 |  |  |  |  |  |
|  | 6 | **Fire Protectional System** |  | 2026-01-28 | 2026-06-23 |  |  |  |  |  |  |  |  |  |
| HFR1-05-9510 |  | PO for Fire Protectional System | 8d | 2026-01-28 | 2026-02-05 | HFR1-05-8030 | Purchaser [32 h] |  | J1 | CON-LEG101-PR-3160 | E3720 | 0 | 0 | MKH2-02-002-PR-1320 |
| HFR1-05-9520 |  | Material Fabrication for Fire Protectional System | 34d | 2026-03-09 | 2026-04-20 | HFR1-05-9510 FS+25d | QA/QC Engineer [128 h] |  | J2 | CON-LEG101-PR-3170 | E3750 | 0 | 0 | MKH2-02-002-PR-1360 |
| HFR1-05-9530 |  | Material Delivery for Fire Protectional System | 45d | 2026-04-21 | 2026-06-15 | HFR1-05-9520 | QA/QC Engineer [48 h]; Eng+Pro+Tc [450]; PRO-LONG-MECH [1] | 102,220 | J3 | CON-LEG101-PR-3180 | E3780 | 0.245815896638331 | 0.00245815896638331 | MKH2-02-002-PR-1400 |
| HFR1-05-9540 |  | Staging Time For Fire Protectional System | 7d | 2026-06-16 | 2026-06-23 | HFR1-05-9530 |  |  | J4 |  |  |  |  |  |
|  | 11 | **Electric Water Heater** |  | 2026-01-28 | 2026-07-06 |  |  |  |  |  |  |  |  |  |
| HFR1-05-9620 |  | PO for Electric Water Heater | 8d | 2026-01-28 | 2026-02-05 | HFR1-05-8050 | Purchaser [32 h] |  | M1 | CON-LEG101-PR-3160 | E3720 | 0 | 0 | MKH2-02-002-PR-1320 |
| HFR1-05-9630 |  | Material Fabrication for Electric Water Heater | 45d | 2026-03-09 | 2026-05-03 | HFR1-05-9620 FS+25d, HFR1-05-9340, HFR1-05-9260, HFR1-05-9250, HFR1-05-9000 | QA/QC Engineer [128 h] |  | M2 | CON-LEG101-PR-3170 | E3750 | 0 | 0 | MKH2-02-002-PR-1360 |
| HFR1-05-9640 |  | Material Delivery for Electric Water Heater | 45d | 2026-05-04 | 2026-06-28 | HFR1-05-9630 | QA/QC Engineer [48 h]; Eng+Pro+Tc [450]; PRO-LONG-MECH [1] | 102,220 | M3 | CON-LEG101-PR-3180 | E3780 | 0.245815896638331 | 0.00245815896638331 | MKH2-02-002-PR-1400 |
| HFR1-05-9650 |  | Staging Time For Electric Water Heater | 7d | 2026-06-29 | 2026-07-06 | HFR1-05-9640, HFR1-05-8910, HFR1-05-8900, HFR1-05-9390, HFR1-05-9380, HFR1-05-9370, HFR1-05-9890 |  |  | M4 |  |  |  |  |  |

| ID | WBS | Activity | Duration | Start | Finish | Predecessors | Resources | Cost | Old Activity ID-Alhasa | Old Activity ID | Mapping Sheet Activity ID | Total Weight % | Weight 1 | USERTEXT |
| --- | --- | --- | --- | --- | --- | --- | --- | --- | --- | --- | --- | --- | --- | --- |
|  | 12 | **Heating,Ventilation & Air Conditioning** |  | 2026-01-28 | 2026-07-11 |  |  |  |  |  |  |  |  |  |
| HFR1-05-9940 |  | PO for Heating,Ventilation & Air Conditioning | 8d | 2026-01-28 | 2026-02-05 | HFR1-05-8060 | Purchaser [32 h] |  | X1 | CON-LEG101-PR-3160 | E3720 | 0 | 0 | MKH2-02-002-PR-1320 |
| HFR1-05-9950 |  | Material Fabrication for Heating,Ventilation & Air Conditioning | 52d | 2026-03-17 | 2026-05-19 | HFR1-05-9940 FS+32d | QA/QC Engineer [128 h] |  | X2 | CON-LEG101-PR-3170 | E3750 | 0 | 0 | MKH2-02-002-PR-1360 |
| HFR1-05-9960 |  | Material Delivery for Heating,Ventilation & Air Conditioning | 35d | 2026-05-20 | 2026-07-02 | HFR1-05-9950 | QA/QC Engineer [48 h]; Eng+Pro+Tc [350]; PRO-LONG-MECH [1] | 102,220 | X3 | CON-LEG101-PR-3180 | E3780 | 0.245815896638331 | 0.00245815896638331 | MKH2-02-002-PR-1400 |
| HFR1-05-9970 |  | Staging Time For Heating,Ventilation & Air Conditioning | 7d | 2026-07-04 | 2026-07-11 | HFR1-05-9960, HFR1-05-9540 |  |  | X4 |  |  |  |  |  |
|  | 2 | **Electrical - Buildings** |  | 2026-01-28 | 2026-07-18 |  |  |  |  |  |  |  |  |  |
|  | 5 | **Feeder Pillers** |  | 2026-01-28 | 2026-07-15 |  |  |  |  |  |  |  |  |  |
| HFR1-05-9980 |  | PO for Feeder Pillers | 8d | 2026-01-28 | 2026-02-05 | HFR1-05-8130 | Purchaser [32 h] |  | Z1 | CON-LEG101-PR-3160 | E3720 | 0 | 0 | MKH2-02-002-PR-1320 |
| HFR1-05-9990 |  | Material Fabrication for Feeder Pillers | 46d | 2026-03-09 | 2026-05-04 | HFR1-05-5570, HFR1-05-9980 FS+25d | QA/QC Engineer [128 h] |  | Z2 | CON-LEG101-PR-3170 | E3750 | 0 | 0 | MKH2-02-002-PR-1360 |
| HFR1-05-10000 |  | Material Delivery for Feeder Pillers | 52d | 2026-05-05 | 2026-07-07 | HFR1-05-9990 | QA/QC Engineer [48 h]; Eng+Pro+Tc [520]; PRO-LONG-ELEC [1] | 102,807 | Z3 | CON-LEG101-PR-3180 | E3780 | 0.245815896638331 | 0.00245815896638331 | MKH2-02-002-PR-1400 |
| HFR1-05-10010 |  | Staging Time For Feeder Pillers | 7d | 2026-07-08 | 2026-07-15 | HFR1-05-10000 |  |  | Z4 |  |  |  |  |  |
|  | 6 | **Street Lighting Poles** |  | 2026-01-28 | 2026-07-18 |  |  |  |  |  |  |  |  |  |
| HFR1-05-2330 |  | PO for Street Lighting Poles | 8d | 2026-01-28 | 2026-02-05 | HFR1-05-8140 | Purchaser [32 h] |  | C1 | CON-LEG101-PR-3160 | E3720 | 0 | 0 | MKH2-02-002-PR-1320 |
| HFR1-05-2340 |  | Material Fabrication for Street Lighting Poles | 45d | 2026-03-09 | 2026-05-03 | HFR1-05-2330 FS+25d | QA/QC Engineer [128 h] |  | C2 | CON-LEG101-PR-3170 | E3750 | 0 | 0 | MKH2-02-002-PR-1360 |
| HFR1-05-2350 |  | Material Delivery for Street Lighting Poles | 55d | 2026-05-04 | 2026-07-09 | HFR1-05-2340 | QA/QC Engineer [48 h]; Eng+Pro+Tc [550]; PRO-LONG-ELEC [1] | 102,807 | C3 | CON-LEG101-PR-3180 | E3780 | 0.245815896638331 | 0.00245815896638331 | MKH2-02-002-PR-1400 |
| HFR1-05-2360 |  | Staging Time For Street Lighting Poles | 7d | 2026-07-11 | 2026-07-18 | HFR1-05-2350 |  |  | C4 |  |  |  |  |  |
|  | 7 | **Street Lighting Luminaires** |  | 2026-01-28 | 2026-07-06 |  |  |  |  |  |  |  |  |  |
| HFR1-05-1960 |  | PO for Street Lighting Luminaires | 8d | 2026-01-28 | 2026-02-05 | HFR1-05-8180 | Purchaser [32 h] |  | A1 | CON-LEG101-PR-3160 | E3720 | 0 | 0 | MKH2-02-002-PR-1320 |
| HFR1-05-2250 |  | Material Fabrication for Street Lighting Luminaires | 35d | 2026-03-09 | 2026-04-21 | HFR1-05-1960 FS+25d | QA/QC Engineer [128 h] |  | A2 | CON-LEG101-PR-3170 | E3750 | 0 | 0 | MKH2-02-002-PR-1360 |
| HFR1-05-2260 |  | Material Delivery for Street Lighting Luminaires | 55d | 2026-04-22 | 2026-06-28 | HFR1-05-2250 | QA/QC Engineer [48 h]; Eng+Pro+Tc [550]; PRO-LONG-ELEC [1] | 102,807 | A222 | CON-LEG101-PR-3180 | E3780 | 0.245815896638331 | 0.00245815896638331 | MKH2-02-002-PR-1400 |
| HFR1-05-2270 |  | Staging Time For Street Lighting Luminaires | 7d | 2026-06-29 | 2026-07-06 | HFR1-05-2260 |  |  | A4 |  |  |  |  |  |
|  | 8 | **Low Voltage Cables** |  | 2026-01-28 | 2026-07-06 |  |  |  |  |  |  |  |  |  |
| HFR1-05-9810 |  | PO for Low Voltage Cables | 8d | 2026-01-28 | 2026-02-05 | HFR1-05-8150 | Purchaser [32 h] |  | Q1 | CON-LEG101-PR-3160 | E3720 | 0 | 0 | MKH2-02-002-PR-1320 |
| HFR1-05-9820 |  | Material Fabrication for Low Voltage Cables | 45d | 2026-03-09 | 2026-05-03 | HFR1-05-9810 FS+25d | QA/QC Engineer [128 h] |  | Q2 | CON-LEG101-PR-3170 | E3750 | 0 | 0 | MKH2-02-002-PR-1360 |
| HFR1-05-9830 |  | Material Delivery for Low Voltage Cables | 45d | 2026-05-04 | 2026-06-28 | HFR1-05-9820 | QA/QC Engineer [48 h]; Eng+Pro+Tc [450]; PRO-LONG-ELEC [1] | 102,807 | Q3 | CON-LEG101-PR-3180 | E3780 | 0.245815896638331 | 0.00245815896638331 | MKH2-02-002-PR-1400 |
| HFR1-05-9840 |  | Staging Time For Low Voltage Cables | 7d | 2026-06-29 | 2026-07-06 | HFR1-05-9830 |  |  | Q4 |  |  |  |  |  |

| ID | WBS | Activity | Duration | Start | Finish | Predecessors | Resources | Cost | USERTEXT | Weight 1 | Total Weight % | Mapping Sheet Activity ID | Old Activity ID | Old Activity ID-Alhasa |
| --- | --- | --- | --- | --- | --- | --- | --- | --- | --- | --- | --- | --- | --- | --- |
|  | 9 | **LED Lighting Fixtures** |  | 2026-01-28 | 2026-06-30 |  |  |  |  |  |  |  |  |  |
| HFR1-05-9900 |  | PO for LED Lighting Fixtures | 8d | 2026-01-28 | 2026-02-05 | HFR1-05-8190 | Purchaser [32 h] |  | MKH2-02-002-PR-1320 | 0 | 0 | E3720 | CON-LEG101-PR-3160 | W1 |
| HFR1-05-9910 |  | Material Fabrication for LED Lighting Fixtures | 40d | 2026-03-09 | 2026-04-27 | HFR1-05-9900 FS+25d | QA/QC Engineer [128 h] |  | MKH2-02-002-PR-1360 | 0 | 0 | E3750 | CON-LEG101-PR-3170 | W2 |
| HFR1-05-9920 |  | Material Delivery for LED Lighting Fixtures | 45d | 2026-04-28 | 2026-06-22 | HFR1-05-9910 | QA/QC Engineer [48 h]; Eng+Pro+Tc [450]; PRO-LONG-ELEC [1] | 102,807 | MKH2-02-002-PR-1400 | 0.00245815896638331 | 0.245815896638331 | E3780 | CON-LEG101-PR-3180 | W3 |
| HFR1-05-9930 |  | Staging Time For LED Lighting Fixtures | 7d | 2026-06-23 | 2026-06-30 | HFR1-05-9920 |  |  |  |  |  |  |  | W4 |
|  | 10 | **Power Panel** |  | 2026-01-28 | 2026-07-12 |  |  |  |  |  |  |  |  |  |
| HFR1-05-4820 |  | PO for Power Panel | 8d | 2026-01-28 | 2026-02-05 | HFR1-05-8200 | Purchaser [32 h] |  | MKH2-02-002-PR-1320 | 0 | 0 | E3720 | CON-LEG101-PR-3160 | HAS3-1800 |
| HFR1-05-5940 |  | Material Fabrication for Power Panel | 45d | 2026-03-03 | 2026-04-27 | HFR1-05-4820 FS+20d | QA/QC Engineer [128 h] |  | MKH2-02-002-PR-1360 | 0 | 0 | E3750 | CON-LEG101-PR-3170 | HAS3-3300 |
| HFR1-05-9410 |  | Material Delivery for Power Panel | 55d | 2026-04-28 | 2026-07-04 | HFR1-05-5940 | QA/QC Engineer [48 h]; Eng+Pro+Tc [550]; PRO-LONG-ELEC [1] | 102,807 | MKH2-02-002-PR-1400 | 0.00245815896638331 | 0.245815896638331 | E3780 | CON-LEG101-PR-3180 | HAS3-9540 |
| HFR1-05-9420 |  | Staging Time For Power Panel | 7d | 2026-07-05 | 2026-07-12 | HFR1-05-9410 |  |  |  |  |  |  |  | HAS3-9544 |
|  | 11 | **Control Panels** |  | 2026-01-28 | 2026-06-24 |  |  |  |  |  |  |  |  |  |
| HFR1-05-4830 |  | PO for Control Panels | 8d | 2026-01-28 | 2026-02-05 | HFR1-05-8160 | Purchaser [32 h] |  | MKH2-02-002-PR-1320 | 0 | 0 | E3720 | CON-LEG101-PR-3160 | HAS3-1810 |
| HFR1-05-5950 |  | Material Fabrication for Control Panels | 40d | 2026-03-03 | 2026-04-21 | HFR1-05-4830 FS+20d | QA/QC Engineer [128 h] |  | MKH2-02-002-PR-1360 | 0 | 0 | E3750 | CON-LEG101-PR-3170 | HAS3-3310 |
| HFR1-05-9270 |  | Material Delivery for Control Panels | 45d | 2026-04-22 | 2026-06-16 | HFR1-05-5950 | QA/QC Engineer [48 h]; Eng+Pro+Tc [450]; PRO-LONG-ELEC [1] | 102,807 | MKH2-02-002-PR-1400 | 0.00245815896638331 | 0.245815896638331 | E3780 | CON-LEG101-PR-3180 | HAS3-8730 |
| HFR1-05-9290 |  | Staging Time For Control Panels | 7d | 2026-06-17 | 2026-06-24 | HFR1-05-9270 |  |  |  |  |  |  |  | HAS3-8745 |
|  | 12 | **Isolator & Disconnecting Switches** |  | 2026-01-28 | 2026-07-06 |  |  |  |  |  |  |  |  |  |
| HFR1-05-4840 |  | PO for Isolator & Disconnecting Switches | 8d | 2026-01-28 | 2026-02-05 | HFR1-05-8170 | Purchaser [32 h] |  | MKH2-02-002-PR-1320 | 0 | 0 | E3720 | CON-LEG101-PR-3160 | HAS3-1820 |
| HFR1-05-5960 |  | Material Fabrication for Isolator & Disconnecting Switches | 45d | 2026-03-09 | 2026-05-03 | HFR1-05-4840 FS+25d | QA/QC Engineer [128 h] |  | MKH2-02-002-PR-1360 | 0 | 0 | E3750 | CON-LEG101-PR-3170 | HAS3-3320 |
| HFR1-05-9430 |  | Material Delivery for Isolator & Disconnecting Switches | 45d | 2026-05-04 | 2026-06-28 | HFR1-05-5960 | QA/QC Engineer [48 h]; Eng+Pro+Tc [450]; PRO-LONG-ELEC [1] | 102,807 | MKH2-02-002-PR-1400 | 0.00245815896638331 | 0.245815896638331 | E3780 | CON-LEG101-PR-3180 | HAS3-9550 |
| HFR1-05-9440 |  | Staging Time For Isolator & Disconnecting Switches | 7d | 2026-06-29 | 2026-07-06 | HFR1-05-4600, HFR1-05-9430 |  |  |  |  |  |  |  | HAS3-9555 |
|  | 13 | **Cable Trays** |  | 2026-01-28 | 2026-06-24 |  |  |  |  |  |  |  |  |  |
| HFR1-05-4850 |  | PO for Cable Trays | 8d | 2026-01-28 | 2026-02-05 | HFR1-05-8240 | Purchaser [32 h] |  | MKH2-02-002-PR-1320 | 0 | 0 | E3720 | CON-LEG101-PR-3160 | HAS3-1830 |
| HFR1-05-5970 |  | Material Fabrication for Cable Trays | 45d | 2026-03-09 | 2026-05-03 | HFR1-05-4850 FS+25d | QA/QC Engineer [128 h] |  | MKH2-02-002-PR-1360 | 0 | 0 | E3750 | CON-LEG101-PR-3170 | HAS3-3330 |
| HFR1-05-9450 |  | Material Delivery for Cable Trays | 35d | 2026-05-04 | 2026-06-16 | HFR1-05-5970 | QA/QC Engineer [48 h]; Eng+Pro+Tc [350]; PRO-LONG-ELEC [1] | 102,807 | MKH2-02-002-PR-1400 | 0.00245815896638331 | 0.245815896638331 | E3780 | CON-LEG101-PR-3180 | HAS3-9560 |
| HFR1-05-9460 |  | Staging Time For Cable Trays | 7d | 2026-06-17 | 2026-06-24 | HFR1-05-9450 |  |  |  |  |  |  |  | HAS3-9565 |

| ID | WBS | Activity | Duration | Start | Finish | Predecessors | Resources | Cost | USERTEXT | Total Weight % | Weight 1 | Mapping Sheet Activity ID | Old Activity ID | Old Activity ID-Alhasa |
| --- | --- | --- | --- | --- | --- | --- | --- | --- | --- | --- | --- | --- | --- | --- |
|  | 14 | **KWHM** |  | 2026-01-28 | 2026-05-17 |  |  |  |  |  |  |  |  |  |
| HFR1-05-4860 |  | PO for KWHM | 8d | 2026-01-28 | 2026-02-05 | HFR1-05-8210 | Purchaser [32 h] |  | MKH2-02-002-PR-1320 | 0 | 0 | E3720 | CON-LEG101-PR-3160 | HAS3-1840 |
| HFR1-05-5980 |  | Material Fabrication for KWHM | 25d | 2026-03-09 | 2026-04-09 | HFR1-05-4860 FS+25d | QA/QC Engineer [128 h] |  | MKH2-02-002-PR-1360 | 0 | 0 | E3750 | CON-LEG101-PR-3170 | HAS3-3340 |
| HFR1-05-9470 |  | Material Delivery for KWHM | 25d | 2026-04-11 | 2026-05-09 | HFR1-05-5980, HFR1-05-9800 | QA/QC Engineer [48 h]; Eng+Pro+Tc [420]; PRO-LONG-ELEC [1] | 102,807 | MKH2-02-002-PR-1400 | 0.245815896638331 | 0.00245815896638331 | E3780 | CON-LEG101-PR-3180 | HAS3-9570 |
| HFR1-05-9480 |  | Staging Time For KWHM | 7d | 2026-05-10 | 2026-05-17 | HFR1-05-9470 |  |  |  |  |  |  |  | HAS3-9574 |
|  | 15 | **Safety Disconnect Switches** |  | 2026-01-28 | 2026-06-24 |  |  |  |  |  |  |  |  |  |
| HFR1-05-4870 |  | PO for Safety Disconnect Switches | 8d | 2026-01-28 | 2026-02-05 | HFR1-05-8220 | Purchaser [32 h] |  | MKH2-02-002-PR-1320 | 0 | 0 | E3720 | CON-LEG101-PR-3160 | HAS3-1850 |
| HFR1-05-5990 |  | Material Fabrication for Safety Disconnect Switches | 40d | 2026-03-09 | 2026-04-27 | HFR1-05-4870 FS+25d | QA/QC Engineer [128 h] |  | MKH2-02-002-PR-1360 | 0 | 0 | E3750 | CON-LEG101-PR-3170 | HAS3-3350 |
| HFR1-05-9280 |  | Material Delivery for Safety Disconnect Switches | 40d | 2026-04-28 | 2026-06-16 | HFR1-05-5990 | QA/QC Engineer [48 h]; Eng+Pro+Tc [400]; PRO-LONG-ELEC [1] | 102,807 | MKH2-02-002-PR-1400 | 0.245815896638331 | 0.00245815896638331 | E3780 | CON-LEG101-PR-3180 | HAS3-8740 |
| HFR1-05-9300 |  | Staging Time For Safety Disconnect Switches | 7d | 2026-06-17 | 2026-06-24 | HFR1-05-9280, HFR1-05-9480 |  |  |  |  |  |  |  | HAS3-8746 |
|  | 18 | **Lightning Protection System** |  | 2026-01-28 | 2026-07-04 |  |  |  |  |  |  |  |  |  |
| HFR1-05-4880 |  | PO for Lightning Protection System | 8d | 2026-01-28 | 2026-02-05 | HFR1-05-8280 | Purchaser [32 h] |  | MKH2-02-002-PR-1320 | 0 | 0 | E3720 | CON-LEG101-PR-3160 | HAS3-1860 |
| HFR1-05-6000 |  | Material Fabrication for Lightning Protection System | 44d | 2026-03-09 | 2026-05-02 | HFR1-05-4880 FS+25d | QA/QC Engineer [128 h] |  | MKH2-02-002-PR-1360 | 0 | 0 | E3750 | CON-LEG101-PR-3170 | HAS3-3360 |
| HFR1-05-9350 |  | Material Delivery for Lightning Protection System | 44d | 2026-05-03 | 2026-06-25 | HFR1-05-6000 | QA/QC Engineer [48 h]; Eng+Pro+Tc [440]; PRO-LONG-ELEC [1] | 102,807 | MKH2-02-002-PR-1400 | 0.245815896638331 | 0.00245815896638331 | E3780 | CON-LEG101-PR-3180 | HAS3-9330 |
| HFR1-05-9360 |  | Staging Time For Lightning Protection System | 7d | 2026-06-27 | 2026-07-04 | HFR1-05-9350, HFR1-05-9460, HFR1-05-9290 |  |  |  |  |  |  |  | HAS3-9333 |
|  | 19 | **Fire Alarm System** |  | 2026-01-28 | 2026-07-14 |  |  |  |  |  |  |  |  |  |
| HFR1-05-9850 |  | PO for Fire Alarm System | 8d | 2026-01-28 | 2026-02-05 | HFR1-05-8800 | Purchaser [32 h] |  | MKH2-02-002-PR-1320 | 0 | 0 | E3720 | CON-LEG101-PR-3160 | R1 |
| HFR1-05-9860 |  | Material Fabrication for Fire Alarm System | 52d | 2026-03-09 | 2026-05-11 | HFR1-05-9850 FS+25d | QA/QC Engineer [128 h] |  | MKH2-02-002-PR-1360 | 0 | 0 | E3750 | CON-LEG101-PR-3170 | R2 |
| HFR1-05-9870 |  | Material Delivery for Fire Alarm System | 45d | 2026-05-12 | 2026-07-06 | HFR1-05-9860 | QA/QC Engineer [48 h]; Eng+Pro+Tc [520]; PRO-LONG-ELEC [1] | 102,807 | MKH2-02-002-PR-1400 | 0.245815896638331 | 0.00245815896638331 | E3780 | CON-LEG101-PR-3180 | R3 |
| HFR1-05-9880 |  | Staging Time For Fire Alarm System | 7d | 2026-07-07 | 2026-07-14 | HFR1-05-9870, HFR1-05-9360, HFR1-05-9930, HFR1-05-9840 |  |  |  |  |  |  |  | R4 |
|  | 20 | **Solar Power Plant** |  | 2026-01-28 | 2026-06-24 |  |  |  |  |  |  |  |  |  |
| HFR1-05-4890 |  | PO for Solar Power Plant | 8d | 2026-01-28 | 2026-02-05 | HFR1-05-8810 | Purchaser [32 h] |  | MKH2-02-002-PR-1320 | 0 | 0 | E3720 | CON-LEG101-PR-3160 | HAS3-1880 |
| HFR1-05-6010 |  | Material Fabrication for Solar Power Plant | 40d | 2026-03-09 | 2026-04-27 | HFR1-05-4890 FS+25d | QA/QC Engineer [128 h] |  | MKH2-02-002-PR-1360 | 0 | 0 | E3750 | CON-LEG101-PR-3170 | HAS3-3380 |
| HFR1-05-9320 |  | Material Delivery for Solar Power Plant | 40d | 2026-04-28 | 2026-06-16 | HFR1-05-6010 | QA/QC Engineer [48 h]; Eng+Pro+Tc [470]; PRO-LONG-ELEC [1] | 102,807 | MKH2-02-002-PR-1400 | 0.245815896638331 | 0.00245815896638331 | E3780 | CON-LEG101-PR-3180 | HAS3-9280 |
| HFR1-05-9330 |  | Staging Time For Solar Power Plant | 7d | 2026-06-17 | 2026-06-24 | HFR1-05-9320 |  |  |  |  |  |  |  | HAS3-9285 |

| ID | WBS | Activity | Duration | Start | Finish | Predecessors | Resources | Cost | USERTEXT | Total Weight % | Weight 1 | Mapping Sheet Activity ID | Old Activity ID | Old Activity ID-Alhasa |
| --- | --- | --- | --- | --- | --- | --- | --- | --- | --- | --- | --- | --- | --- | --- |
|  | 21 | **Skylight Fixtures** |  | 2026-01-28 | 2026-05-17 |  |  |  |  |  |  |  |  |  |
| HFR1-05-4900 |  | PO for Skylight Fixtures | 8d | 2026-01-28 | 2026-02-05 | HFR1-05-8790 | Purchaser [32 h] |  | MKH2-02-002-PR-1320 | 0 | 0 | E3720 | CON-LEG101-PR-3160 | HAS3-1890 |
| HFR1-05-6020 |  | Material Fabrication for Skylight Fixtures | 25d | 2026-03-09 | 2026-04-09 | HFR1-05-4900 FS+25d | QA/QC Engineer [128 h] |  | MKH2-02-002-PR-1360 | 0 | 0 | E3750 | CON-LEG101-PR-3170 | HAS3-3390 |
| HFR1-05-9490 |  | Material Delivery for Skylight Fixtures | 25d | 2026-04-11 | 2026-05-09 | HFR1-05-6020 | QA/QC Engineer [48 h]; Eng+Pro+Tc [520]; PRO-LONG-ELEC [1] | 102,807 | MKH2-02-002-PR-1400 | 0.245815896638331 | 0.00245815896638331 | E3780 | CON-LEG101-PR-3180 | HAS3-9580 |
| HFR1-05-9500 |  | Staging Time For Skylight Fixtures | 7d | 2026-05-10 | 2026-05-17 | HFR1-05-9490 |  |  |  |  |  |  |  | HAS3-9585 |
|  | 3 | **Construction phase** |  | 2025-12-29 | 2026-09-26 |  |  |  |  |  |  |  |  |  |
|  | 6 | **Siite General Works** |  | 2025-12-29 | 2026-03-22 |  |  |  |  |  |  |  |  |  |
|  | 5 | **Earth Works -All Site** |  | 2025-12-29 | 2026-03-22 |  |  |  |  |  |  |  |  |  |
| HFR1-05-1250 |  | Demolition of the existing curbstone | 5d | 2025-12-29 | 2026-01-03 | HFR1-05-7910, HFR1-05-3110, HFR1-05-5690, HFR1-05-6860, HFR1-05-8890 | LABOR [15 h]; Demolition of the existing curbstone [48]; Excavator [50 h]; Labor [50 h]; Skilled Labor [50 h]; Eq. Operator [50 h] | 1,728 |  |  |  |  |  | 200 |
| HFR1-05-1260 |  | Excavation for all site | 7d | 2026-01-04 | 2026-01-11 | HFR1-05-1250 | LABOR [5 h]; POCLAIN [24.24 h]; Bob Cat [1.51 h]; Dump Truck 16 m3 [4.52 h]; Dump Truck 26 m3 [4.52 h]; Poclain Excavator [12.05 h]; Bulldozr (D8) [1.51 h]; Payloader [1.51 h]; Excavation [13444]; Excavator [70 h]; Grider [70 h]; Truck [140 h]; Eq. Operator [280 h] | 322,656 |  |  |  |  |  | 201 |
| HFR1-05-1270 |  | Termite Protection (Soil Treatment) | 5d | 2026-01-12 | 2026-01-17 | HFR1-05-1260 | LABOR [5 h]; Termite Controle tech [0.75 h]; Excavation [75]; Labor [100 h]; Skilled Labor [100 h] | 1,800 |  |  |  |  |  | 203 |
| HFR1-05-1280 |  | Backfilling after G.BColumns nescks -Footing /4 layers | 3d | 2026-03-12 | 2026-03-15 | HFR1-05-3050 | Loder [1.51 h]; Truk [60 h]; LABOR [3.77 h]; Bob Cat [4.52 h]; Dump Truck 16 m3 [3.62 h]; Poclain Excavator [8.44 h]; Bulldozr (D8) [4.52 h]; Grader [2.26 h]; Backfilling [4911]; Bobcat [120 h]; Compactor [60 h]; Labor [300 h]; Eq. Operator [180 h] | 162,063 |  |  |  |  |  | 205 |
| HFR1-05-1290 |  | Backfilling after G.BColumns nescks -Footing/second four layers | 3d | 2026-03-16 | 2026-03-22 | HFR1-05-1280 | Loder [29.08 h]; Truk [29.08 h]; LABOR [21.81 h]; Backfilling [4908]; Bobcat [120 h]; Compactor [60 h]; Labor [300 h]; Skilled Labor [300 h]; Eq. Operator [180 h] | 161,964 |  |  |  |  |  | 206 |
|  | 4 | **Reinforced Concrete foundations Works all site** |  | 2026-01-27 | 2026-03-11 |  |  |  |  |  |  |  |  |  |
| HFR1-05-1010 |  | Lean Concrete Formwork Preparation and pouring | 5d | 2026-01-27 | 2026-02-01 | HFR1-05-1270, HFR1-05-3700 SS, HFR1-05-7530, HFR1-05-7520, HFR1-05-7510, HFR1-05-6950, HFR1-05-6940, HFR1-05-6930, HFR1-05-6920, HFR1-05-9050, HFR1-05-9040, HFR1-05-9030, HFR1-05-9020, HFR1-05-8570, HFR1-05-8650, HFR1-05-8560, HFR1-05-8550, HFR1-05-8540, HFR1-05-8650 FF, HFR1-05-6160, HFR1-05-7540, HFR1-05-7550, HFR1-05-7560, HFR1-05-7570, HFR1-05-7580, HFR1-05-7590, HFR1-05-7600, HFR1-05-7610, HFR1-05-7870, HFR1-05-8820, HFR1-05-8830, HFR1-05-7880, HFR1-05-8840, HFR1-05-8850, HFR1-05-8490, HFR1-05-8500, HFR1-05-8510, HFR1-05-8520, HFR1-05-8530, HFR1-05-8700, HFR1-05-8710, HFR1-05-8720, HFR1-05-8730, HFR1-05-8660, HFR1-05-8670, HFR1-05-8680, HFR1-05-8690, HFR1-05-8620, HFR1-05-8630, HFR1-05-8640, HFR1-05-8650 SS | LABOR [25.45 h]; Dump Truck 16 m3 [8.44 h]; Vibratory Roller [8.44 h]; Gomaco Concrete [8.44 h]; Bitumen Tanker [8.44 h]; Lean concrete under foundation and grade beams. [155]; Labor [200 h]; Skilled Labor [100 h]; Mason [200 h] | 7,130 |  |  |  |  |  | 100 |
| HFR1-05-1020 |  | Lean Concrete Curing | 3d | 2026-02-02 | 2026-02-04 | HFR1-05-1010 | LABOR [10.91 h]; Dump Truck 16 m3 [3.62 h]; Vibratory Roller [3.62 h]; Gomaco Concrete [3.62 h]; Bitumen Tanker [3.62 h]; Lean concrete under foundation and grade beams. [157]; Labor [60 h] | 7,222 |  |  |  |  |  | 101 |
| HFR1-05-1030 |  | Footings Rebar Fixing | 3d | 2026-02-05 | 2026-02-08 | HFR1-05-1020, HFR1-05-9160 SS | LABOR [15 h]; Steel Fixer [10 h]; Isolated Footings [55]; Labor [120 h]; Skilled Labor [60 h]; Steel Fixer [120 h] | 49,830 |  |  |  |  |  | 103 |
| HFR1-05-1040 |  | Footings Formwork | 5d | 2026-02-09 | 2026-02-14 | HFR1-05-1030, HFR1-05-2990 | LABOR [15 h]; Carpenter [32.72 h]; Isolated Footings [13.25]; Labor [200 h]; Skilled Labor [100 h]; Carpenter [200 h] | 12,004.5 |  |  |  |  |  | 104 |
| HFR1-05-1050 |  | Footings Inspection | 3d | 2026-02-15 | 2026-02-17 | HFR1-05-1040, HFR1-05-9010 | LABOR [10.91 h]; Isolated Footings [21.54]; Skilled Labor [60 h] | 19,515.24 |  |  |  |  |  | 105 |
| HFR1-05-1060 |  | Footings Concrete Pouring | 2d | 2026-02-18 | 2026-02-19 | HFR1-05-1050 | CONCRETE MIixer [3.64 h]; LABOR [10.91 h]; Dump Truck 16 m3 [3.62 h]; Vibratory Roller [3.62 h]; Gomaco Concrete [3.62 h]; Bitumen Tanker [3.62 h]; Isolated Footings [31.48]; Labor [80 h]; Skilled Labor [60 h]; Mason [80 h] | 28,520.88 |  |  |  |  |  | 106 |
| HFR1-05-1070 |  | Footings Curing | 2d | 2026-02-21 | 2026-02-23 | HFR1-05-1060 | LABOR [10.91 h]; Labour [10.91 h]; Dump Truck 16 m3 [1.21 h]; Vibratory Roller [7.32 h]; Gomaco Concrete [1.21 h]; Bitumen Tanker [1.21 h]; Isolated Footings [3.15]; Labor [40 h] | 2,853.9 |  |  |  |  |  | 106-1 |
| HFR1-05-1080 |  | Grade beams Rebar Fixing | 4d | 2026-02-24 | 2026-02-28 | HFR1-05-1070 | LABOR [21.81 h]; Steel Fixer [36.36 h]; Dump Truck 16 m3 [7.23 h]; Vibratory Roller [7.23 h]; Gomaco Concrete [7.23 h]; Bitumen Tanker [7.23 h]; Grade beams [54.25]; Labor [160 h]; Skilled Labor [80 h]; Steel Fixer [160 h] | 56,148.75 |  |  |  |  |  | 107 |
| HFR1-05-1090 |  | Form Works for Grade beams | 4d | 2026-03-01 | 2026-03-04 | HFR1-05-1080 | LABOR [10 h]; Carpenter [15 h]; Grade beams [11.6]; Labor [160 h]; Skilled Labor [80 h]; Carpenter [160 h] | 12,006 |  |  |  |  |  | 108 |
| HFR1-05-3020 |  | Grade beams Inspection | 2d | 2026-03-05 | 2026-03-07 | HFR1-05-1090 | LABOR [14.54 h]; Steel Fixer [24.24 h]; Dump Truck 16 m3 [1.21 h]; Vibratory Roller [1.21 h]; Gomaco Concrete [1.21 h]; Grade beams [38.75]; Labor [40 h] | 40,106.25 |  |  |  |  |  | HAS3-10460 |
| HFR1-05-3030 |  | Pouring Concrete works for Grade beams | 2d | 2026-03-08 | 2026-03-09 | HFR1-05-3020 | CONCRETE MIixer [7.27 h]; LABOR [21.81 h]; Labour [21.81 h]; Dump Truck 16 m3 [2.41 h]; Vibratory Roller [2.41 h]; Gomaco Concrete [2.41 h]; Bitumen Tanker [2.41 h]; Grade beams [12.09]; Labor [80 h]; Skilled Labor [60 h]; Mason [80 h] | 12,513.15 |  |  |  |  |  | HAS3-10470 |
| HFR1-05-3050 |  | Beams Curing Works | 2d | 2026-03-10 | 2026-03-11 | HFR1-05-3030 | LABOR [14.54 h]; Dump Truck 16 m3 [2.41 h]; Vibratory Roller [2.41 h]; Gomaco Concrete [2.41 h]; Bitumen Tanker [2.41 h]; Grade beams [23.25]; Labor [40 h] | 24,063.75 |  |  |  |  |  | HAS3-10500 |

| ID | WBS | Activity | Duration | Start | Finish | Predecessors | Resources | Cost | Old Activity ID-Alhasa |
| --- | --- | --- | --- | --- | --- | --- | --- | --- | --- |
|  | 6 | **Insulation Works** |  | 2026-03-12 | 2026-03-22 |  |  |  |  |
| HFR1-05-2950 |  | Waterproofing bitumen Surface Preparation | 3d | 2026-03-12 | 2026-03-15 | HFR1-05-3050, HFR1-05-9140 | LABOR [2.41 h]; LABOR [58.17 h]; Insulation Tection [58.17 h]; Provide and apply 2 coats of bitumen waterproofing paint on concrete surface in contact with soil. [2853.79]; Supply and lay 250 micron thk polyethylene sheet under grade slab and footings [12416]; Supply and apply anti termite under all concrete in touch with earth for all buildings as per manufacture instructions, engineer approval [10463.9]; Labor [60 h]; Skilled Labor [60 h] | 187,646.72 | HAS3-10130 |
| HFR1-05-2970 |  | Waterproofing Application | 3d | 2026-03-16 | 2026-03-22 | HFR1-05-9090, HFR1-05-2950 | LABOR [2.41 h]; Insulation Tection [7.53 h]; Supplying and fixing 3mm thk extruded aluminum flashing 40mm with sealent and 50*50mm cant strip. [6278.33]; Labor [60 h]; Skilled Labor [60 h] | 188,349.9 | HAS3-10190 |
|  | 12 | **Hunger -1** |  | 2026-03-02 | 2026-09-26 |  |  |  |  |
|  | 7 | **Concrete works** |  | 2026-03-10 | 2026-03-25 |  |  |  |  |
| HFR1-05-2430 |  | SOG (Whole Factory) Rebar Mesh & MEP Sleeves | 4d | 2026-03-10 | 2026-03-14 | HFR1-05-3050 SS, HFR1-05-8700, HFR1-05-8710, HFR1-05-8720, HFR1-05-8730 | LABOR [63.02 h]; Steel Fixer [15.06 h]; Lean concrete under foundation and grade beams. [455]; Labor [160 h]; Skilled Labor [80 h]; Steel Fixer [160 h] | 20,930 | HA-10-1000 |
| HFR1-05-2440 |  | SOG (Whole Factory) Form work | 5d | 2026-03-12 | 2026-03-17 | HFR1-05-3050 | LABOR [4.52 h]; Labours [2.91 h]; Carpenter [4.52 h]; Provide and cast 150 mm thk concrete floor slab on grade [24.36]; Labor [280 h]; Skilled Labor [140 h]; Carpenter [280 h] | 22,411.2 | HA-10-1010 |
| HFR1-05-2510 |  | SOG (Whole Factory) Inspection | 2d | 2026-03-15 | 2026-03-16 | HFR1-05-2430 | LABOR [2 h]; Provide and cast 150 mm thk concrete floor slab on grade [144.02]; Skilled Labor [40 h] | 132,498.4 | HA-10-1080 |
| HFR1-05-2520 |  | SOG (Whole Factory) Concrete Pouring | 3d | 2026-03-17 | 2026-03-23 | HFR1-05-2510, HFR1-05-9170 | CONCRETE MIixer [15.75 h]; LABOR [4.52 h]; Provide and cast 150 mm thk concrete floor slab on grade [70]; Labor [120 h]; Skilled Labor [90 h]; Mason [120 h] | 64,400 | HA-10-1090 |
| HFR1-05-2530 |  | SOG (Whole Factory) Curing | 3d | 2026-03-17 | 2026-03-23 | HFR1-05-2520 SS | LABOR [6.78 h]; Provide and cast 150 mm thk concrete floor slab on grade [36.13]; Labor [30 h]; Skilled Labor [60 h] | 33,239.6 | HA-10-1100 |
| HFR1-05-2540 |  | SOG (Whole Factory) Vapor Barrier & Insulation | 2d | 2026-03-24 | 2026-03-25 | HFR1-05-2530, HFR1-05-2970, HFR1-05-1290, HFR1-05-2440, HFR1-05-8970, HFR1-05-8980 | LABOR [5.27 h]; Provide and cast 150 mm thk concrete floor slab on grade [24.5] | 22,540 | HA-10-1110 |
|  | 1 | **Steel Structure Works** |  | 2026-04-14 | 2026-05-31 |  |  |  |  |
| HFR1-05-2450 |  | Rated Steel Bollards Concrete Base Casting | 5d | 2026-04-14 | 2026-04-19 | HFR1-05-2540, HFR1-05-1580, HFR1-05-2440 | install steel bollards 1135mm height [500]; Labor [100 h]; Skilled Labor [50 h]; Plumber [150 h] | 510,000 | HA-10-1020 |
| HFR1-05-2460 |  | Installation column steel & Steel Ladder | 6d | 2026-04-20 | 2026-04-26 | HFR1-05-2450, HFR1-05-9800 | LABOR [96.95 h]; Metal Works tech [96.95 h]; install steel ladder with safety cage [50]; Size 400mm wide*4000mm long [370]; Labor [120 h]; Skilled Labor [120 h]; Steel Fixer [240 h] | 643,680 | HA-10-1030 |
| HFR1-05-2470 |  | Install beam Rafter | 6d | 2026-04-27 | 2026-05-03 | HFR1-05-2460 | LABOR [96.95 h]; Metal Works tech [96.95 h]; Size 400mm wide*4000mm long [240]; Skilled Labor [120 h]; Steel Fixer [180 h] | 207,360 | HA-10-1040 |
| HFR1-05-2480 |  | Installation Purlin & bracing | 6d | 2026-04-27 | 2026-05-03 | HFR1-05-2470 SS | LABOR [96.95 h]; Metal Works tech [96.95 h]; Size 400mm wide*4000mm long [167.91]; Skilled Labor [120 h]; Steel Fixer [120 h] | 145,074.24 | HA-10-1050 |
| HFR1-05-2490 |  | Fire rating required | 15d | 2026-05-04 | 2026-05-20 | HFR1-05-2470, HFR1-05-1290 | LABOR [9.94 h]; Metal Works tech [96.95 h]; Size 400mm wide*4000mm long [400]; Skilled Labor [100 h] | 345,600 | HA-10-1060 |
| HFR1-05-2500 |  | Installation sandwich panel | 6d | 2026-05-21 | 2026-05-31 | HFR1-05-2490, HFR1-05-9480, HFR1-05-9500 | LABOR [96.95 h]; Metal Works tech [96.95 h]; Size 400mm wide*4000mm long [2.65]; Skilled Labor [120 h] | 2,285.98 | HA-10-1070 |
|  | 4 | **Architectural** |  | 2026-03-02 | 2026-07-16 |  |  |  |  |
| HFR1-05-2560 |  | Block work | 15d | 2026-03-02 | 2026-03-22 | HFR1-05-3850 FS+20d | LABOR [53.32 h]; at external walls (200mm thick insulated) [1576.41]; at electrical room (200mm thick, 2 hr fire rated) [2115.18]; Labor [600 h]; Skilled Labor [300 h]; Mason [900 h] | 334,198.68 | HA-10-1130 |
| HFR1-05-2570 |  | Plaster | 8d | 2026-03-23 | 2026-03-31 | HFR1-05-2560, HFR1-05-9100 | Supply and install 2 coats of acrylic paint at external walls and parapet including one coat of primer and two coats of putty to give smooth Surface as a base for paint including fiberglass tape to joints and all other accessories as per Modon specificati [410.56]; Labor [240 h]; Skilled Labor [160 h]; Mason [320 h] | 14,780.16 | HA-10-1140 |
| HFR1-05-2600 |  | Paint Primer + Putty + Final Coat INSIDE | 8d | 2026-04-25 | 2026-05-03 | HFR1-05-2570 FS+20d | LABOR [33.93 h]; Tlles Fitter [33.93 h]; Supply and install 2 coats of acrylic paint at external walls and parapet including one coat of primer and two coats of putty to give smooth Surface as a base for paint including fiberglass tape to joints and all other accessories as per Modon specificati [410.56]; Labor [80 h]; Skilled Labor [160 h]; Mason [240 h] | 14,780.16 | HA-10-1170 |
| HFR1-05-2610 |  | Marble chips on external walls and grooves | 7d | 2026-04-25 | 2026-05-02 | HFR1-05-2600 SS | LABOR [33.93 h]; FINSHING Techtion [42.42 h]; Supply and install layer of marble chips on external walls and grooves to conform with specification requirements to complete the works as per drawing. Color and material is subject for Client approval. [75]; Labor [70 h]; Skilled Labor [140 h] | 3,600 | HA-10-1180 |
| HFR1-05-2620 |  | GRC panels with the mechanical fixat | 15d | 2026-05-03 | 2026-05-19 | HFR1-05-2640 SS | LABOR [33.93 h]; Painter [42.42 h]; Supply and install GRC panels with the mechanical fixations and whatever needed to do a perfect work, as shown in the drawings and specification [11]; Skilled Labor [300 h] | 4,620 | HA-10-1190 |
| HFR1-05-2630 |  | External Paint Primer + Final Coat | 7d | 2026-05-03 | 2026-05-10 | HFR1-05-2610 | LABOR [33.93 h]; Supply and install 2 coats of acrylic paint at external walls and parapet including one coat of primer and two coats of putty to give smooth Surface as a base for paint including fiberglass tape to joints and all other accessories as per Modon specificati [202.5]; Skilled Labor [140 h] | 7,290 | HA-10-1200 |
| HFR1-05-2640 |  | Epoxy Paint | 15d | 2026-05-03 | 2026-05-19 | HFR1-05-2610 | LABOR [33.93 h]; FINSHING Techtion [42.42 h]; Supply and apply epoxy paint to concrete surface in the factory area as shown in the drawings and specifications [185]; Skilled Labor [300 h] | 11,100 | HA-10-1210 |
| HFR1-05-2660 |  | Windows Glass Installation | 7d | 2026-05-11 | 2026-05-18 | HFR1-05-2630 | LABOR [6.03 h]; Window W1 (size 1000*1300) [10.02]; Carpenter [140 h] | 10,160.28 | HA-10-1230 |
| HFR1-05-2690 |  | Cladding | 6d | 2026-05-19 | 2026-05-25 | HFR1-05-2660 | LABOR [33.93 h]; Doors installer [42.42 h]; Supply and install aluminium cladding where material is approved by the Client, including sub-frames, all accessories and fittings, and whatever needed to do perfect work all as per drawing and specification. [29.53]; Labor [60 h]; Skilled Labor [60 h]; Carpenter [60 h] | 11,280.46 | HA-10-1280 |
| HFR1-05-2720 |  | Finishes floor Installation | 6d | 2026-05-20 | 2026-05-30 | HFR1-05-2620 | LABOR [33.93 h]; Doors installer [42.42 h]; Supply and apply epoxy paint to concrete surface in the factory area as shown in the drawings and specifications [2218.6] | 133,116 | HA-10-1310 |
| HFR1-05-2730 |  | External Paint Touch-up & Inspection | 7d | 2026-05-30 | 2026-06-06 | HFR1-05-2720 SS, HFR1-05-2690 | LABOR [33.93 h]; Painter [42.42 h]; Supply and install 300*300mm ceramic tiles with approved quality on 30 mm mortar including sand fill material as approved by the Client for toilets [71.47]; Labor [70 h]; Skilled Labor [70 h]; Carpenter [140 h] | 7,289.94 | HA-10-1320 |
| HFR1-05-2750 |  | Doors Installation | 7d | 2026-06-16 | 2026-06-23 | HFR1-05-3180, HFR1-05-2730, HFR1-05-2500, HFR1-05-2720, HFR1-05-2640 | LABOR [33.93 h]; Doors installer [12.05 h]; install (D6) 3000*3500mm galvanized steel heavy duty industrial isolated type roll up shutter door [9.99]; Labor [140 h]; Skilled Labor [140 h]; Carpenter [140 h] | 156,443.4 | HA-10-1340 |
| HFR1-05-2770 |  | Metal works | 5d | 2026-07-01 | 2026-07-06 | HFR1-05-2420, HFR1-05-2750, HFR1-05-2750 FF | ALHSA FACTORY [0.15 h]; LABOR [33.93 h]; FINSHING Techtion [42.42 h]; install steel ladder with safety cage [8.04]; Labor [100 h]; Skilled Labor [50 h]; Steel Fixer [100 h] | 52,099.2 | HA-10-1370 |
| HFR1-05-2790 |  | Signage Layout & Marking Locations | 5d | 2026-07-07 | 2026-07-12 | HFR1-05-9380, HFR1-05-2770 | LABOR [38.78 h]; Doors installer [3.31 h]; Identification sign for toilets & prayer room [43]; Labor [100 h] | 33,540 | HA-10-1400 |
| HFR1-05-2820 |  | Specialites Fittings | 4d | 2026-07-13 | 2026-07-16 | HFR1-05-2420, HFR1-05-2770, HFR1-05-2790 | LABOR [53.32 h]; FINSHING Techtion [66.65 h]; Supply, install, testing and commission Fire Alarm Check Valve (ACV) assembly with OS&Y gate valve 6" Ø, complete with accessories.as per drawing and specifications [3.13]; Labor [80 h]; Skilled Labor [80 h] | 22,536 | HA-10-1430 |

| ID | WBS | Activity | Duration | Start | Finish | Predecessors | Resources | Cost | Old Activity ID-Alhasa |
| --- | --- | --- | --- | --- | --- | --- | --- | --- | --- |
|  | 5 | **MEP WORKS** |  | 2026-03-23 | 2026-09-26 |  |  |  |  |
|  | 1 | **Plumping-FIRE-HVAC** |  | 2026-03-23 | 2026-09-26 |  |  |  |  |
| HFR1-05-2550 |  | Drainage Preparation (Marking + Sleeves + Supports) | 6d | 2026-03-23 | 2026-03-29 | HFR1-05-2560 | LABOR [48.47 h]; plumber [48.47 h]; Supply, installation , testing & commissioning of condensate drain piping, complete as per drawings, specifications and method of measurement. [142.58]; Labor [240 h]; Plumber [120 h]; Pipe-Laying Worker [120 h] | 25,664.4 | HA-10-1120 |
| HFR1-05-2580 |  | HVAC Ducting Preparation (Marking + Supports + Hangers) | 5d | 2026-03-30 | 2026-04-04 | HFR1-05-2550 | LABOR [48.47 h]; AC tecntion [48.47 h]; Supply, install, test and commission indoor ductwork as per SMACNA Standards, complete, VD, duct tape, adhesive, duct sealant, hangers, supports and all other accessories, (Flanged TDC Type) and as per drawings and specification. [422.22]; Labor [100 h]; Electrician [200 h] | 15,199.92 | HA-10-1150 |
| HFR1-05-2800 |  | Exasut fans works | 6d | 2026-04-05 | 2026-04-11 | HFR1-05-2580 | LABOR [48.47 h]; Exhaust fan 2351 CFM ex. Static 32 Pa for Factory area [0.5]; Labor [60 h]; Skilled Labor [120 h]; Electrician [240 h] | 2,400 | HA-10-1410 |
| HFR1-05-2590 |  | Roof drains | 4d | 2026-06-17 | 2026-06-21 | HFR1-05-2580, HFR1-05-9370, HFR1-05-8910 | LABOR [48.47 h]; plumber [48.47 h]; Supply, installation , testing & commissioning of condensate drain piping, complete as per drawings, specifications and method of measurement. [142.58]; Labor [80 h]; Plumber [80 h] | 25,664.4 | HA-10-1160 |
| HFR1-05-2650 |  | Drainage Installation (Pipes + Traps + Connections) | 4d | 2026-06-22 | 2026-06-25 | HFR1-05-2590, HFR1-05-9150, HFR1-05-9210, HFR1-05-9220, HFR1-05-9230, HFR1-05-9240 | LABOR [48.47 h]; plumber [48.47 h]; 160 mm Pipe in trench not exceeding 2.00 m depth to invert [53.47]; Labor [80 h]; Plumber [80 h]; Pipe-Laying Worker [80 h] | 25,665.6 | HA-10-1220 |
| HFR1-05-2670 |  | Gully trap works +Heavy duty covers | 4d | 2026-06-27 | 2026-06-30 | HFR1-05-2650, HFR1-05-8900 | LABOR [48.47 h]; plumber [48.47 h]; Supply, install, test and commission Gully Traps with heavy duty cover and all other accessories as per drawings and specification. [38.89]; Labor [40 h]; Plumber [80 h] | 25,667.4 | HA-10-1240 |
| HFR1-05-2810 |  | Exhaust diffusers and grills | 5d | 2026-06-29 | 2026-07-04 | HFR1-05-2800, HFR1-05-9650 SS | LABOR [48.47 h]; AC tecntion [48.47 h]; Exhaust fan 2351 CFM ex. Static 32 Pa for Factory area [0.5]; Labor [50 h]; Skilled Labor [100 h]; Electrician [200 h] | 2,400 | HA-10-1420 |
| HFR1-05-2680 |  | Fire Fighting Installation (Pipes + Fittings + Valves + Cabinets) | 4d | 2026-07-01 | 2026-07-05 | HFR1-05-2670, HFR1-05-9890, HFR1-05-3390 | LABOR [48.47 h]; Fire Pump system, Local code & UL/FM approved, meeting all NFPA requirements [0.14]; Labor [80 h]; Skilled Labor [40 h]; Electrician [80 h] | 50,400 | HA-10-1250 |
| HFR1-05-2830 |  | Flexiable duct | 7d | 2026-07-05 | 2026-07-12 | HFR1-05-2810 | LABOR [48.47 h]; Flexiable duct [0.02]; AC tecntion [48.47 h]; Labor [70 h]; Skilled Labor [140 h]; Electrician [280 h] | 2,366.5 | HA-10-1440 |
| HFR1-05-2700 |  | Water sprinkles | 4d | 2026-07-06 | 2026-07-09 | HFR1-05-2680 | LABOR [48.47 h]; 200 mm Ø [92.99]; Labor [40 h]; Plumber [40 h] | 25,665.24 | HA-10-1290 |
| HFR1-05-2710 |  | Floor drains installations | 4d | 2026-07-11 | 2026-07-14 | HFR1-05-2700 | LABOR [48.47 h]; plumber [48.47 h]; Supply, installation , testing & commissioning of condensate drain piping, complete as per drawings, specifications and method of measurement. [142.58]; Labor [40 h]; Plumber [80 h] | 25,664.4 | HA-10-1300 |
| HFR1-05-2840 |  | WATER SUPPLY SYSTEM | 5d | 2026-07-13 | 2026-07-18 | HFR1-05-2830, HFR1-05-9580, HFR1-05-9650 | LABOR [48.47 h]; AC tecntion [48.47 h]; 63 mm Ø (2 1/2" Ø )Cold water [749.13]; Labor [50 h]; Skilled Labor [100 h]; Plumber [100 h]; Pipe-Laying Worker [100 h] | 89,895.6 | HA-10-1450 |
| HFR1-05-2740 |  | Internal ducts (duct sealent+hangers+supports | 6d | 2026-07-15 | 2026-07-21 | HFR1-05-2710 | LABOR [48.47 h]; AC tecntion [48.47 h]; Supply, install, test and commission indoor ductwork as per SMACNA Standards, complete, VD, duct tape, adhesive, duct sealant, hangers, supports and all other accessories, (Flanged TDC Type) and as per drawings and specification. [65.74]; Labor [60 h]; Skilled Labor [120 h]; Electrician [240 h] | 2,366.64 | HA-10-1330 |
| HFR1-05-2850 |  | HVAC Ducting Installation (Ducts + Fittings + Accessories) | 6d | 2026-07-19 | 2026-07-25 | HFR1-05-2840, HFR1-05-9650, HFR1-05-9970 | LABOR [48.47 h]; AC tecntion [48.47 h]; Supply, install, test and commission indoor ductwork as per SMACNA Standards, complete, VD, duct tape, adhesive, duct sealant, hangers, supports and all other accessories, (Flanged TDC Type) and as per drawings and specification. [1692.56]; Labor [60 h]; Skilled Labor [60 h]; Electrician [120 h] | 60,932.16 | HA-10-1480 |
| HFR1-05-2760 |  | Fire house cabinet works | 6d | 2026-07-22 | 2026-07-28 | HFR1-05-2740, HFR1-05-2820 | LABOR [48.47 h]; Fire Pump system, Local code & UL/FM approved, meeting all NFPA requirements [0.14]; Labor [60 h]; Skilled Labor [120 h]; Electrician [240 h] | 50,400 | HA-10-1350 |
| HFR1-05-2860 |  | Mini split units indoor | 7d | 2026-07-26 | 2026-08-02 | HFR1-05-2850, HFR1-05-5760, HFR1-05-5550, HFR1-05-9420 | LABOR [48.47 h]; AC tecntion [48.47 h]; Complete road crossing duct bank for street lighting cables including pipes [8.96]; Labor [70 h]; Skilled Labor [70 h]; Electrician [140 h] | 2,365.44 | HA-10-1490 |
| HFR1-05-2780 |  | Inspection chambers with heavy duty covers | 6d | 2026-07-29 | 2026-08-04 | HFR1-05-2760 | LABOR [48.47 h]; Supply, install, test and commission Gully Traps with heavy duty cover and all other accessories as per drawings and specification. [38.89]; Labor [60 h]; Skilled Labor [120 h]; Plumber [120 h] | 25,667.4 | HA-10-1380 |
| HFR1-05-2870 |  | OS Y GAte valves ,installations and testing | 7d | 2026-08-03 | 2026-08-10 | HFR1-05-2860 | LABOR [48.47 h]; AC tecntion [48.47 h]; Supply, install, testing and commission Fire Alarm Check Valve (ACV) assembly with OS&Y gate valve 6" Ø, complete with accessories.as per drawing and specifications [0.33]; Labor [70 h]; Skilled Labor [70 h]; Electrician [140 h] | 2,376 | HA-10-1500 |
| HFR1-05-2880 |  | Fire Alarm system Devices installations | 13d | 2026-08-11 | 2026-08-25 | HFR1-05-2870 | LABOR [48.47 h]; electrical tection [48.47 h]; Wall mounted Addressable Fire Alarm Control Panel Complete [0.97]; Labor [80 h]; Skilled Labor [80 h]; Electrician [160 h] | 52,147.2 | HA-10-1510 |
| HFR1-05-2890 |  | HVAC Ducting Testing (Leak Test) & Final Inspection | 9d | 2026-08-26 | 2026-09-05 | HFR1-05-2880 | LABOR [48.47 h]; AC tecntion [48.47 h]; Supply, install, test and commission indoor ductwork as per SMACNA Standards, complete, VD, duct tape, adhesive, duct sealant, hangers, supports and all other accessories, (Flanged TDC Type) and as per drawings and specification. [1692.56]; Labor [70 h]; Skilled Labor [70 h]; Electrician [140 h] | 60,932.16 | HA-10-1540 |
| HFR1-05-2900 |  | Testing plumping system & Final Inspection | 9d | 2026-09-06 | 2026-09-15 | HFR1-05-2890 | LABOR [48.47 h]; plumber [48.47 h]; Supply, install, test and commission Flexible ducts (Low Pressure), for connection to square exhaust diffuser and as per drawings and specification. [534.69]; Labor [30 h]; Skilled Labor [30 h]; Electrician [60 h] | 25,665.12 | HA-10-1570 |
| HFR1-05-2910 |  | Fire Fighting Testing (Hydrostatic Test) & Final Inspection | 8d | 2026-09-16 | 2026-09-26 | HFR1-05-2900, HFR1-05-9540, HFR1-05-2780 | LABOR [48.47 h]; install fire rated 45 min. (D5) 1000*2200mm single leaf steel door with door construction type C [20.68]; Labor [40 h]; Skilled Labor [40 h]; Electrician [80 h] | 52,113.6 | HA-10-1590 |

| ID | WBS | Activity | Duration | Start | Finish | Predecessors | Resources | Cost | Old Activity ID-Alhasa |
| --- | --- | --- | --- | --- | --- | --- | --- | --- | --- |
|  | 2 | **Electrical Works** |  | 2026-03-23 | 2026-09-02 |  |  |  |  |
| HFR1-05-1970 |  | Socket and Outlets accessiors &Disconnect Switches Installations | 4d | 2026-03-23 | 2026-03-26 | HFR1-05-2560 | Wall mounted Duplex Socket [24.8]; Labor [40 h]; Skilled Labor [80 h]; Electrician [160 h] | 9,126.4 | A1000 |
| HFR1-05-1980 |  | Grounding system (conductors) | 4d | 2026-03-28 | 2026-03-31 | HFR1-05-1970 | Skilled Labor [80 h]; Electrician [160 h]; Grounding System for each block [0.2]; Labor [40 h] | 7,578.4 | A1010 |
| HFR1-05-1990 |  | Light current devices installations & Final Inspection | 4d | 2026-04-01 | 2026-04-05 | HFR1-05-1980 | Labor [40 h]; Skilled Labor [80 h]; Electrician [160 h]; LP: Lighting Power Panel [2.18] | 9,417.6 | A1020 |
| HFR1-05-2000 |  | Solar Power Plant (cable-inverter +panels | 4d | 2026-06-25 | 2026-06-29 | HFR1-05-1990, HFR1-05-9330, HFR1-05-2720 | Labor [40 h]; Skilled Labor [80 h]; Electrician [160 h]; Solar Power Plant [0.15] | 8,761.2 | A1030 |
| HFR1-05-2010 |  | Grounding system (cable from electrical & telecom systems | 5d | 2026-06-30 | 2026-07-05 | HFR1-05-2000, HFR1-05-9010 | Labor [50 h]; Skilled Labor [100 h]; Electrician [200 h]; Grounding System for each block [0.2] | 7,578.4 | A1040 |
| HFR1-05-2020 |  | Wiring Devices Sockets and outlets installations /all decices | 6d | 2026-07-06 | 2026-07-12 | HFR1-05-2010, HFR1-05-9340 | Labor [60 h]; Skilled Labor [120 h]; Electrician [240 h]; Grounding System for each block [0.24] | 9,131.97 | A1050 |
| HFR1-05-2030 |  | Fire Alarm system ( pipes-wires -conduits | 6d | 2026-07-15 | 2026-07-21 | HFR1-05-2020, HFR1-05-9880 | Labor [60 h]; Skilled Labor [120 h]; Electrician [240 h]; Wall mounted Addressable Fire Alarm Control Panel Complete [0.14] | 7,580.16 | A1060 |
| HFR1-05-2040 |  | Fire Alarm system Testing works | 6d | 2026-07-22 | 2026-07-28 | HFR1-05-2030 | Labor [60 h]; Skilled Labor [120 h]; Electrician [240 h]; Wall mounted Addressable Fire Alarm Control Panel Complete [0.14] | 7,580.16 | A1070 |
| HFR1-05-2050 |  | Power System and lighting and lightcurrent Preparation (Marking + Conduits + Boxes) | 6d | 2026-07-29 | 2026-08-04 | HFR1-05-2040, HFR1-05-9000, HFR1-05-9250, HFR1-05-9260, HFR1-05-9400, HFR1-05-10010, HFR1-05-2360, HFR1-05-2270 | Labor [60 h]; Skilled Labor [120 h]; Electrician [240 h]; LP: Lighting Power Panel [1.76] | 7,603.2 | A1080 |
| HFR1-05-2060 |  | Cable tray works (supports | 6d | 2026-08-05 | 2026-08-11 | HFR1-05-2050, HFR1-05-9460 | Labor [60 h]; Skilled Labor [120 h]; Electrician [240 h]; Perforated Cable Tray [52.7] | 7,588.8 | A1090 |
| HFR1-05-2070 |  | Power System and lighting and lightcurrent Testing (Continuity + Insulation) & Final Inspection | 6d | 2026-08-12 | 2026-08-18 | HFR1-05-2060, HFR1-05-9930, HFR1-05-9440, HFR1-05-2780 | Labor [60 h]; Skilled Labor [120 h]; Electrician [240 h]; LP: Lighting Power Panel [8] | 34,560 | A1110 |
| HFR1-05-2080 |  | Comission of Panel boards ( cables and testing) | 5d | 2026-08-19 | 2026-08-24 | HFR1-05-2070, HFR1-05-9420, HFR1-05-9290 | Labor [50 h]; Skilled Labor [100 h]; Electrician [200 h]; LP: Lighting Power Panel [8] | 34,560 | A1120 |
| HFR1-05-2090 |  | Low voltage cables | 4d | 2026-08-25 | 2026-08-29 | HFR1-05-2080, HFR1-05-9840 | Labor [40 h]; Skilled Labor [80 h]; Electrician [160 h]; Supply, install, test and commission Flexible ducts (Low Pressure), for connection to square exhaust diffuser and as per drawings and specification. [785] | 37,680 | A1130 |
| HFR1-05-2100 |  | Comission of Lighting Fixtures Installations /LED lighting | 4d | 2026-08-30 | 2026-09-02 | HFR1-05-2090, HFR1-05-9360 | Labor [40 h]; Skilled Labor [80 h]; Electrician [160 h]; Outdoor wall mounted LED lighting [76] | 39,368 | A1140 |
|  | 3 | **Hunger -2** |  | 2026-03-12 | 2026-09-26 |  |  |  |  |
|  | 7 | **Concrete works** |  | 2026-03-12 | 2026-03-29 |  |  |  |  |
| HFR1-05-1310 |  | SOG (Whole Factory) Rebar Mesh & MEP Sleeves | 4d | 2026-03-12 | 2026-03-16 | HFR1-05-3050 | Labor [160 h]; Skilled Labor [80 h]; Steel Fixer [160 h]; LABOR [63.02 h]; Steel Fixer [15.06 h]; Lean concrete under foundation and grade beams. [455] | 20,930 | 300 |
| HFR1-05-1320 |  | SOG (Whole Factory) Form work | 5d | 2026-03-12 | 2026-03-17 | HFR1-05-3050 | Labor [200 h]; Skilled Labor [100 h]; Carpenter [200 h]; LABOR [4.52 h]; Labours [2.91 h]; Carpenter [4.52 h]; Provide and cast 150 mm thk concrete floor slab on grade [24.36] | 22,411.2 | 301 |
| HFR1-05-1330 |  | SOG (Whole Factory) Inspection | 2d | 2026-03-17 | 2026-03-22 | HFR1-05-1310 | Skilled Labor [40 h]; LABOR [2 h]; Provide and cast 150 mm thk concrete floor slab on grade [144.02] | 132,498.4 | 302 |
| HFR1-05-1340 |  | SOG (Whole Factory) Concrete Pouring | 3d | 2026-03-23 | 2026-03-25 | HFR1-05-1330, HFR1-05-2440 | Labor [120 h]; Skilled Labor [90 h]; Mason [120 h]; CONCRETE MIixer [15.75 h]; LABOR [4.52 h]; Provide and cast 150 mm thk concrete floor slab on grade [70] | 64,400 | 303 |
| HFR1-05-1350 |  | SOG (Whole Factory) Curing | 3d | 2026-03-26 | 2026-03-29 | HFR1-05-1340 | Labor [30 h]; Skilled Labor [60 h]; LABOR [6.78 h]; Provide and cast 150 mm thk concrete floor slab on grade [36.13] | 33,239.6 | 304 |
| HFR1-05-1360 |  | SOG (Whole Factory) Vapor Barrier & Insulation | 2d | 2026-03-26 | 2026-03-28 | HFR1-05-1350 SS, HFR1-05-1320 | LABOR [5.27 h]; Provide and cast 150 mm thk concrete floor slab on grade [24.5] | 22,540 | 305 |
|  | 1 | **Steelstructure works** |  | 2026-04-14 | 2026-05-19 |  |  |  |  |
| HFR1-05-1370 |  | Rated Steel Bollards Concrete Base Casting | 2d | 2026-04-14 | 2026-04-15 | HFR1-05-1360, HFR1-05-1580, HFR1-05-1350, HFR1-05-1990, HFR1-05-2800, HFR1-05-2970 | Labor; Skilled Labor; Plumber; install steel bollards 1135mm height [500] | 510,000 | 306 |
| HFR1-05-1380 |  | Installation column steel & Steel Ladder | 6d | 2026-04-16 | 2026-04-22 | HFR1-05-1370 | Labor [160 h]; Skilled Labor [160 h]; Steel Fixer [320 h]; LABOR [96.95 h]; Metal Works tech [96.95 h]; install steel ladder with safety cage [100] | 648,000 | 307 |
| HFR1-05-1390 |  | Install beam Rafter | 6d | 2026-04-23 | 2026-04-29 | HFR1-05-1380 | Skilled Labor [160 h]; Steel Fixer [240 h]; LABOR [96.95 h]; Metal Works tech [96.95 h]; Size 400mm wide*4000mm long [240] | 207,360 | 308 |
| HFR1-05-1400 |  | Installation Purlin & bracing | 5d | 2026-04-23 | 2026-04-28 | HFR1-05-1390 SS | Skilled Labor [160 h]; Steel Fixer [160 h]; LABOR [96.95 h]; Metal Works tech [96.95 h]; Size 400mm wide*4000mm long [167.91] | 145,074.24 | 309 |
| HFR1-05-1410 |  | Fire rating required | 12d | 2026-04-29 | 2026-05-12 | HFR1-05-1400 | Skilled Labor [140 h]; LABOR [9.94 h]; Metal Works tech [96.95 h]; Size 400mm wide*4000mm long [400] | 345,600 | 310 |
| HFR1-05-1420 |  | Installation sandwich panel | 6d | 2026-05-13 | 2026-05-19 | HFR1-05-1410, HFR1-05-2480 | Skilled Labor [120 h]; LABOR [96.95 h]; Metal Works tech [96.95 h]; Size 400mm wide*4000mm long [2.7] | 2,332.8 | 311 |

| ID | WBS | Activity | Duration | Start | Finish | Predecessors | Resources | Cost | Old Activity ID-Alhasa |
| --- | --- | --- | --- | --- | --- | --- | --- | --- | --- |
|  | 4 | **Architectural** |  | 2026-03-24 | 2026-07-14 |  |  |  |  |
| HFR1-05-1430 |  | Block work | 10d | 2026-03-24 | 2026-04-04 | HFR1-05-2560 FS+1d | Labor [400 h]; Skilled Labor [200 h]; Mason [600 h]; LABOR [53.32 h]; at external walls (200mm thick insulated) [1576.41]; at electrical room (200mm thick, 2 hr fire rated) [2115.18] | 334,198.68 | 312 |
| HFR1-05-1440 |  | Plaster | 10d | 2026-04-05 | 2026-04-15 | HFR1-05-1430, HFR1-05-1350, HFR1-05-1320, HFR1-05-1360 | Labor [300 h]; Skilled Labor [200 h]; Mason [400 h]; LABOR [33.93 h]; Metal Works tech [33.93 h]; Supply and install 2 coats of acrylic paint at external walls and parapet including one coat of primer and two coats of putty to give smooth Surface as a base for paint including fiberglass tape to joints and all other accessories as per Modon specificati [410.56] | 14,780.16 | 313 |
| HFR1-05-1450 |  | Paint Primer + Putty + Final Coat INSIDE | 8d | 2026-05-04 | 2026-05-12 | HFR1-05-1440 FS+15d | Labor [80 h]; Skilled Labor [160 h]; Mason [240 h]; LABOR [33.93 h]; Tlles Fitter [33.93 h]; Supply and install 2 coats of acrylic paint at external walls and parapet including one coat of primer and two coats of putty to give smooth Surface as a base for paint including fiberglass tape to joints and all other accessories as per Modon specificati [410.56] | 14,780.16 | 314 |
| HFR1-05-1460 |  | Marble chips on external walls and grooves | 7d | 2026-05-04 | 2026-05-11 | HFR1-05-1450 SS | Labor [70 h]; Skilled Labor [140 h]; LABOR [33.93 h]; FINSHING Techtion [42.42 h]; Supply and install layer of marble chips on external walls and grooves to conform with specification requirements to complete the works as per drawing. Color and material is subject for Client approval. [75] | 3,600 | 315 |
| HFR1-05-1470 |  | GRC panels with the mechanical fixat | 15d | 2026-05-12 | 2026-06-01 | HFR1-05-1490 SS | Skilled Labor [300 h]; LABOR [33.93 h]; Painter [42.42 h]; Supply and install GRC panels with the mechanical fixations and whatever needed to do a perfect work, as shown in the drawings and specification [11] | 4,620 | 316 |
| HFR1-05-1480 |  | External Paint Primer + Final Coat | 7d | 2026-05-12 | 2026-05-19 | HFR1-05-1460 | Skilled Labor [140 h]; LABOR [33.93 h]; Supply and install 2 coats of acrylic paint at external walls and parapet including one coat of primer and two coats of putty to give smooth Surface as a base for paint including fiberglass tape to joints and all other accessories as per Modon specificati [202.5] | 7,290 | 317 |
| HFR1-05-1490 |  | Epoxy Paint | 15d | 2026-05-12 | 2026-06-01 | HFR1-05-1460 | Skilled Labor [300 h]; LABOR [33.93 h]; FINSHING Techtion [42.42 h]; Supply and apply epoxy paint to concrete surface in the factory area as shown in the drawings and specifications [183.33] | 10,999.8 | 318 |
| HFR1-05-1500 |  | Windows Glass Installation | 7d | 2026-05-20 | 2026-05-31 | HFR1-05-1480, HFR1-05-9480 | Carpenter [140 h]; LABOR [6.03 h]; Window W1 (size 1000*1300) [10.32] | 10,464.48 | 319 |
| HFR1-05-1510 |  | Cladding | 6d | 2026-06-01 | 2026-06-07 | HFR1-05-1500, HFR1-05-1420 | Labor [60 h]; Skilled Labor [60 h]; Carpenter [60 h]; LABOR [33.93 h]; Doors installer [42.42 h]; Supply and install aluminium cladding where material is approved by the Client, including sub-frames, all accessories and fittings, and whatever needed to do perfect work all as per drawing and specification. [29.53] | 11,280.46 | 320 |
| HFR1-05-1520 |  | Finishes floor Installation | 6d | 2026-06-02 | 2026-06-08 | HFR1-05-1470 | LABOR [33.93 h]; Doors installer [42.42 h]; Supply and apply epoxy paint to concrete surface in the factory area as shown in the drawings and specifications [2218.6] | 133,116 | 321 |
| HFR1-05-1530 |  | External Paint Touch-up & Inspection | 7d | 2026-06-08 | 2026-06-15 | HFR1-05-1520 SS, HFR1-05-1510 | Labor [70 h]; Skilled Labor [70 h]; Carpenter [140 h]; LABOR [33.93 h]; Painter [42.42 h]; Supply and install 300*300mm ceramic tiles with approved quality on 30 mm mortar including sand fill material as approved by the Client for toilets [71.47] | 7,289.94 | 322 |
| HFR1-05-1540 |  | Doors Installation | 7d | 2026-06-16 | 2026-06-23 | HFR1-05-1530 | Labor [140 h]; Skilled Labor [140 h]; Carpenter [140 h]; LABOR [33.93 h]; Doors installer [12.05 h]; install (D6) 3000*3500mm galvanized steel heavy duty industrial isolated type roll up shutter door [9.99] | 156,443.4 | 323 |
| HFR1-05-1550 |  | Metal works | 5d | 2026-06-24 | 2026-06-29 | HFR1-05-1540, HFR1-05-1540 FF | Labor [100 h]; Skilled Labor [50 h]; Steel Fixer [100 h]; ALHSA FACTORY [0.15 h]; LABOR [33.93 h]; FINSHING Techtion [42.42 h]; install steel ladder with safety cage [8.04] | 52,099.2 | 324 |
| HFR1-05-1560 |  | Signage Layout & Marking Locations | 5d | 2026-06-30 | 2026-07-05 | HFR1-05-1550, HFR1-05-9380 | Labor [100 h]; LABOR [38.78 h]; Doors installer [3.31 h]; Identification sign for toilets & prayer room [43] | 33,540 | 325 |
| HFR1-05-1570 |  | Specialites Fittings | 8d | 2026-07-06 | 2026-07-14 | HFR1-05-1550, HFR1-05-1560, HFR1-05-1420 | Labor [160 h]; Skilled Labor [160 h]; LABOR [53.32 h]; FINSHING Techtion [66.65 h]; Provide and install grab bars, surface mounted, satin finish stainless steel as per approved sample including accessories to complete as shown in the drawings and specification [187.5] | 22,500 | 326 |
|  | 5 | **MEP WORKS** |  | 2026-03-24 | 2026-09-26 |  |  |  |  |
|  | 1 | **Plumping-FIRE-HVAC** |  | 2026-03-24 | 2026-09-26 |  |  |  |  |
| HFR1-05-1590 |  | Drainage Preparation (Marking + Sleeves + Supports) | 6d | 2026-03-24 | 2026-03-30 | HFR1-05-1430 SS | Labor [240 h]; Plumber [120 h]; Pipe-Laying Worker [120 h]; LABOR [48.47 h]; plumber [48.47 h]; Supply, installation , testing & commissioning of condensate drain piping, complete as per drawings, specifications and method of measurement. [142.58] | 25,664.4 | 400 |
| HFR1-05-1600 |  | HVAC Ducting Preparation (Marking + Supports + Hangers) | 7d | 2026-03-31 | 2026-04-07 | HFR1-05-1590 | Labor [140 h]; Electrician [280 h]; LABOR [48.47 h]; AC tecntion [48.47 h]; Supply, install, test and commission indoor ductwork as per SMACNA Standards, complete, VD, duct tape, adhesive, duct sealant, hangers, supports and all other accessories, (Flanged TDC Type) and as per drawings and specification. [422.22] | 15,199.92 | 401 |
| HFR1-05-1610 |  | Roof drains | 4d | 2026-04-08 | 2026-04-12 | HFR1-05-1600 | Labor [80 h]; Plumber [80 h]; LABOR [48.47 h]; plumber [48.47 h]; Supply, installation , testing & commissioning of condensate drain piping, complete as per drawings, specifications and method of measurement. [142.58] | 25,664.4 | 403 |
| HFR1-05-1700 |  | Exasut fans works | 8d | 2026-04-08 | 2026-04-16 | HFR1-05-1600 | Labor [80 h]; Skilled Labor [160 h]; Electrician [320 h]; LABOR [48.47 h]; Exhaust fan 2351 CFM ex. Static 32 Pa for Factory area [0.5] | 2,400 | 412 |
| HFR1-05-1620 |  | Drainage Installation (Pipes + Traps + Connections) | 4d | 2026-04-13 | 2026-04-16 | HFR1-05-1610 | Labor [80 h]; Plumber [80 h]; Pipe-Laying Worker [80 h]; LABOR [48.47 h]; plumber [48.47 h]; 160 mm Pipe in trench not exceeding 2.00 m depth to invert [53.47] | 25,665.6 | 404 |
| HFR1-05-1630 |  | Gully trap works +Heavy duty covers | 4d | 2026-04-18 | 2026-04-21 | HFR1-05-1620 | Labor [40 h]; Plumber [80 h]; LABOR [48.47 h]; plumber [48.47 h]; Supply, install, test and commission Gully Traps with heavy duty cover and all other accessories as per drawings and specification. [38.89] | 25,667.4 | 405 |
| HFR1-05-1710 |  | Exhaust diffusers and grills | 6d | 2026-04-18 | 2026-04-23 | HFR1-05-1700 | Labor [60 h]; Skilled Labor [120 h]; Electrician [240 h]; LABOR [48.47 h]; AC tecntion [48.47 h]; Exhaust fan 2351 CFM ex. Static 32 Pa for Factory area [0.5] | 2,400 | 413 |
| HFR1-05-1640 |  | Fire Fighting Installation (Pipes + Fittings + Valves + Cabinets) | 12d | 2026-04-22 | 2026-05-05 | HFR1-05-1630 | Labor [80 h]; Skilled Labor [40 h]; Electrician [80 h]; LABOR [48.47 h]; Fire Pump system, Local code & UL/FM approved, meeting all NFPA requirements [0.14] | 50,400 | 406 |
| HFR1-05-1720 |  | Flexiable duct | 7d | 2026-04-25 | 2026-05-02 | HFR1-05-1710 | Labor [70 h]; Skilled Labor [140 h]; Electrician [280 h]; LABOR [48.47 h]; Flexiable duct [0.02]; AC tecntion [48.47 h] | 2,366.5 | 414 |
| HFR1-05-1730 |  | WATER SUPPLY SYSTEM | 13d | 2026-05-03 | 2026-05-17 | HFR1-05-1720 | Labor [80 h]; Skilled Labor [160 h]; Plumber [160 h]; Pipe-Laying Worker [160 h]; LABOR [48.47 h]; AC tecntion [48.47 h]; 63 mm Ø (2 1/2" Ø )Cold water [749.13] | 89,895.6 | 415 |
| HFR1-05-1650 |  | Water sprinkles | 10d | 2026-05-06 | 2026-05-17 | HFR1-05-1640 | Labor [40 h]; Plumber [40 h]; LABOR [48.47 h]; 200 mm Ø [92.99] | 25,665.24 | 407 |
| HFR1-05-1660 |  | Floor drains installations | 16d | 2026-05-18 | 2026-06-08 | HFR1-05-1650 | Labor [40 h]; Plumber [80 h]; LABOR [48.47 h]; plumber [48.47 h]; Supply, installation , testing & commissioning of condensate drain piping, complete as per drawings, specifications and method of measurement. [142.58] | 25,664.4 | 408 |
| HFR1-05-1740 |  | HVAC DuctingInstallation (Ducts + Fittings + Accessories) | 16d | 2026-05-18 | 2026-06-08 | HFR1-05-1730 | Labor [70 h]; Skilled Labor [70 h]; Electrician [140 h]; LABOR [48.47 h]; AC tecntion [48.47 h]; Supply, install, test and commission indoor ductwork as per SMACNA Standards, complete, VD, duct tape, adhesive, duct sealant, hangers, supports and all other accessories, (Flanged TDC Type) and as per drawings and specification. [1692.56] | 60,932.16 | 416 |
| HFR1-05-1670 |  | Internal ducts (duct sealent+hangers+supports | 18d | 2026-06-09 | 2026-06-29 | HFR1-05-1660 | Labor [60 h]; Skilled Labor [120 h]; Electrician [240 h]; LABOR [48.47 h]; AC tecntion [48.47 h]; Supply, install, test and commission indoor ductwork as per SMACNA Standards, complete, VD, duct tape, adhesive, duct sealant, hangers, supports and all other accessories, (Flanged TDC Type) and as per drawings and specification. [65.74] | 2,366.64 | 409 |
| HFR1-05-1750 |  | Mini split units indoor | 16d | 2026-06-09 | 2026-06-27 | HFR1-05-1740 | Labor [70 h]; Skilled Labor [70 h]; Electrician [140 h]; LABOR [48.47 h]; AC tecntion [48.47 h]; Complete road crossing duct bank for street lighting cables including pipes [8.96] | 2,365.44 | 417 |
| HFR1-05-1760 |  | OS Y GAte valves ,installations and testing | 13d | 2026-06-28 | 2026-07-12 | HFR1-05-1750 | Labor [70 h]; Skilled Labor [70 h]; Electrician [140 h]; LABOR [48.47 h]; AC tecntion [48.47 h]; Supply, install, testing and commission Fire Alarm Check Valve (ACV) assembly with OS&Y gate valve 6" Ø, complete with accessories.as per drawing and specifications [0.33] | 2,376 | 417-1 |
| HFR1-05-1680 |  | Fire house cabinet works | 19d | 2026-06-30 | 2026-07-21 | HFR1-05-1670 | Labor [80 h]; Skilled Labor [160 h]; Electrician [320 h]; LABOR [48.47 h]; Fire Pump system, Local code & UL/FM approved, meeting all NFPA requirements [0.14] | 50,400 | 410 |
| HFR1-05-1770 |  | Fire Alarm system Devices installations | 15d | 2026-07-13 | 2026-07-29 | HFR1-05-1760 | Labor [150 h]; Skilled Labor [150 h]; Electrician [300 h]; LABOR [48.47 h]; electrical tection [48.47 h]; Wall mounted Addressable Fire Alarm Control Panel Complete [0.97] | 52,147.2 | 417-1-1 |
| HFR1-05-1690 |  | Inspection chambers with heavu duty covers | 16d | 2026-07-22 | 2026-08-09 | HFR1-05-1680 | Labor [80 h]; Skilled Labor [160 h]; Plumber [160 h]; LABOR [48.47 h]; Supply, install, test and commission Gully Traps with heavy duty cover and all other accessories as per drawings and specification. [38.89] | 25,667.4 | 411 |
| HFR1-05-1780 |  | HVAC Ducting Testing (Leak Test) & Final Inspection | 16d | 2026-07-30 | 2026-08-17 | HFR1-05-1770, HFR1-05-1570 | Labor [70 h]; Skilled Labor [70 h]; Electrician [140 h]; LABOR [48.47 h]; AC tecntion [48.47 h]; Supply, install, test and commission Flexible ducts (Low Pressure), for connection to square exhaust diffuser and as per drawings and specification. [1269.42] | 60,932.16 | 417-1-2 |
| HFR1-05-1790 |  | Testing plumping system & Final Inspection | 16d | 2026-08-18 | 2026-09-05 | HFR1-05-1780 | Labor [20 h]; Skilled Labor [20 h]; Electrician [40 h]; LABOR [48.47 h]; plumber [48.47 h]; Supply, install, test and commission Flexible ducts (Low Pressure), for connection to square exhaust diffuser and as per drawings and specification. [534.69] | 25,665.12 | 417-1-3 |
| HFR1-05-1800 |  | Fire Fighting Testing (Hydrostatic Test) & Final Inspection | 17d | 2026-09-06 | 2026-09-26 | HFR1-05-1790, HFR1-05-1570, HFR1-05-1690 | Labor [50 h]; Skilled Labor [50 h]; Electrician [100 h]; LABOR [48.47 h]; install fire rated 45 min. (D5) 1000*2200mm single leaf steel door with door construction type C [20.68] | 52,113.6 | 418 |

| ID | WBS | Activity | Duration | Start | Finish | Predecessors | Resources | Cost | Old Activity ID-Alhasa |
| --- | --- | --- | --- | --- | --- | --- | --- | --- | --- |
|  | 2 | **Electrical Works** |  | 2026-04-05 | 2026-07-08 |  |  |  |  |
| HFR1-05-2110 |  | Socket and Outlets accessiors &Disconnect Switches Installations | 5d | 2026-04-05 | 2026-04-09 | HFR1-05-1430 | Labor [50 h]; Skilled Labor [100 h]; Electrician [200 h]; Wall mounted Duplex Socket [24.8] | 9,126.4 | A1150 |
| HFR1-05-2120 |  | Grounding system (conductors) | 5d | 2026-04-11 | 2026-04-15 | HFR1-05-2110 | Labor [50 h]; Skilled Labor [100 h]; Electrician [200 h]; Grounding System for each block [0.2] | 7,578.4 | A1160 |
| HFR1-05-2130 |  | Light current devices installations & Final Inspection | 5d | 2026-04-16 | 2026-04-21 | HFR1-05-2120 | Labor [50 h]; Skilled Labor [100 h]; Electrician [200 h]; LP: Lighting Power Panel [2.18] | 9,417.6 | A1170 |
| HFR1-05-2140 |  | Solar Power Plant (cable-inverter +panels | 5d | 2026-04-22 | 2026-04-27 | HFR1-05-2130 | Labor [50 h]; Skilled Labor [100 h]; Electrician [200 h]; Solar Power Plant [0.15] | 8,761.2 | A1180 |
| HFR1-05-2150 |  | Grounding system (cable from electrical & telecom systems | 5d | 2026-04-28 | 2026-05-03 | HFR1-05-2140 | Labor [50 h]; Skilled Labor [100 h]; Electrician [200 h]; Grounding System for each block [0.2] | 7,578.4 | A1190 |
| HFR1-05-2160 |  | Wiring Devices Sockets and outlets installations /all decices | 6d | 2026-05-04 | 2026-05-10 | HFR1-05-2150 | Labor [60 h]; Skilled Labor [120 h]; Electrician [240 h]; Grounding System for each block [0.24] | 9,131.97 | A1200 |
| HFR1-05-2170 |  | Fire Alarm system ( pipes-wires -conduits | 6d | 2026-05-11 | 2026-05-17 | HFR1-05-2160 | Labor [60 h]; Skilled Labor [120 h]; Electrician [240 h]; Wall mounted Addressable Fire Alarm Control Panel Complete [0.14] | 7,580.16 | A1210 |
| HFR1-05-2180 |  | Fire Alarm system Testing works | 6d | 2026-05-18 | 2026-05-24 | HFR1-05-2170 | Labor [60 h]; Skilled Labor [120 h]; Electrician [240 h]; Wall mounted Addressable Fire Alarm Control Panel Complete [0.14] | 7,580.16 | A1220 |
| HFR1-05-2190 |  | Power System and lighting and lightcurrent Preparation (Marking + Conduits + Boxes) | 6d | 2026-05-25 | 2026-06-03 | HFR1-05-2180 | Labor [60 h]; Skilled Labor [120 h]; Electrician [240 h]; LP: Lighting Power Panel [1.76] | 7,590.24 | A1230 |
| HFR1-05-2200 |  | Cable tray works (supports | 6d | 2026-06-04 | 2026-06-10 | HFR1-05-2190 | Labor [60 h]; Skilled Labor [120 h]; Electrician [240 h]; Perforated Cable Tray [52.7] | 7,588.8 | A1240 |
| HFR1-05-2210 |  | Power System and lighting and lightcurrent Testing (Continuity + Insulation) & Final Inspection | 6d | 2026-06-11 | 2026-06-17 | HFR1-05-2200 | Labor [60 h]; Skilled Labor [120 h]; Electrician [240 h]; LP: Lighting Power Panel [8] | 34,560 | A1250 |
| HFR1-05-2220 |  | Comission of Panel boards ( cables and testing) | 6d | 2026-06-18 | 2026-06-24 | HFR1-05-2210 | Labor [60 h]; Skilled Labor [120 h]; Electrician [240 h]; LP: Lighting Power Panel [8] | 34,560 | A1260 |
| HFR1-05-2230 |  | Low voltage cables | 6d | 2026-06-25 | 2026-07-01 | HFR1-05-2220 | Labor [60 h]; Skilled Labor [120 h]; Electrician [240 h]; Supply, install, test and commission Flexible ducts (Low Pressure), for connection to square exhaust diffuser and as per drawings and specification. [785] | 37,680 | A1270 |
| HFR1-05-2240 |  | Comission of Lighting Fixtures Installations /LED lighting | 6d | 2026-07-02 | 2026-07-08 | HFR1-05-2230 | Labor [60 h]; Skilled Labor [120 h]; Electrician [240 h]; Outdoor wall mounted LED lighting [76] | 39,368 | A1280 |
|  | 1 | **Septic Tank** |  | 2026-03-10 | 2026-06-28 |  |  |  |  |
|  | 1 | **Concrete Works** |  | 2026-03-10 | 2026-05-12 |  |  |  |  |
| HFR1-05-1100 |  | Tank FoundationRebar Fixing | 6d | 2026-03-10 | 2026-03-16 | HFR1-05-2430 SS, HFR1-05-8620, HFR1-05-8640, HFR1-05-8650 | Labor [240 h]; Skilled Labor [120 h]; Steel Fixer [240 h]; LABOR [12.12 h]; Steel Fixer [30.3 h]; Tank Footing [3] | 3,240 | 120 |
| HFR1-05-1110 |  | Tank Foundation Formwork | 5d | 2026-03-17 | 2026-03-25 | HFR1-05-1100, HFR1-05-8630 | Labor [200 h]; Skilled Labor [100 h]; Carpenter [200 h]; LABOR [12.12 h]; Carpenter [12.12 h]; Tank Footing [5] | 5,400 | 121 |
| HFR1-05-1120 |  | Tank Foundation Inspection | 3d | 2026-03-26 | 2026-03-29 | HFR1-05-1110 | Skilled Labor [60 h]; LABOR [12.12 h]; Tank Footing [6.23] | 6,728.4 | 122 |
| HFR1-05-1130 |  | Tank Foundation Concrete Pouring | 3d | 2026-03-30 | 2026-04-01 | HFR1-05-1120 | Labor [120 h]; Skilled Labor [90 h]; Mason [120 h]; CONCRETE MIixer [6.06 h]; LABOR [12.12 h]; Tank Footing [9] | 9,720 | 123 |
| HFR1-05-1140 |  | Tank Foundation Curing | 3d | 2026-04-02 | 2026-04-05 | HFR1-05-1130 | Labor [60 h]; LABOR [0.75 h]; Tank Footing [8] | 8,640 | 124 |
| HFR1-05-1150 |  | Tank Walls Rebar Fixing | 5d | 2026-04-06 | 2026-04-11 | HFR1-05-1140 | Labor [200 h]; Skilled Labor [100 h]; Steel Fixer [200 h]; LABOR [0.9 h]; Steel Fixer [30.3 h]; Tank Walls [6] | 7,920 | 125 |
| HFR1-05-1160 |  | Tank Walls Formwork | 6d | 2026-04-12 | 2026-04-18 | HFR1-05-1150 | Labor [240 h]; Skilled Labor [120 h]; Carpenter [240 h]; LABOR [0.9 h]; Carpenter [0.9 h]; Tank Walls [4.11] | 5,425.2 | 126 |
| HFR1-05-1170 |  | Tank Walls Inspection | 4d | 2026-04-19 | 2026-04-22 | HFR1-05-1160 | Skilled Labor [80 h]; LABOR [0.9 h]; Tank Walls [4.48] | 5,913.6 | 127 |
| HFR1-05-1180 |  | Tank Walls Concrete Pouring | 3d | 2026-04-23 | 2026-04-26 | HFR1-05-1170 | Labor [120 h]; Skilled Labor [90 h]; Mason [120 h]; CONCRETE MIixer [0.3 h]; LABOR [0.9 h]; Tank Walls [6] | 7,920 | 128 |
| HFR1-05-1190 |  | Tank Slab Rebar Fixing | 3d | 2026-04-27 | 2026-04-29 | HFR1-05-1180 | Labor [60 h]; LABOR [0.9 h]; Steel Fixer [0.9 h]; Tank Slab [1.99] | 2,555.16 | 129 |
| HFR1-05-1200 |  | Tank Slab Formwork | 3d | 2026-04-30 | 2026-05-03 | HFR1-05-1190 | Labor [120 h]; Skilled Labor [60 h]; Carpenter [120 h]; LABOR [12.12 h]; Carpenter [12.12 h]; Tank Slab [2] | 2,568 | 130 |
| HFR1-05-1210 |  | Tank Slab Inspection | 2d | 2026-05-04 | 2026-05-05 | HFR1-05-1200 | Skilled Labor [40 h]; LABOR [12.12 h]; Tank Slab [2] | 2,568 | 131 |
| HFR1-05-1220 |  | Tank Slab Concrete Pouring | 3d | 2026-05-06 | 2026-05-09 | HFR1-05-1210 | Labor [120 h]; Skilled Labor [90 h]; Mason [120 h]; CONCRETE MIixer [6.06 h]; LABOR [12.12 h]; Tank Slab [2] | 2,568 | 132 |
| HFR1-05-1230 |  | Tank Slab Curing | 3d | 2026-05-10 | 2026-05-12 | HFR1-05-1220 | Skilled Labor [60 h]; LABOR [12.12 h]; Tank Slab [2] | 2,568 | 133 |

| ID | WBS | Activity | Duration | Start | Finish | Predecessors | Resources | Cost | Old Activity ID-Alhasa |
| --- | --- | --- | --- | --- | --- | --- | --- | --- | --- |
|  | 2 | **Insulation works** |  | 2026-05-13 | 2026-06-28 |  |  |  |  |
| HFR1-05-2280 |  | Polyurethane Waterproof Coating internal insulation | 2d | 2026-05-13 | 2026-05-14 | HFR1-05-1230 | Labor [80 h]; Skilled Labor [40 h]; Carpenter [20 h]; Steel Fixer [20 h]; Mason [20 h]; LABOR [7.27 h]; Insulation Tection [7.23 h]; Insulation Tection [7.27 h]; Supply and install polyurethane waterpoof coating to internal surfaces of concrete trench [17.08] | 1,229.76 | B1 |
| HFR1-05-2290 |  | APP membrane 4mm External insulation | 2d | 2026-05-16 | 2026-05-17 | HFR1-05-2280 | Labor [80 h]; Skilled Labor [40 h]; Carpenter [20 h]; Steel Fixer [20 h]; Mason [20 h]; LABOR [9.69 h]; Insulation Tection [9.69 h]; Supply and install 4mm thick APP modified bituminous membrane - single layer [226] | 7,684 | B2 |
| HFR1-05-2300 |  | Extruded polystyrene External insulation | 5d | 2026-05-18 | 2026-05-23 | HFR1-05-2290 | Labor [200 h]; Skilled Labor [100 h]; Carpenter [50 h]; Steel Fixer [50 h]; Mason [50 h]; LABOR [12.12 h]; Insulation Tection [7.23 h]; Insulation Tection [12.12 h]; Supply and install 50mm thk rigid insulation (extruded polystyrene) [142.67] | 6,848.16 | B2-1 |
| HFR1-05-2310 |  | Geotextile sheet External insulation | 6d | 2026-05-24 | 2026-06-02 | HFR1-05-2300 | Labor [240 h]; Skilled Labor [120 h]; Carpenter [60 h]; Steel Fixer [60 h]; Mason [60 h]; LABOR [12.12 h]; Insulation Tection [7.23 h]; Insulation Tection [12.12 h]; Supply and install geotextile sheet [226] | 2,260 | B3 |
| HFR1-05-2320 |  | Protection board / insulation | 6d | 2026-06-03 | 2026-06-09 | HFR1-05-2310 | Labor [240 h]; Skilled Labor [120 h]; Carpenter [60 h]; Steel Fixer [60 h]; Mason [60 h]; LABOR [7.23 h]; LABOR [7.27 h]; Insulation Tection [7.27 h]; Supply and install geotextile sheet [949.2] | 9,492 | B4 |
| HFR1-05-9590 |  | Sewage tank | 5d | 2026-06-10 | 2026-06-15 | HFR1-05-2320 | Labor [150 h]; Skilled Labor [100 h]; Plumber [100 h]; Pipe-Laying Worker [200 h]; LABOR [12.12 h]; Insulation Tection [12.12 h]; Sewage tank with dimensions (8x4x3m) [0.13] | 11,700 | L6 |
| HFR1-05-9600 |  | Heavy duty cover installations | 4d | 2026-06-16 | 2026-06-20 | HFR1-05-9590 | Labor [40 h]; Skilled Labor [80 h]; Carpenter [40 h]; LABOR [12.12 h]; Insulation Tection [12.12 h]; install (D6) 3000*3500mm galvanized steel heavy duty industrial isolated type roll up shutter door [1.33] | 20,827.8 | L8 |
| HFR1-05-9610 |  | Backfilling | 7d | 2026-06-21 | 2026-06-28 | HFR1-05-9600 | Excavator [70 h]; Water Tanker [70 h]; Truck [350 h]; Bobcat [280 h]; Labor [210 h]; Eq. Operator [770 h]; LABOR [12.12 h]; Insulation Tection [12.12 h]; Backfilling [478.06] | 15,775.98 | L9 |
|  | 9 | **Mosque -elec room-Toilets Works** |  | 2026-03-26 | 2026-07-27 |  |  |  |  |
|  | 12 | **Concrete works** |  | 2026-03-26 | 2026-05-05 |  |  |  |  |
| HFR1-05-9660 |  | Beam--steel rebar | 4d | 2026-03-26 | 2026-03-30 | HFR1-05-1310, HFR1-05-1340, HFR1-05-8660, HFR1-05-8670, HFR1-05-8680, HFR1-05-8690 | Labor [160 h]; Skilled Labor [80 h]; Steel Fixer [160 h]; CONCRETE MIixer [6.06 h]; LABOR [12.12 h]; Carpenter [12.12 h]; Grade beams [3.35] | 3,467.25 | N1 |
| HFR1-05-9670 |  | Beam-from work | 4d | 2026-03-31 | 2026-04-04 | HFR1-05-9660 | Labor [160 h]; Skilled Labor [80 h]; Carpenter [160 h]; LABOR [12.12 h]; Carpenter [12.12 h]; Grade beams [3.35] | 3,467.25 | N2 |
| HFR1-05-9680 |  | Beam-Inspection | 1d | 2026-04-05 | 2026-04-05 | HFR1-05-9670 | Skilled Labor [20 h]; LABOR [12.12 h]; Grade beams [5.64] | 5,837.4 | N3 |
| HFR1-05-9690 |  | Beam Concrete Pouring | 3d | 2026-04-06 | 2026-04-08 | HFR1-05-9680 | Labor [120 h]; Skilled Labor [90 h]; Mason [120 h]; CONCRETE MIixer [6.06 h]; LABOR [12.12 h]; Grade beams [3] | 3,105 | N4 |
| HFR1-05-9700 |  | Beam-Curing | 3d | 2026-04-09 | 2026-04-12 | HFR1-05-9690 | Labor [60 h]; LABOR [12.12 h]; Grade beams [4] | 4,140 | N5 |
| HFR1-05-9710 |  | Concrete works for slab -steel rebar | 5d | 2026-04-13 | 2026-04-18 | HFR1-05-9700 | Labor [200 h]; Skilled Labor [100 h]; Steel Fixer [200 h]; LABOR [12.12 h]; Steel Fixer [30.3 h]; Roof Slab [3] | 3,465 | N6 |
| HFR1-05-9720 |  | Concrete works for slab -from work | 4d | 2026-04-19 | 2026-04-22 | HFR1-05-9710 | Labor [160 h]; Skilled Labor [80 h]; Carpenter [160 h]; LABOR [12.12 h]; Carpenter [12.12 h]; Roof Slab [3] | 3,465 | N7 |
| HFR1-05-9730 |  | Slabs Inspection | 2d | 2026-04-23 | 2026-04-25 | HFR1-05-9720 | Skilled Labor [40 h]; LABOR [12.12 h]; Roof Slab [3] | 3,465 | N8 |
| HFR1-05-9740 |  | Slabs Concrete Pouring | 2d | 2026-04-26 | 2026-04-27 | HFR1-05-9730 | Labor [80 h]; Skilled Labor [60 h]; Mason [80 h]; LABOR [12.12 h]; Roof Slab [3] | 3,465 | N9 |
| HFR1-05-9750 |  | Slabs Curing | 3d | 2026-04-28 | 2026-04-30 | HFR1-05-9740 | Labor [60 h]; LABOR [12.12 h]; Roof Slab [3] | 3,465 | N9-1 |
| HFR1-05-9760 |  | SLab removal of form works | 4d | 2026-05-02 | 2026-05-05 | HFR1-05-9750 | Labor [280 h]; LABOR [14.54 h]; Carpenter [14.54 h]; Roof Slab [3] | 3,465 | N9-2 |
|  | 4 | **Architectural** |  | 2026-05-02 | 2026-07-27 |  |  |  |  |
|  | 1 | **Finishes** |  | 2026-05-02 | 2026-07-12 |  |  |  |  |
| HFR1-05-3370 |  | Block works -internal | 7d | 2026-05-02 | 2026-05-09 | HFR1-05-3380 SS | Labor [140 h]; Skilled Labor [70 h]; Mason [280 h]; LABOR [7.27 h]; Mason [18.18 h]; at internal walls (100mm thick) [104.44] | 7,519.68 | HAS3-13050 |
| HFR1-05-3380 |  | Fire rated blocks for elec rooms | 7d | 2026-05-02 | 2026-05-09 | HFR1-05-9750 | Labor [140 h]; Skilled Labor [140 h]; LABOR [12.12 h]; Mason [30.3 h]; at electrical room (200mm thick, 2 hr fire rated) [42.53] | 3,359.87 | HAS3-13060 |
| HFR1-05-3440 |  | External plaster | 7d | 2026-05-10 | 2026-05-17 | HFR1-05-9760, HFR1-05-3380 | Labor [140 h]; Skilled Labor [70 h]; Mason [280 h]; LABOR [12.12 h]; mason plaster [12.12 h]; Supply and install internal plastering to walls and columns min. 15mm thick with cement mortar of specified grade including galvanized mesh, corner beads, angle beads, CE bonds to rough and smooth plaster complete the work as per drawing & specification. [290] | 9,860 | HAS3-13280 |
| HFR1-05-3490 |  | granite Insulation (extruded polystyrene) | 5d | 2026-05-18 | 2026-05-23 | HFR1-05-3440, HFR1-05-3370 | Labor [100 h]; Skilled Labor [100 h]; LABOR [12.12 h]; Insulation Tection [12.12 h]; Supply and install granite tiles including mortar and sand fill and all the required accessories to complete the works as per drawings and specifications with approved quality by the Client [4.88] | 1,229.76 | HAS3-13350 |
| HFR1-05-3520 |  | foam concrete screed 50mm | 5d | 2026-05-24 | 2026-06-01 | HFR1-05-3490 | Labor [100 h]; Skilled Labor [100 h]; Mason [200 h]; LABOR [12.12 h]; FINSHING Techtion [30.3 h]; Supply and cast in place foam concrete screed 50mm thk minimum laid to fall and cross fall [317.16] | 10,783.44 | HAS3-13410 |
| HFR1-05-3640 |  | Block works -External | 5d | 2026-06-02 | 2026-06-07 | HFR1-05-3520 | Labor [100 h]; Skilled Labor [50 h]; Mason [200 h]; LABOR [12.12 h]; Mason [30.3 h]; at internal walls (100mm thick) [64.13] | 4,617.36 | HAS3-13800 |
| HFR1-05-3710 |  | Plaster FIRST Fix -dotted and spalsh coats | 5d | 2026-06-08 | 2026-06-13 | HFR1-05-3640 | Labor [100 h]; Electrician [250 h]; LABOR [12.12 h]; Supply and install internal plastering to walls and columns min. 15mm thick with cement mortar of specified grade including galvanized mesh, corner beads, angle beads, CE bonds to rough and smooth plaster complete the work as per drawing & specification. [56] | 1,904 | HAS3-14020 |
| HFR1-05-3760 |  | Plaster Application (Scratch + Brown + Final) | 5d | 2026-06-14 | 2026-06-18 | HFR1-05-3640, HFR1-05-3720 | Labor [100 h]; Skilled Labor [100 h]; Mason [200 h]; LABOR [4.85 h]; Supply and install external plastering to external walls min. 15mm thick with cement mortar of specified grade including galvanized mesh, corner beads, angle beads, CE bonds to rough and smooth plaster complete the work as per drawing & specification. [93.33] | 3,359.88 | HAS3-14100 |
| HFR1-05-3860 |  | external Paint Surface Preparation INSIDE | 5d | 2026-06-20 | 2026-06-24 | HFR1-05-3760, HFR1-05-3710 | Labor [100 h]; Skilled Labor [100 h]; Mason [200 h]; LABOR [12.12 h]; Painter [24.24 h]; Supply and apply epoxy paint to concrete surface in the factory area as shown in the drawings and specifications [79.2] | 4,752 | HAS3-14200 |
| HFR1-05-3870 |  | Gypsum Sanding & Final Inspection | 8d | 2026-06-20 | 2026-06-28 | HFR1-05-3760 | Labor [160 h]; Skilled Labor [160 h]; LABOR [12.12 h]; FINSHING Techtion [30.3 h]; Supply and install 12.5mm thk, moisture resistant gypsum board suspended ceiling including suspension system, paints as required specification and material as approved by the Client including frames supports, access openings and all other accessories to [12.39] | 1,486.8 | HAS3-14210 |
| HFR1-05-3880 |  | Waterproofing for wet areas | 8d | 2026-06-20 | 2026-06-28 | HFR1-05-3760, HFR1-05-3710 | Labor [160 h]; LABOR [4.85 h]; Insulation Tection [4.85 h]; liquid applied waterproofing membrane [39.49] | 3,080.22 | HAS3-14220 |
| HFR1-05-3890 |  | APP modified bituminous membrane | 5d | 2026-06-20 | 2026-06-24 | HFR1-05-3760, HFR1-05-3710 | Labor [100 h]; LABOR [12.12 h]; Insulation Tection [12.12 h]; Supply and install 4mm thick APP modified bituminous membrane - single layer [1050] | 35,700 | HAS3-14230 |
| HFR1-05-3900 |  | External Paint Surface Preparation | 5d | 2026-06-20 | 2026-06-24 | HFR1-05-3760 | Labor [100 h]; Skilled Labor [100 h]; Mason [100 h]; LABOR [9.69 h]; Supply and apply epoxy paint to concrete surface in the factory area as shown in the drawings and specifications [67.2] | 4,032 | HAS3-14240 |
| HFR1-05-3980 |  | aluminum framed double glazed windows | 5d | 2026-06-25 | 2026-06-30 | HFR1-05-3900 | Labor [100 h]; Skilled Labor [100 h]; LABOR [12.12 h]; Doors installer [30.3 h]; Supply and install aluminium cladding where material is approved by the Client, including sub-frames, all accessories and fittings, and whatever needed to do perfect work all as per drawing and specification. [26.54] | 10,138.28 | HAS3-14410 |
| HFR1-05-4000 |  | Paint Primer + Putty + Final Coat INSIDE | 5d | 2026-06-25 | 2026-06-30 | HFR1-05-3760, HFR1-05-3710, HFR1-05-3860, HFR1-05-3900 | Labor [100 h]; Skilled Labor [100 h]; Mason [100 h]; LABOR [12.12 h]; Provide and apply 2 coats of bitumen waterproofing paint on concrete surface in contact with soil. [105.23] | 2,315.06 | HAS3-14430 |
| HFR1-05-4010 |  | Internal Paint Touch-up & Inspection INSIDE | 5d | 2026-06-25 | 2026-06-30 | HFR1-05-3760, HFR1-05-3710, HFR1-05-3980 SS | Labor [100 h]; Skilled Labor [100 h]; Mason [100 h]; LABOR [4.85 h]; Supply and install 2 coats of acrylic paint at external walls and parapet including one coat of primer and two coats of putty to give smooth Surface as a base for paint including fiberglass tape to joints and all other accessories as per Modon specificati [93.33] | 3,359.88 | HAS3-14440 |
| HFR1-05-4020 |  | Supply and install carpet rolls | 5d | 2026-06-25 | 2026-06-30 | HFR1-05-3890 | Labor [100 h]; Skilled Labor [100 h]; Mason [100 h]; LABOR [12.12 h]; Insulation Tection [12.12 h]; Supply and install carpet rolls to prayer room including all the accessories to complete the work with approved quality by the Client as shown in the drawings and specifications [68.84] | 9,499.92 | HAS3-14450 |
| HFR1-05-3950 |  | 300 micron polyethylene sheet | 4d | 2026-06-29 | 2026-07-02 | HFR1-05-3880 | Labor [80 h]; Skilled Labor [80 h]; Mason [160 h]; LABOR [12.12 h]; Insulation Tection [12.12 h]; Polyisocynurate sandwich panel (100 mm) for external walls and roof and rock wool for internal wall fire rated for 1 Hour [0.01] | 4,835.7 | HAS3-14390 |
| HFR1-05-3970 |  | polyisocynurate cover board | 5d | 2026-06-29 | 2026-07-04 | HFR1-05-3880 | Labor [100 h]; Skilled Labor [100 h]; LABOR [12.12 h]; Insulation Tection [12.12 h]; Polyisocynurate sandwich panel (100 mm) for external walls and roof and rock wool for internal wall fire rated for 1 Hour [0.01] | 9,671.4 | HAS3-14400 |
| HFR1-05-4070 |  | Ceramic walls for toilets | 5d | 2026-06-30 | 2026-07-05 | HFR1-05-3930 | Labor [100 h]; Skilled Labor [100 h]; Mason [100 h]; Plumber [100 h]; LABOR [12.12 h]; Supply and install 300*300mm glazed ceramic wall tiles on cement mortar and including rough and smooth plaster, galvanized mesh, corner beads, angle beads, CE bonds (For Toilets) [58.85] | 7,650.5 | HAS3-14550 |
| HFR1-05-4120 |  | External Paint Primer + Final Coat | 5d | 2026-07-01 | 2026-07-06 | HFR1-05-4010 | Labor [100 h]; Skilled Labor [100 h]; LABOR [12.12 h]; Painter [24.24 h]; Supply and apply epoxy paint to concrete surface in the factory area as shown in the drawings and specifications [33.6] | 2,016 | HAS3-14610 |
| HFR1-05-4130 |  | Gypsum Framing Installation For mospue and toilets | 5d | 2026-07-01 | 2026-07-06 | HFR1-05-4010 | Labor [50 h]; Skilled Labor [50 h]; Carpenter [100 h]; Steel Fixer [100 h]; LABOR [12.12 h]; FINSHING Techtion [30.3 h]; Supply and install 12.5mm thk, gypsum board suspended ceiling including suspension system, paints as required specification and material as approved by the Client including frames supports, access openings and all other accessories to complete as shown i [14.51] | 1,654.14 | HAS3-14620 |
| HFR1-05-4080 |  | Roof drains | 5d | 2026-07-04 | 2026-07-08 | HFR1-05-3950 | Labor [100 h]; Skilled Labor [100 h]; Plumber [100 h]; LABOR [12.12 h]; plumber [12.12 h]; Supply, installation , testing & commissioning of condensate drain piping, complete as per drawings, specifications and method of measurement. [18.67] | 3,360.6 | HAS3-14570 |
| HFR1-05-4090 |  | 50mm thk loose gravel toppings | 4d | 2026-07-04 | 2026-07-07 | HFR1-05-3950 | Excavator [40 h]; Loader [40 h]; Water Tanker [40 h]; Grider [40 h]; Truck [160 h]; Labor [80 h]; Skilled Labor [80 h]; Eq. Operator [320 h]; LABOR [12.12 h]; Insulation Tection [12.12 h]; Supply and install 50mm thk loose gravel toppings [66.67] | 1,200.06 | HAS3-14580 |
| HFR1-05-4160 |  | Ceramic tiles for toilets | 5d | 2026-07-06 | 2026-07-11 | HFR1-05-4070 | Labor [100 h]; Skilled Labor [100 h]; Carpenter [50 h]; Mason [100 h]; LABOR [12.12 h]; Supply and install 300*300mm glazed ceramic wall tiles on cement mortar and including rough and smooth plaster, galvanized mesh, corner beads, angle beads, CE bonds (For Toilets) [58.85] | 7,650.5 | HAS3-14660 |
| HFR1-05-4180 |  | geotextile sheets | 5d | 2026-07-06 | 2026-07-11 | HFR1-05-4070 | Labor [100 h]; Skilled Labor [100 h]; Mason [100 h]; LABOR [6.03 h]; LABOR [12.12 h]; Insulation Tection [12.12 h]; Supply and install geotextile sheet [124.5] | 1,245 | HAS3-14680 |
| HFR1-05-4220 |  | install fire rated door+ with hardware set type HW2 paint finish | 5d | 2026-07-07 | 2026-07-12 | HFR1-05-4130 | Labor [100 h]; Electrician [200 h]; LABOR [12.12 h]; Doors installer [30.3 h]; install fire rated 45 min. (D5) 1000*2200mm single leaf steel door with door construction type C [0.74] | 1,864.8 | HAS3-14730 |
| HFR1-05-4230 |  | External Paint Touch-up & Inspection | 5d | 2026-07-07 | 2026-07-12 | HFR1-05-4120 | Labor [100 h]; Skilled Labor [50 h]; Mason [150 h]; LABOR [12.12 h]; Painter [24.24 h]; Supply and install 2 coats of acrylic paint at internal walls and roof including one coat of primer and two coats of putty to give smooth Surface as a base for paint including fiberglass tape to joints and all other accessories as per Modon specification [41.17] | 1,235.1 | HAS3-14740 |
| HFR1-05-4240 |  | Gypsum Boards Fixing + Joint Treatment | 5d | 2026-07-07 | 2026-07-12 | HFR1-05-4130 | Skilled Labor [100 h]; LABOR [12.12 h]; FINSHING Techtion [30.3 h]; Supply and install 12.5mm thk, gypsum board suspended ceiling including suspension system, paints as required specification and material as approved by the Client including frames supports, access openings and all other accessories to complete as shown i [64.15] | 7,313.1 | HAS3-14750 |

| ID | WBS | Activity | Duration | Start | Finish | Predecessors | Resources | Cost | Old Activity ID-Alhasa |
| --- | --- | --- | --- | --- | --- | --- | --- | --- | --- |
|  | 2 | **Final installation works** |  | 2026-06-08 | 2026-07-27 |  |  |  |  |
| HFR1-05-3720 |  | AAC panels for internal wall including alignment and joint filling | 5d | 2026-06-08 | 2026-06-13 | HFR1-05-3640 | Skilled Labor [100 h]; LABOR [12.12 h]; Metal Works tech [12.12 h]; LP: Lighting Power Panel [10] | 43,200 | HAS3-14030 |
| HFR1-05-3770 |  | External Metal stairs | 3d | 2026-06-14 | 2026-06-16 | HFR1-05-3710 | Labor [60 h]; Skilled Labor [60 h]; LABOR [6.03 h]; LABOR [12.12 h]; Metal Works tech [12.12 h]; Size 400mm wide*4000mm long [2.92] | 2,522.88 | HAS3-14110 |
| HFR1-05-4250 |  | signs for toilets & prayer room | 5d | 2026-07-07 | 2026-07-12 | HFR1-05-9390, HFR1-05-3870, HFR1-05-4120 | Labor [100 h]; LABOR [12.12 h]; FINSHING Techtion [30.3 h]; Identification sign for toilets & prayer room [20.23] | 15,779.4 | HAS3-14760 |
| HFR1-05-4170 |  | AAC panels for roof parapet including alignment and joint filling | 5d | 2026-07-09 | 2026-07-14 | HFR1-05-4080 | Skilled Labor [100 h]; LABOR [12.12 h]; Metal Works tech [12.12 h]; LP: Lighting Power Panel [0.29] | 1,252.8 | HAS3-14670 |
| HFR1-05-4280 |  | Toilet accessiors installations | 5d | 2026-07-12 | 2026-07-16 | HFR1-05-4160 | Labor [100 h]; Carpenter [100 h]; LABOR [12.12 h]; Supply and install phenolic partitions with doors for toilets including accessories, fixations, fittings, and all the required works as shown in the drawings and specification with approved quality by the Client [13.59] | 9,784.8 | HAS3-14820 |
| HFR1-05-4290 |  | DOOrs installations with hardware set type HW1 paint finish | 4d | 2026-07-13 | 2026-07-16 | HFR1-05-4220 | Labor [80 h]; Carpenter [80 h]; LABOR [12.12 h]; Doors installer [4.82 h]; install (D1) 1890*2800mm double leaf glass and aluminum door with CNC decorative stainless steel shapes [1] | 6,384 | HAS3-14840 |
| HFR1-05-4300 |  | Mosque Arch Carpet | 5d | 2026-07-13 | 2026-07-18 | HFR1-05-4240 | Labor [100 h]; LABOR [12.12 h]; Supply and install carpet rolls to prayer room including all the accessories to complete the work with approved quality by the Client as shown in the drawings and specifications [17.39] | 2,399.82 | HAS3-14850 |
| HFR1-05-4270 |  | extruded aluminum flashing | 5d | 2026-07-15 | 2026-07-20 | HFR1-05-3720, HFR1-05-4170, HFR1-05-4180, HFR1-05-4090, HFR1-05-3970, HFR1-05-4020, HFR1-05-4000, HFR1-05-3890, HFR1-05-3860 | Labor [100 h]; Skilled Labor [100 h]; Steel Fixer [100 h]; LABOR [12.12 h]; Supplying and fixing 3mm thk extruded aluminum flashing 40mm with sealent and 50*50mm cant strip. [726.67] | 21,800.1 | HAS3-14810 |
| HFR1-05-4340 |  | aluminum framed double glazed windows | 5d | 2026-07-18 | 2026-07-22 | HFR1-05-4290 | Labor [100 h]; Carpenter [50 h]; LABOR [12.12 h]; Window W1 (size 1800*2800) [3] | 12,156 | HAS3-14930 |
| HFR1-05-4350 |  | phenolic partitions with doors for toilets | 5d | 2026-07-18 | 2026-07-22 | HFR1-05-4280 | Labor [100 h]; Carpenter [50 h]; LABOR [12.12 h]; FINSHING Techtion [30.3 h]; Window W1 (size 1000*1300) [12.61] | 12,786.54 | HAS3-14940 |
| HFR1-05-4360 |  | Wood skirting works | 8d | 2026-07-19 | 2026-07-27 | HFR1-05-4300, HFR1-05-2240 | Labor [160 h]; Carpenter [80 h]; LABOR [12.12 h]; Window W2 (size 1600*1200) [20] | 29,960 | HAS3-14950 |
|  | 1 | **Electromecanic** |  | 2026-06-17 | 2026-06-29 |  |  |  |  |
| HFR1-05-3830 |  | Exasut fans | 6d | 2026-06-17 | 2026-06-23 | HFR1-05-3770 | Labor [120 h]; Electrician [240 h]; LABOR [21.81 h]; AC tecntion [21.81 h]; Exhaust fan 425 CFM ex. Static 100 Pascal for toilets [21.04] | 25,248 | HAS3-14170 |
| HFR1-05-3930 |  | Plumping fixtures | 5d | 2026-06-24 | 2026-06-29 | HFR1-05-3830 | Labor [100 h]; Plumber [200 h]; LABOR [21.81 h]; plumber [29.08 h]; Supply and install phenolic partitions with doors for toilets including accessories, fixations, fittings, and all the required works as shown in the drawings and specification with approved quality by the Client [7.78] | 5,601.6 | HAS3-14370 |
|  | 2 | **GRB Tank** |  | 2026-03-17 | 2026-08-12 |  |  |  |  |
| HFR1-05-1810 |  | Tank Foundation Rebar Fixing | 8d | 2026-03-17 | 2026-03-29 | HFR1-05-1100, HFR1-05-8570, HFR1-05-8560, HFR1-05-8550, HFR1-05-8540 | Labor [480 h]; Skilled Labor [240 h]; Steel Fixer [480 h]; LABOR [438.81 h]; Steel Fixer [54.53 h]; Tank Footing [40] | 43,200 | 50 |
| HFR1-05-1820 |  | Tank Foundation Formwork | 8d | 2026-03-30 | 2026-04-07 | HFR1-05-1810 | Labor [480 h]; Skilled Labor [240 h]; Carpenter [480 h]; LABOR [39.99 h]; Carpenter [39.99 h]; Tank Footing [7.75] | 8,370 | 51 |
| HFR1-05-1830 |  | Tank Foundation Inspection | 4d | 2026-04-08 | 2026-04-12 | HFR1-05-1820 | Skilled Labor [80 h]; LABOR [32.72 h]; Tank Footing [8.01] | 8,650.8 | 52 |
| HFR1-05-1840 |  | Tank Foundation Concrete Pouring | 10d | 2026-04-13 | 2026-04-23 | HFR1-05-1830 | Labor [400 h]; Skilled Labor [300 h]; Mason [400 h]; CONCRETE MIixer [10.91 h]; LABOR [32.72 h]; Tank Footing [9.13] | 9,860.4 | 53 |
| HFR1-05-1850 |  | Tank Foundation Curing | 10d | 2026-04-25 | 2026-05-05 | HFR1-05-1840 | Labor [200 h]; LABOR [32.72 h]; Tank Footing [8.11] | 8,758.8 | 54 |
| HFR1-05-1860 |  | Tank Walls Rebar Fixing | 10d | 2026-05-06 | 2026-05-17 | HFR1-05-1850 | Labor [400 h]; Skilled Labor [200 h]; Steel Fixer [400 h]; LABOR [18.18 h]; Steel Fixer [30.3 h]; Tank Walls [4.17] | 5,504.4 | 55 |
| HFR1-05-1870 |  | Tank Walls Formwork | 10d | 2026-05-18 | 2026-06-01 | HFR1-05-1860 | Labor [400 h]; Skilled Labor [200 h]; Carpenter [400 h]; LABOR [47.26 h]; Carpenter [47.26 h]; Tank Walls [4.17] | 5,504.4 | 56 |
| HFR1-05-1880 |  | Tank Walls Inspection | 4d | 2026-06-02 | 2026-06-06 | HFR1-05-1870 | Skilled Labor [80 h]; LABOR [18.18 h]; Tank Walls [4.17] | 5,504.4 | 57 |
| HFR1-05-1890 |  | Tank Walls Concrete Pouring | 7d | 2026-06-07 | 2026-06-14 | HFR1-05-1880 | Labor [280 h]; Skilled Labor [210 h]; Mason [280 h]; CONCRETE MIixer [6.06 h]; LABOR [18.18 h]; Tank Walls [4.17] | 5,504.4 | 58 |
| HFR1-05-1900 |  | Tank Slab Rebar Fixing | 5d | 2026-06-30 | 2026-07-05 | HFR1-05-1890, HFR1-05-3930 | Labor [200 h]; Skilled Labor [100 h]; Steel Fixer [200 h]; LABOR [32.72 h]; Steel Fixer [54.53 h]; Tank Slab [2] | 2,568 | 59 |
| HFR1-05-1910 |  | Tank Slab Formwork | 5d | 2026-07-06 | 2026-07-11 | HFR1-05-1900 | Labor [200 h]; Skilled Labor [100 h]; Carpenter [200 h]; LABOR [36.36 h]; Carpenter [36.36 h]; Tank Slab [2] | 2,568 | 60 |
| HFR1-05-1920 |  | Tank Slab Inspection | 4d | 2026-07-12 | 2026-07-15 | HFR1-05-1910 | Skilled Labor [80 h]; LABOR [32.72 h]; Tank Slab [2] | 2,568 | 61 |
| HFR1-05-1930 |  | Tank Slab Concrete Pouring | 7d | 2026-07-23 | 2026-07-30 | HFR1-05-1920, HFR1-05-4350 | Labor [280 h]; Skilled Labor [210 h]; Mason [280 h]; CONCRETE MIixer [10.91 h]; LABOR [32.72 h]; Tank Slab [2] | 2,568 | 62 |
| HFR1-05-1940 |  | Tank Slab Curing | 7d | 2026-08-01 | 2026-08-08 | HFR1-05-1930, HFR1-05-4360 | Skilled Labor [140 h]; LABOR [32.72 h]; Tank Slab [2] | 2,568 | 63 |
| HFR1-05-1950 |  | Tank Installations with Connection | 4d | 2026-08-09 | 2026-08-12 | HFR1-05-1940 | Labor [80 h]; Skilled Labor [80 h]; LABOR [32.72 h]; Indoor Disconnect Switch for Exhaust Fans [86] | 50,052 | 64 |

| ID | WBS | Activity | Duration | Start | Finish | Predecessors | Resources | Cost | Old Activity ID-Alhasa |
| --- | --- | --- | --- | --- | --- | --- | --- | --- | --- |
|  | 4 | **Pump room** |  | 2026-04-08 | 2026-07-20 |  |  |  |  |
|  | 1 | **Civil works** |  | 2026-04-08 | 2026-06-15 |  |  |  |  |
| HFR1-05-3000 |  | SOG (Pump Rooms) Formwork / Edge Shuttering | 6d | 2026-04-08 | 2026-04-14 | HFR1-05-1820 | Labor [240 h]; Skilled Labor [180 h]; Mason [240 h]; LABOR [58.17 h]; Carpenter [58.17 h]; Provide and cast 150 mm thk concrete floor slab on grade [12] | 11,040 | HAS3-10340 |
| HFR1-05-3040 |  | SOG (Pump Rooms) Rebar Mesh & MEP Sleeves | 6d | 2026-04-15 | 2026-04-21 | HFR1-05-3000 | Labor [240 h]; Skilled Labor [180 h]; Mason [240 h]; LABOR [21.81 h]; plumber [21.81 h]; Provide and cast 150 mm thk concrete floor slab on grade [2.12] | 1,950.4 | HAS3-10490 |
| HFR1-05-3080 |  | SOG (Pump Rooms) Inspection | 1d | 2026-04-22 | 2026-04-22 | HFR1-05-3040 | Labor [40 h]; Skilled Labor [30 h]; Mason [40 h]; LABOR [21.81 h]; Provide and cast 150 mm thk concrete floor slab on grade [2.14] | 1,968.8 | HAS3-10600 |
| HFR1-05-3090 |  | SOG (Pump Rooms) Concrete Pouring & Finishing | 3d | 2026-04-23 | 2026-04-26 | HFR1-05-3080 | Labor [120 h]; Skilled Labor [90 h]; Mason [120 h]; CONCRETE MIixer [7.27 h]; LABOR [21.81 h]; Provide and cast 150 mm thk concrete floor slab on grade [1.66] | 1,527.2 | HAS3-10640 |
| HFR1-05-3100 |  | SOG (Pump Rooms) Curing | 3d | 2026-04-27 | 2026-04-29 | HFR1-05-3090 | Labor [120 h]; Skilled Labor [90 h]; Mason [120 h]; LABOR [21.81 h]; Provide and cast 150 mm thk concrete floor slab on grade [1.8] | 1,656 | HAS3-10680 |
| HFR1-05-3120 |  | Structural steel members and plates | 6d | 2026-04-27 | 2026-05-03 | HFR1-05-3090 | Labor [420 h]; Steel Fixer [420 h]; LABOR [21.81 h]; install steel ladder with safety cage [1.74] | 11,275.2 | HAS3-10700 |
| HFR1-05-3130 |  | Cold formed steel secondary members | 2d | 2026-05-04 | 2026-05-05 | HFR1-05-3100, HFR1-05-3120 | Labor [40 h]; Skilled Labor [20 h]; LABOR [21.81 h]; supply and installation of Cold formed steel secondary members [0.02] | 1,248 | HAS3-10820 |
| HFR1-05-3160 |  | Corrugated glavanized steel roofing sheet 0.7mm thick for pump shed | 6d | 2026-05-06 | 2026-05-12 | HFR1-05-3120, HFR1-05-3130 | Labor [60 h]; Skilled Labor [120 h]; LABOR [21.81 h]; Supply and install 300 micron polyethylene sheet [35.5] | 142 | HAS3-10900 |
| HFR1-05-3190 |  | Concrete works for steel fence | 6d | 2026-05-13 | 2026-05-19 | HFR1-05-3160 | Labor [60 h]; Skilled Labor [60 h]; Mason [60 h]; LABOR [21.81 h]; Concrete Pad [1.41] | 1,319.76 | HAS3-11880 |
| HFR1-05-3200 |  | Structural steel members and plates Pump Shed | 6d | 2026-05-13 | 2026-05-19 | HFR1-05-3160 | Labor [60 h]; Skilled Labor [60 h]; Steel Fixer [60 h]; LABOR [21.81 h]; Metal Works tech [21.81 h]; install (D6) 3000*3500mm galvanized steel heavy duty industrial isolated type roll up shutter door [0.09] | 1,409.4 | HAS3-11890 |
| HFR1-05-3240 |  | steel fence gate | 6d | 2026-06-02 | 2026-06-08 | HFR1-05-9310 SS, HFR1-05-3190, HFR1-05-3200, HFR1-05-3160, HFR1-05-3090 | Labor [60 h]; Skilled Labor [60 h]; Steel Fixer [240 h]; LABOR [21.81 h]; Doors installer [36.36 h]; Swing gate for fence with similar design with opening of 3m. [0.21] | 1,237.32 | HAS3-12130 |
| HFR1-05-3270 |  | install galvanized steel fence | 3d | 2026-06-13 | 2026-06-15 | HFR1-05-9190, HFR1-05-3190, HFR1-05-3240 | Labor [30 h]; Skilled Labor [30 h]; Steel Fixer [120 h]; LABOR [21.81 h]; Metal Works tech [21.81 h]; install galvanized steel fence [1.23] | 1,992.6 | HAS3-12320 |
|  | 2 | **Electromecanic** |  | 2026-05-06 | 2026-07-20 |  |  |  |  |
| HFR1-05-3560 |  | Install HDPE PE100 PN16 Pipes & Gate valve | 5d | 2026-05-06 | 2026-05-11 | HFR1-05-3130 | Labor [200 h]; Skilled Labor [50 h]; Pipe-Laying Worker [200 h]; LABOR [32.72 h]; electrical tection [32.72 h]; 100 mm Ø [120] | 21,600 | HAS3-13580 |
| HFR1-05-3650 |  | concrete wall for KWHM for pump room with foundations | 5d | 2026-05-12 | 2026-05-17 | HFR1-05-3560 | Labor [50 h]; Electrician [200 h]; LABOR [5.42 h]; electrical tection [4.97 h]; Complete concrete wall for KWHM for street lighting feeder pillar with foundations as per SEC latest standards & specifications [15] | 45,000 | HAS3-13810 |
| HFR1-05-3660 |  | Fire Pump installations | 5d | 2026-05-18 | 2026-05-23 | HFR1-05-3650 | Labor [50 h]; Skilled Labor [50 h]; Electrician [200 h]; LABOR [10.85 h]; LABOR [32.72 h]; electrical tection [32.72 h]; Fire Pump system, Local code & UL/FM approved, meeting all NFPA requirements [0.2] | 72,000 | HAS3-13840 |
| HFR1-05-3730 |  | pipework within pump shade | 5d | 2026-05-24 | 2026-06-01 | HFR1-05-3660, HFR1-05-9200 SS | Labor [50 h]; Pipe-Laying Worker [200 h]; LABOR [32.72 h]; electrical tection [32.72 h]; Fire Pump system, Local code & UL/FM approved, meeting all NFPA requirements [0.09] | 32,400 | HAS3-14040 |
| HFR1-05-3780 |  | Testing firefighting | 4d | 2026-06-02 | 2026-06-06 | HFR1-05-3730 | Labor [40 h]; Electrician [160 h]; LABOR [32.72 h]; electrical tection [32.72 h]; Fire Pump system, Local code & UL/FM approved, meeting all NFPA requirements [0.06] | 21,600 | HAS3-14120 |
| HFR1-05-3790 |  | Power and lighting first fix works -Conduit works | 5d | 2026-06-07 | 2026-06-11 | HFR1-05-3780 | Labor [50 h]; Electrician [200 h]; LABOR [32.72 h]; electrical tection [32.72 h]; LP: Lighting Power Panel [7.64] | 33,004.8 | HAS3-14130 |
| HFR1-05-3840 |  | Cable Tray | 5d | 2026-06-16 | 2026-06-21 | HFR1-05-3790, HFR1-05-3270, HFR1-05-4200 | Labor [50 h]; Electrician [100 h]; LABOR [32.72 h]; electrical tection [32.72 h]; Perforated Cable Tray [229.34] | 33,024.96 | HAS3-14190 |
| HFR1-05-3910 |  | Wiring works | 5d | 2026-06-22 | 2026-06-27 | HFR1-05-3840 | Labor [50 h]; Electrician [100 h]; LABOR [32.72 h]; electrical tection [32.72 h]; Pump room power panel complete with conduits, cables, circuit breakers,pipes, wires and busbars [2.75] | 33,000 | HAS3-14260 |
| HFR1-05-4030 |  | Install lighting fixtures | 5d | 2026-06-28 | 2026-07-02 | HFR1-05-3910 | Electrician [100 h]; LABOR [32.72 h]; electrical tection [32.72 h]; LP: Lighting Power Panel [0.25] | 1,080 | HAS3-14460 |
| HFR1-05-4040 |  | Motor circuit protector | 5d | 2026-07-04 | 2026-07-08 | HFR1-05-4030 | Electrician [100 h]; LABOR [32.72 h]; electrical tection [32.72 h]; Motor Circuit Protector for pumps complete with conduits & cables [7.87] | 15,110.4 | HAS3-14470 |
| HFR1-05-4050 |  | Power panel ( all works | 5d | 2026-07-09 | 2026-07-14 | HFR1-05-4040 | Electrician [100 h]; LABOR [47.26 h]; electrical tection [47.26 h]; LP: Lighting Power Panel [6] | 25,920 | HAS3-14480 |
| HFR1-05-4310 |  | switches installations | 5d | 2026-07-15 | 2026-07-20 | HFR1-05-4050, HFR1-05-9300, HFR1-05-9610 | Electrician [100 h]; LABOR [32.72 h]; electrical tection [32.72 h]; Indoor Disconnect Switch for Package Units & AC Split Units [33] | 19,206 | HAS3-14860 |

| ID | WBS | Activity | Duration | Start | Finish | Predecessors | Resources | Cost | Old Activity ID-Alhasa |
| --- | --- | --- | --- | --- | --- | --- | --- | --- | --- |
|  | 7 | **External WORKS-MEP** |  | 2026-03-01 | 2026-06-02 |  |  |  |  |
|  | 8 | **Plumping-FIRE-HVAC** |  | 2026-03-01 | 2026-04-21 |  |  |  |  |
| HFR1-05-3060 |  | External FF Network Preparation (Excavation +Pipes + Valves + Hydrants | 6d | 2026-03-01 | 2026-03-07 | HFR1-05-1080 | Labor [60 h]; Skilled Labor [120 h]; LABOR [10.85 h]; LABOR [32.72 h]; Fire Pump system, Local code & UL/FM approved, meeting all NFPA requirements [0.02] | 7,200 | HAS3-10560 |
| HFR1-05-3070 |  | Water SupplyPreparation (Excxavation-Pipes-backfilling | 6d | 2026-03-08 | 2026-03-14 | HFR1-05-3060 | Labor [60 h]; Skilled Labor [120 h]; Plumber [120 h]; Pipe-Laying Worker [240 h]; LABOR [32.72 h]; 20 mm Ø ( 3/4" Ø) Cold water [1100] | 52,800 | HAS3-10570 |
| HFR1-05-3140 |  | External FF Network Testing & Final Inspection | 6d | 2026-03-15 | 2026-03-24 | HFR1-05-3070 | Labor [60 h]; Electrician [120 h]; LABOR [32.72 h]; pipes for all electrical network at site [46.34] | 4,680.34 | HAS3-10880 |
| HFR1-05-3150 |  | Water Supply Testing (Pressure Test) & Final Inspection | 6d | 2026-03-25 | 2026-03-31 | HFR1-05-3140 | Labor [60 h]; Mason [240 h]; Plumber [120 h]; Pipe-Laying Worker [60 h]; LABOR [32.72 h]; 63 mm Ø (2 1/2" Ø )Cold water [39] | 4,680 | HAS3-10890 |
| HFR1-05-3320 |  | Drainage Installation (Excxavation +Pipes + backfilling +House Connections) | 6d | 2026-04-01 | 2026-04-07 | HFR1-05-3150, HFR1-05-8870, HFR1-05-8880 | Labor [60 h]; Skilled Labor [120 h]; Plumber [240 h]; Pipe-Laying Worker [240 h]; LABOR [32.72 h]; 50 mm Ø (2" Ø )Cold water [85.46] | 9,229.68 | HAS3-12730 |
| HFR1-05-3330 |  | Manholes works for Drainage works Excxavation -pipes-backfilling | 4d | 2026-04-08 | 2026-04-12 | HFR1-05-3320 | Labor [40 h]; Plumber [40 h]; LABOR [32.72 h]; Complete Branch Electrical Manhole with pipes [2] | 7,104 | HAS3-12740 |
| HFR1-05-3410 |  | Drainage Testing (Air/Water Test) & Final Inspection | 4d | 2026-04-13 | 2026-04-16 | HFR1-05-3330 | Labor [40 h]; Plumber [40 h]; LABOR [32.72 h]; Supply, install, test and commission Floor drain (FD-1) with stainless steel 316 cover as per drawings and specification. [26] | 4,680 | HAS3-13100 |
| HFR1-05-3450 |  | GRP pipe service inspection chamber (Excavation+installation +backfilling ) | 4d | 2026-04-18 | 2026-04-21 | HFR1-05-3410 | Labor [40 h]; Plumber [40 h]; Pipe-Laying Worker [160 h]; LABOR [32.72 h]; equpment [0.15 h]; 63 mm Ø (2 1/2" Ø )Cold water [44] | 11,480 | HAS3-13290 |
|  | 1 | **Electric** |  | 2026-03-15 | 2026-06-02 |  |  |  |  |
| HFR1-05-3420 |  | Concrete foundation for electrical substation | 5d | 2026-03-15 | 2026-03-23 | HFR1-05-3070 | Plumber [150 h]; LABOR [47.26 h]; electrical tection [47.26 h]; Isolated Footings [29] | 26,274 | HAS3-13110 |
| HFR1-05-3470 |  | Security Fence for elec substation | 5d | 2026-03-24 | 2026-03-29 | HFR1-05-3420 | Plumber [150 h]; LABOR [47.26 h]; electrical tection [47.26 h]; Swing gate for fence with similar deswign with opening of 1.5m. [11] | 35,706 | HAS3-13320 |
| HFR1-05-3510 |  | Street Lighting Preparation (Trenches + Marking + Ducts) | 5d | 2026-03-30 | 2026-04-04 | HFR1-05-3470 | Plumber [150 h]; LABOR [47.26 h]; electrical tection [47.26 h]; Complete Street Lighting Manhole with pipes [20] | 39,320 | HAS3-13400 |
| HFR1-05-3530 |  | Manholes works for electric works with pipes -Excxavation -pipes-backfilling | 3d | 2026-04-05 | 2026-04-07 | HFR1-05-3510 | Plumber [90 h]; LABOR [47.26 h]; electrical tection [47.26 h]; Complete Main Electrical Manhole with pipes [2.55] | 30,332.25 | HAS3-13420 |
| HFR1-05-3590 |  | Road crossing duct bank for street lighting cables (pipes | 3d | 2026-04-08 | 2026-04-11 | HFR1-05-3530 | Plumber [90 h]; LABOR [47.26 h]; electrical tection [47.26 h]; Complete road crossing duct bank for street lighting cables including pipes [172] | 45,408 | HAS3-13680 |
| HFR1-05-3600 |  | Street Lighting Installation (Cables + Poles + Fixtures) | 3d | 2026-04-12 | 2026-04-14 | HFR1-05-3590 | Plumber [90 h]; LABOR [47.26 h]; electrical tection [47.26 h]; Complete Street Lighting Manhole with pipes [24.15] | 47,478.9 | HAS3-13740 |
| HFR1-05-3620 |  | Grounding System Preparation (Survey + Marking + Excavation) | 3d | 2026-04-15 | 2026-04-18 | HFR1-05-3600 | Plumber [90 h]; LABOR [47.26 h]; electrical tection [47.26 h]; Grounding System for each block [0.8] | 30,313.6 | HAS3-13790 |
| HFR1-05-3680 |  | KWHM for street lighting feeder pillar (foundations+KWH Meter & Electrical Works | 4d | 2026-04-15 | 2026-04-19 | HFR1-05-3620 SS | Plumber [120 h]; LABOR [47.26 h]; electrical tection [47.26 h]; Grounding for all KWHM's [42.17] | 75,906 | HAS3-13970 |
| HFR1-05-3740 |  | Grounding SystemTesting (Earth Resistance Test) & Final Inspection | 11d | 2026-04-20 | 2026-05-02 | HFR1-05-3680, HFR1-05-4600 | Plumber [180 h]; LABOR [47.26 h]; electrical tection [47.26 h]; Grounding System for each block [0.6] | 22,735.2 | HAS3-14060 |
| HFR1-05-3800 |  | Grounding SystemInstallation (Earth Rods + Cables + Earth Pits) | 3d | 2026-05-03 | 2026-05-05 | HFR1-05-3740, HFR1-05-3450 | Plumber [90 h]; LABOR [47.26 h]; electrical tection [47.26 h]; Grounding System for each block [0.13] | 4,925.96 | HAS3-14140 |
| HFR1-05-3820 |  | GROUNDING SYSTEM AT SITE (Feeder pillars | 4d | 2026-05-06 | 2026-05-10 | HFR1-05-3800 | Plumber [120 h]; LABOR [47.26 h]; electrical tection [47.26 h]; Grounding System for each block [0.15] | 5,683.8 | HAS3-14160 |
| HFR1-05-3940 |  | GROUNDING SYSTEM AT SITE (Pump Room | 4d | 2026-05-11 | 2026-05-14 | HFR1-05-3820, HFR1-05-3450 | Plumber [120 h]; LABOR [47.26 h]; Grounding System for each block [0.41] | 15,611.13 | HAS3-14380 |
| HFR1-05-4110 |  | GROUNDING SYSTEM AT SITE (KWHM's | 3d | 2026-05-16 | 2026-05-18 | HFR1-05-3940 | Plumber [90 h]; LABOR [47.26 h]; electrical tection [47.26 h]; Grounding System for each block [0.15] | 5,683.8 | HAS3-14600 |
| HFR1-05-4150 |  | Street Lighting Testing (Megger + Lighting Test) & Final Inspection | 2d | 2026-05-19 | 2026-05-20 | HFR1-05-4110 | Plumber [60 h]; LABOR [47.26 h]; electrical tection [47.26 h]; Complete street lighting poles with LED lighting fixtures [17.33] | 75,905.4 | HAS3-14650 |
| HFR1-05-4190 |  | GROUNDING SYSTEM AT SITE (Street lighting Poles | 3d | 2026-05-21 | 2026-05-24 | HFR1-05-4150 | Plumber [90 h]; LABOR [47.26 h]; electrical tection [47.26 h]; Grounding System for each block [0.3] | 11,367.6 | HAS3-14690 |
| HFR1-05-4200 |  | Skylight fixtures installations | 5d | 2026-05-25 | 2026-06-02 | HFR1-05-9500 SS, HFR1-05-4190 | Plumber [150 h]; LABOR [47.26 h]; electrical tection [47.26 h]; Skylight fixtures [2] | 7,200 | HAS3-14690-1 |

| ID | WBS | Activity | Duration | Start | Finish | Predecessors | Resources | Cost | Old Activity ID-Alhasa |
| --- | --- | --- | --- | --- | --- | --- | --- | --- | --- |
|  | 5 | **External Works landscape** |  | 2026-07-02 | 2026-09-12 |  |  |  |  |
| HFR1-05-3480 |  | ROAD Excavation and casting lean concrete base for Precast Concrete Curbstone | 6d | 2026-07-02 | 2026-07-08 | HFR1-05-1520 SS, HFR1-05-9060, HFR1-05-9060 FF, HFR1-05-8500, HFR1-05-8510, HFR1-05-8520, HFR1-05-8530, HFR1-05-8490, HFR1-05-8850, HFR1-05-8840, HFR1-05-7880, HFR1-05-8830, HFR1-05-6160, HFR1-05-7540, HFR1-05-7550, HFR1-05-7560, HFR1-05-7570, HFR1-05-7580, HFR1-05-7590, HFR1-05-7600, HFR1-05-7610, HFR1-05-7870, HFR1-05-8820 | Excavator [120 h]; Loader [120 h]; Bulldozer [120 h]; Water Tanker [120 h]; Grider [120 h]; Truck [420 h]; Road Roller [120 h]; Labor [300 h]; Eq. Operator [1140 h]; LABOR [58.17 h]; Excavation [600] | 26,745 | HAS3-13340 |
| HFR1-05-3540 |  | ROAD subgrade material up to the full width of the road | 6d | 2026-07-09 | 2026-07-15 | HFR1-05-4200, HFR1-05-3480 | Loader [120 h]; Bulldozer [60 h]; Water Tanker [60 h]; Grider [60 h]; Truck [240 h]; Road Roller [60 h]; Labor [300 h]; Eq. Operator [600 h]; ALHSA FACTORY [8.44 h]; LABOR; subgrade [173.03] | 11,939.07 | HAS3-13460 |
| HFR1-05-3580 |  | ROAD Backfilling, compaction, and acceptance for precast curbstone | 6d | 2026-07-16 | 2026-07-22 | HFR1-05-3540 | Excavator [60 h]; Loader [120 h]; Bulldozer [120 h]; Water Tanker [60 h]; Grider [60 h]; Truck [60 h]; Road Roller [60 h]; Labor [300 h]; Eq. Operator [540 h]; LABOR [8.44 h]; LABOR [25.45 h]; Backfilling [56.18] | 1,853.94 | HAS3-13660 |
| HFR1-05-3610 |  | ROAD execute subgrade layer including Watering and compaction | 6d | 2026-07-23 | 2026-07-29 | HFR1-05-5570, HFR1-05-9130, HFR1-05-3580 | Loader [60 h]; Grider [120 h]; Road Roller [60 h]; Labor [300 h]; Eq. Operator [240 h]; LABOR [18.08 h]; LABOR; subgrade [44] | 3,036 | HAS3-13770 |
| HFR1-05-3690 |  | ROAD execute base course layer -Leveling and shaping | 6d | 2026-07-30 | 2026-08-05 | HFR1-05-3610, HFR1-05-4310 | Loader [60 h]; Water Tanker [60 h]; Grider [60 h]; Truck [120 h]; Road Roller [60 h]; Asphalt Paver [60 h]; Eq. Operator [420 h]; LABOR [18.08 h]; LABOR [25.45 h]; execute bituminous base course asphalt layer class (A) in two layers [11.71] | 8,150.16 | HAS3-13980 |
| HFR1-05-3810 |  | ROAD Watering and compaction for Base Course Layer | 6d | 2026-08-06 | 2026-08-12 | HFR1-05-5550, HFR1-05-3690 | Water Tanker [60 h]; Road Roller [60 h]; Eq. Operator [120 h]; LABOR [18.08 h]; LABOR [25.45 h]; execute bituminous base course asphalt layer class (A) in two layers [62.5] | 43,500 | HAS3-14150 |
| HFR1-05-3990 |  | ROAD Application of prime coat | 6d | 2026-08-06 | 2026-08-12 | HFR1-05-9390, HFR1-05-9380, HFR1-05-3810 SS, HFR1-05-4400, HFR1-05-4620 | Water Tanker [60 h]; Grider [60 h]; Asphalt Paver [60 h]; Eq. Operator [180 h]; LABOR [18.08 h]; LABOR [25.45 h]; execute bituminous base course asphalt layer class (A) in two layers [30.89] | 21,499.44 | HAS3-14420 |
| HFR1-05-4140 |  | ROAD execute bituminous base course asphalt layer | 5d | 2026-08-13 | 2026-08-18 | HFR1-05-3990 | Water Tanker [50 h]; Grider [50 h]; Asphalt Paver [50 h]; Eq. Operator [150 h]; LABOR; execute bituminous base course asphalt layer class (A) in two layers [51.18] | 35,621.28 | HAS3-14640 |
| HFR1-05-4320 |  | ROAD Laying bituminous second asphalt base layer | 5d | 2026-08-19 | 2026-08-24 | HFR1-05-4140, HFR1-05-1950, HFR1-05-1950 FF, HFR1-05-4340, HFR1-05-4270, HFR1-05-4250, HFR1-05-4230 | Water Tanker [50 h]; Grider [50 h]; Asphalt Paver [50 h]; Eq. Operator [150 h]; LABOR; base course layer [17.93] | 1,344.75 | HAS3-14880 |
| HFR1-05-4390 |  | ROADTack Coat (RC2) | 5d | 2026-08-25 | 2026-08-30 | HFR1-05-4320 | Water Tanker [50 h]; Grider [50 h]; Asphalt Paver [50 h]; Eq. Operator [150 h]; LABOR [6.03 h]; LABOR [32.72 h]; bituminous wearing course asphalt layer class (A) including tack coat (RC2) [2.39] | 1,720.8 | HAS3-15010 |
| HFR1-05-4440 |  | ROAD Bituminous Wearing Course Asphalt | 5d | 2026-08-31 | 2026-09-05 | HFR1-05-4390 | Water Tanker [50 h]; Grider [50 h]; Asphalt Paver [50 h]; Eq. Operator [150 h]; LABOR [18.08 h]; LABOR [32.72 h]; bituminous wearing course asphalt layer class (A) including tack coat (RC2) [67] | 48,240 | HAS3-15130 |
| HFR1-05-4460 |  | ROAD lean concrete base For concrete curbstone | 5d | 2026-08-31 | 2026-09-05 | HFR1-05-5700, HFR1-05-8990, HFR1-05-4440 SS | Labor [200 h]; Skilled Labor [100 h]; Mason [250 h]; LABOR; bituminous wearing course asphalt layer class (A) including tack coat (RC2) [1.87] | 1,346.4 | HAS3-15200 |
| HFR1-05-4470 |  | ROAD Subbase install precast concrete curbstone | 5d | 2026-08-31 | 2026-09-05 | HFR1-05-9110, HFR1-05-4460 FF | Truck [200 h]; Labor [200 h]; Skilled Labor [100 h]; Eq. Operator [200 h]; LABOR [18.08 h]; LABOR; Kerb type K1A [1321.38] | 76,640.04 | HAS3-15210 |
| HFR1-05-4500 |  | ROAD InterlockWalkway -pedestrian interlocking block pavers | 11d | 2026-08-31 | 2026-09-12 | HFR1-05-4550 FF | Labor [200 h]; Skilled Labor [100 h]; LABOR; To walkway interlocking block pavers, 200*100*60mm [343.69] | 22,339.85 | HAS3-15300 |
| HFR1-05-4480 |  | ROAD interlocking block pavers | 9d | 2026-09-02 | 2026-09-12 | HFR1-05-9060, HFR1-05-4500 FF | Labor [200 h]; Skilled Labor [100 h]; LABOR [25.45 h]; To walkway interlocking block pavers, 200*100*60mm [40] | 2,600 | HAS3-15290 |
| HFR1-05-4530 |  | ROAD single I.P.E. post Road signs-Asphalt install traffic signs | 6d | 2026-09-05 | 2026-09-10 | HFR1-05-5760, HFR1-05-4520 FF | Labor [240 h]; Skilled Labor [120 h]; LABOR [8.44 h]; LABOR [10.91 h]; Traffic signs aluminum sheet, (breakaway) Single post I.P.E. [4.28] | 11,812.8 | HAS3-15330 |
| HFR1-05-4540 |  | ROAD Road Marking thermoplastic traffic lines | 6d | 2026-09-05 | 2026-09-10 | HFR1-05-9130, HFR1-05-4530 FF | Labor [240 h]; Skilled Labor [120 h]; LABOR [8.44 h]; LABOR [14.54 h]; Retroreflective Thermoplastic White Traffic lines [0.49] | 11,760 | HAS3-15340 |
| HFR1-05-4560 |  | Concrete Works external steps | 6d | 2026-09-05 | 2026-09-10 | HFR1-05-8860, HFR1-05-4530 FF | Labor [240 h]; Skilled Labor [120 h]; LABOR [18.08 h]; LABOR [21.81 h]; To walkway interlocking block pavers, 200*100*60mm [22] | 1,430 | HAS3-15360 |
| HFR1-05-4570 |  | Outdoor Granite works | 6d | 2026-09-05 | 2026-09-10 | HFR1-05-4560 FF | Labor [240 h]; Skilled Labor [120 h]; LABOR [18.08 h]; LABOR [21.81 h]; To walkway interlocking block pavers, 200*100*60mm [206.5] | 13,422.5 | HAS3-15370 |
| HFR1-05-4510 |  | ROAD Interlock install concrete parking bumpers | 5d | 2026-09-06 | 2026-09-10 | HFR1-05-4460 | Labor [200 h]; Skilled Labor [100 h]; LABOR [8.44 h]; LABOR [0.15 h]; To walkway interlocking block pavers, 200*100*60mm [128.49] | 8,351.85 | HAS3-15310 |
| HFR1-05-4520 |  | ROAD Asphalt Reflective Road Markings | 5d | 2026-09-06 | 2026-09-10 | HFR1-05-4510 FF | Labor [200 h]; Skilled Labor [100 h]; LABOR [8.44 h]; LABOR [14.54 h]; Retroreflective Thermoplastic White Traffic lines [0.88] | 21,120 | HAS3-15320 |
| HFR1-05-4550 |  | ROAD subgrade laye Interlocking Paving Blocks | 6d | 2026-09-06 | 2026-09-12 | HFR1-05-4470 | Labor [240 h]; Skilled Labor [120 h]; LABOR [0.15 h]; To walkway interlocking block pavers, 200*100*60mm [23.78] | 1,545.7 | HAS3-15350 |
|  | 10 | **Testing and comissiong** |  | 2026-04-01 | 2026-09-26 |  |  |  |  |
|  | 1 | **Testing and comissiong** |  | 2026-04-01 | 2026-09-26 |  |  |  |  |
| HFR1-05-4600 |  | Test For Water Utilities | 12d | 2026-04-01 | 2026-04-14 | HFR1-05-3150 | Skilled Labor [1830 h]; Eng+Pro+Tc [1]; Testing and comissiong [1] | 412,421 | HAS3-15460 |
| HFR1-05-4430 |  | Test For Pump Room | 12d | 2026-07-21 | 2026-08-03 | HFR1-05-4310, HFR1-05-4600, HFR1-05-2240, HFR1-05-2820 | Skilled Labor [1830 h]; Eng+Pro+Tc [1]; Testing and comissiong [1] | 412,421 | HAS3-15120 |
| HFR1-05-4630 |  | Test For Electrical Works | 12d | 2026-09-03 | 2026-09-16 | HFR1-05-4190, HFR1-05-4310, HFR1-05-3930, HFR1-05-2240, HFR1-05-2100, HFR1-05-4430 | Skilled Labor [1830 h]; Eng+Pro+Tc [1]; Testing and comissiong [1] | 412,421 | HAS3-15550 |
| HFR1-05-4420 |  | Test For Roads | 11d | 2026-09-13 | 2026-09-26 | HFR1-05-4550 | Skilled Labor [1830 h]; Eng+Pro+Tc [1]; Testing and comissiong [1] | 412,421 | HAS3-15110 |

| ID | WBS | Activity | Duration | Start | Finish | Predecessors | Old Activity ID-Alhasa |
| --- | --- | --- | --- | --- | --- | --- | --- |
|  | 11 | **Close Out** |  | 2026-09-17 | 2026-09-26 |  |  |
| HFR1-05-4680 |  | As-Built Documentation Final Submission | 6d | 2026-09-17 | 2026-09-24 | HFR1-05-4430, HFR1-05-4600, HFR1-05-4630 | HAS3-15670 |
| HFR1-05-4690 |  | O&M Manuals and Warranties Final Submission | 5d | 2026-09-17 | 2026-09-22 | HFR1-05-4680 SS | HAS3-15680 |
| HFR1-05-4700 |  | Final Handover MODON Inspection & Approval | 7d | 2026-09-17 | 2026-09-26 | HFR1-05-4690 SS | HAS3-15690 |

## Activity codes

| Code | Value | Meaning |
| --- | --- | --- |
| LOCATION | MLST | MILESTONES |
| Responsibilities | EN | Engineering Department |
